# 项目进度表1

Schedule from MS Project, 2021-05-10 to 2021-11-09, status date 2020-03-01, A marks actual dates.
南瑞继保

## Calendars

- 标准: Mon-Fri 08:00-12:00, 13:00-17:00; Sat-Sun off. Exceptions (off unless hours are given): 2021-07-03 to 2021-07-04 08:00-12:00, 13:00-17:00, 2021-07-10 08:00-12:00, 13:00-17:00, 2021-07-18 08:00-12:00, 13:00-17:00.
- 科创日历: Mon-Fri 08:00-12:00, 13:00-17:00; Sat-Sun off.

## Resources

| Resource | Group | Rate |
| --- | --- | --- |
| PM | 管理 | 1 |
| SM |  | 1 |
| QA | 质保 | 1 |
| CM | 配置 | 1 |
| CCB |  | 1 |
| 王湾湾 |  |  |
| 闻锋 |  |  |
| 王高磊 |  |  |
| 王英磊 |  |  |
| 刘翠 |  |  |
| 王乐 |  |  |
| 葛利涛 |  |  |
| 张航 |  |  |
| 崔晓文 |  |  |
| 客户 |  |  |
| 黄本华 |  |  |
| 康旭红 |  |  |
| 康旭红'闻锋 |  |  |

## Schedule

| ID | WBS | Task | Duration | Start | Finish | Predecessors | Remaining | Baseline start | Baseline finish | Baseline duration | Total slack | Free slack | Constraint | Resources | Work | Actual work | Baseline cost | Text1 |
| --- | --- | --- | --- | --- | --- | --- | --- | --- | --- | --- | --- | --- | --- | --- | --- | --- | --- | --- |
| 1 | 1 | **企业保险管理系统项目** | 133.12d? | 2021-05-10 08:00 A | 2021-11-04 18:00 |  | 132.86d? |  |  |  |  |  |  |  | 3126.22h | 8.96h |  |  |
| 2 | 1.1 | **项目管理** | 133d | 2021-05-10 08:00 | 2021-11-04 18:00 |  |  |  |  |  | 0d |  |  |  | 587.68h |  |  |  |
| 3 | 1.1.1 | **项目启动** | 0.25d | 2021-05-10 08:00 | 2021-05-10 10:00 |  |  |  |  |  | 135d |  |  |  | 20h |  |  |  |
| 4 | 1.1.1.1 | 项目启动会议 | 0.25d | 2021-05-10 08:00 | 2021-05-10 10:00 |  |  | 2006-06-14 08:00 | 2006-06-14 17:00 | 1d? | 135d | 0.5d | start no earlier than 2021-03-29 08:00 | 王湾湾; 闻锋; 王高磊; 王英磊; 刘翠; 王乐; 葛利涛; 张航; 崔晓文; 黄本华 | 20h |  | 8 | 《项目启动会议纪要》 |
| 5 | 1.1.2 | **项目计划** | 27.12d | 2021-05-10 08:00 | 2021-06-15 18:00 |  |  |  |  |  |  |  |  |  | 177h |  |  |  |
| 6 | 1.1.2.1 | **初步计划** | 7.12d | 2021-05-10 08:00 | 2021-05-18 18:00 |  |  |  |  |  |  |  |  |  | 18h |  |  |  |
| 7 | 1.1.2.1.1 | 初步裁剪 | 0.25d | 2021-05-10 15:00 | 2021-05-10 18:00 | 4 |  | 2006-06-14 08:00 | 2006-06-14 17:00 | 1d? | 134.5d | 0d | finish no earlier than 2021-05-10 18:00 | 王湾湾 | 2h |  |  | 《项目已定义过程》 |
| 8 | 1.1.2.1.2 | 初步估算（规模和工作量） | 0.5d | 2021-05-11 08:00 | 2021-05-11 12:00 | 7 |  |  |  |  | 134.5d |  |  | 王湾湾 | 4h |  |  | 《项目估算表》 |
| 9 | 1.1.2.1.3 | **制定项目初步计划及下属子计划** | 5.12d | 2021-05-12 08:00 | 2021-05-18 18:00 |  |  | 2006-06-14 08:00 | 2006-06-14 17:00 | 1d? |  |  |  |  | 12h |  |  |  |
| 10 | 1.1.2.1.3.1 | 制定初步的《项目计划》 | 0.5d | 2021-05-12 08:00 | 2021-05-12 12:00 |  |  |  |  |  | 133d | 3.5d | start no earlier than 2021-05-12 08:00 | 王湾湾 | 4h |  |  | 《项目计划》初稿 |
| 11 | 1.1.2.1.3.2 | 制定初步的《质量保证计划》 | 0.5d | 2021-05-13 08:00 | 2021-05-13 12:00 |  |  | 2006-06-14 08:00 | 2006-06-14 17:00 | 1d? | 132d | 2.5d | start no earlier than 2021-05-13 08:00 | 王乐 [50%] | 2h |  |  | 《质量保证计划》初稿 |
| 12 | 1.1.2.1.3.3 | 制定初步的《配置管理计划》 | 0.5d | 2021-05-14 08:00 | 2021-05-14 12:00 |  |  | 2006-06-14 08:00 | 2006-06-14 17:00 | 1d? | 131d | 1.5d | start no earlier than 2021-05-14 08:00 | 葛利涛 [50%] | 2h |  |  | 《配置管理计划》初稿 |
| 13 | 1.1.2.1.3.4 | 制定初步的《项目进度表》 | 0.5d | 2021-05-17 08:00 | 2021-05-17 12:00 |  |  |  |  |  | 130.5d |  | start no earlier than 2021-05-17 08:00 | 王湾湾 [50%] | 2h |  |  | 《项目进度表》初稿 |
| 14 | 1.1.2.1.3.5 | 初步项目计划及下属子计划审批 | 0.5d | 2021-05-18 08:00 | 2021-05-18 12:00 | 10, 11, 12 |  |  |  |  | 129.5d |  | start no earlier than 2021-05-18 08:00 | 王湾湾 [50%] | 2h |  |  |  |
| 15 | 1.1.2.2 | **详细计划** | 20.12d | 2021-05-19 08:00 | 2021-06-15 18:00 |  |  | 2006-06-14 08:00 | 2006-06-14 17:00 | 1d? |  |  |  |  | 159h |  |  |  |
| 16 | 1.1.2.2.1 | 详细裁剪 | 0.25d | 2021-05-19 08:00 | 2021-05-19 10:00 |  |  |  |  |  | 128.75d |  | start no earlier than 2021-05-19 08:00 | 王湾湾 | 2h |  |  |  |
| 17 | 1.1.2.2.2 | 详细估算（规模和工作量） | 0.25d | 2021-05-19 08:00 | 2021-05-19 10:00 |  |  | 2006-06-14 08:00 | 2006-06-14 17:00 | 1d? | 128.75d |  | start no earlier than 2021-05-19 08:00 | 王湾湾 | 2h |  |  | 《项目功能点复杂度估算》、《项目计划》中的“项目估算”内容、《项目估算表单(PERT)》 |
| 18 | 1.1.2.2.3 | **制定详细的《项目计划》及下属子计划** | 9.12d | 2021-05-20 08:00 | 2021-06-02 09:00 |  |  | 2006-06-14 08:00 | 2006-06-14 17:00 | 1d? |  |  |  |  | 41h |  |  |  |
| 19 | 1.1.2.2.3.1 | 更新《项目计划》 | 2d | 2021-05-20 08:00 | 2021-05-21 17:00 |  |  |  |  |  | 125.88d | 0d | start no earlier than 2021-05-20 08:00 | 王湾湾 | 16h |  |  | 《项目计划》终稿 |
| 20 | 1.1.2.2.3.2 | 更新《配置管理计划》 | 0.12d | 2021-05-24 08:00 | 2021-05-24 09:00 | 19 |  | 2006-06-14 08:00 | 2006-06-14 17:00 | 1d? | 125.88d |  |  | 葛利涛 | 1h |  |  | 《配置管理计划》终稿 |
| 21 | 1.1.2.2.3.3 | 更新《质量保证计划》 | 1d | 2021-05-25 08:00 | 2021-05-25 17:00 |  |  | 2006-06-14 08:00 | 2006-06-14 17:00 | 1d? | 122d | 0d | start no earlier than 2021-05-25 08:00 | 王乐 | 8h |  |  | 《质量保证计划》终稿 |
| 22 | 1.1.2.2.3.4 | 更新《项目进度表》 | 2d | 2021-05-26 08:00 | 2021-05-27 17:00 | 21 |  | 2006-06-14 08:00 | 2006-06-14 17:00 | 1d? | 122d |  | finish no earlier than 2021-05-14 18:00 | 王湾湾 | 16h |  |  | 《项目进度表》终稿 |
| 23 | 1.1.2.2.4 | **《项目计划》及下属子计划评审(管理评审)** | 13d | 2021-05-28 08:00 | 2021-06-15 18:00 |  |  |  |  |  | 109d |  |  |  | 114h |  |  |  |
| 24 | 1.1.2.2.4.1 | 准备评审 | 0.25d | 2021-05-28 08:00 | 2021-05-28 10:00 |  |  | 2006-06-14 08:00 | 2006-06-14 17:00 | 1d? | 121.75d |  | start no earlier than 2021-05-28 08:00 | 王湾湾; 王高磊; 张航 | 6h |  | 8 | 《项目计划评审准备表》 |
| 25 | 1.1.2.2.4.2 | 举行评审会议 | 0.25d | 2021-05-31 08:00 | 2021-05-31 10:00 |  |  | 2006-06-14 08:00 | 2006-06-14 17:00 | 1d? | 120.75d |  | start no earlier than 2021-05-31 08:00 | 王湾湾; 闻锋; 王高磊; 王英磊; 刘翠; 王乐; 葛利涛; 张航; 崔晓文; 黄本华 | 20h |  | 8 | 《项目计划评审报告》《项目计划评审会议纪要》 |

| ID | WBS | Task | Duration | Start | Finish | Predecessors | Baseline start | Baseline finish | Baseline duration | Total slack | Free slack | Constraint | Resources | Work | Text1 |
| --- | --- | --- | --- | --- | --- | --- | --- | --- | --- | --- | --- | --- | --- | --- | --- |
| 26 | 1.1.2.2.4.3 | **修正、跟踪与审核** | 11d | 2021-06-01 08:00 | 2021-06-15 18:00 |  | 2006-06-14 08:00 | 2006-06-14 17:00 | 1d? | 109d |  |  |  | 88h |  |
| 27 | 1.1.2.2.4.3.1 | 修正工作产品 | 9d | 2021-06-01 08:00 | 2021-06-11 17:00 |  |  |  |  | 109d | 0d | start no earlier than 2021-06-01 08:00 | 王湾湾 | 72h | 修正后的工作产品：《项目计划》及下属子计划 |
| 28 | 1.1.2.2.4.3.2 | 修改后的工作产品的确认 | 2d | 2021-06-14 08:00 | 2021-06-15 18:00 | 27 |  |  |  | 109d |  | finish no earlier than 2021-06-15 18:00 | 王乐 | 16h | 《项目变更记录》 |
| 29 | 1.1.3 | **执行与控制** | 127.39d | 2021-05-14 16:00 | 2021-11-04 10:04 |  |  |  |  | 3.74d |  |  |  | 288.68h |  |
| 30 | 1.1.3.1 | **项目周报** | 123.12d | 2021-05-14 16:30 | 2021-10-29 08:30 |  |  |  |  | 7.94d |  |  |  | 12h |  |
| 31 | 1.1.3.1.1 | 项目周报 1 | 0.06d | 2021-05-14 16:30 | 2021-05-14 18:00 |  |  |  |  | 131d |  | finish no earlier than 2021-05-14 18:00 | 王湾湾 | 0.5h |  |
| 32 | 1.1.3.1.2 | 项目周报 2 | 0.06d | 2021-05-21 16:30 | 2021-05-21 18:00 |  |  |  |  | 126d |  | finish no earlier than 2021-05-21 18:00 | 王湾湾 | 0.5h |  |
| 33 | 1.1.3.1.3 | 项目周报 3 | 0.06d | 2021-05-28 16:30 | 2021-05-28 18:00 |  |  |  |  | 121d |  | finish no earlier than 2021-05-28 18:00 | 王湾湾 | 0.5h |  |
| 34 | 1.1.3.1.4 | 项目周报 4 | 0.06d | 2021-06-04 16:30 | 2021-06-04 18:00 |  |  |  |  | 116d |  | finish no earlier than 2021-06-04 18:00 | 王湾湾 | 0.5h |  |
| 35 | 1.1.3.1.5 | 项目周报 5 | 0.06d | 2021-06-11 16:30 | 2021-06-11 18:00 |  |  |  |  | 111d |  | finish no earlier than 2021-06-11 18:00 | 王湾湾 | 0.5h |  |
| 36 | 1.1.3.1.6 | 项目周报 6 | 0.06d | 2021-06-18 16:30 | 2021-06-18 18:00 |  |  |  |  | 106d |  | finish no earlier than 2021-06-18 18:00 | 王湾湾 | 0.5h |  |
| 37 | 1.1.3.1.7 | 项目周报 7 | 0.06d | 2021-06-25 16:30 | 2021-06-25 18:00 |  |  |  |  | 101d |  | finish no earlier than 2021-06-25 18:00 | 王湾湾 | 0.5h |  |
| 38 | 1.1.3.1.8 | 项目周报 8 | 0.06d | 2021-07-02 16:30 | 2021-07-02 18:00 |  |  |  |  | 96d |  | finish no earlier than 2021-07-02 18:00 | 王湾湾 | 0.5h |  |
| 39 | 1.1.3.1.9 | 项目周报 9 | 0.06d | 2021-07-09 16:30 | 2021-07-09 18:00 |  |  |  |  | 89d |  | finish no earlier than 2021-07-09 18:00 | 王湾湾 | 0.5h |  |
| 40 | 1.1.3.1.10 | 项目周报 10 | 0.06d | 2021-07-16 16:30 | 2021-07-16 18:00 |  |  |  |  | 83d |  | finish no earlier than 2021-07-16 18:00 | 王湾湾 | 0.5h |  |
| 41 | 1.1.3.1.11 | 项目周报 11 | 0.06d | 2021-07-23 16:30 | 2021-07-23 18:00 |  |  |  |  | 77d |  | finish no earlier than 2021-07-23 18:00 | 王湾湾 | 0.5h |  |
| 42 | 1.1.3.1.12 | 项目周报 12 | 0.06d | 2021-07-30 16:30 | 2021-07-30 18:00 |  |  |  |  | 72d |  | finish no earlier than 2021-07-30 18:00 | 王湾湾 | 0.5h |  |
| 43 | 1.1.3.1.13 | 项目周报 13 | 0.06d | 2021-08-06 16:30 | 2021-08-06 18:00 |  |  |  |  | 67d |  | finish no earlier than 2021-08-06 18:00 | 王湾湾 | 0.5h |  |
| 44 | 1.1.3.1.14 | 项目周报 14 | 0.06d | 2021-08-13 16:30 | 2021-08-13 18:00 |  |  |  |  | 62d |  | finish no earlier than 2021-08-13 18:00 | 王湾湾 | 0.5h |  |
| 45 | 1.1.3.1.15 | 项目周报 15 | 0.06d | 2021-08-20 16:30 | 2021-08-20 18:00 |  |  |  |  | 57d |  | finish no earlier than 2021-08-20 18:00 | 王湾湾 | 0.5h |  |
| 46 | 1.1.3.1.16 | 项目周报 16 | 0.06d | 2021-08-27 16:30 | 2021-08-27 18:00 |  |  |  |  | 52d |  | finish no earlier than 2021-08-27 18:00 | 王湾湾 | 0.5h |  |
| 47 | 1.1.3.1.17 | 项目周报 17 | 0.06d | 2021-09-03 16:30 | 2021-09-03 18:00 |  |  |  |  | 47d |  | finish no earlier than 2021-09-03 18:00 | 王湾湾 | 0.5h |  |
| 48 | 1.1.3.1.18 | 项目周报 18 | 0.06d | 2021-09-10 16:30 | 2021-09-10 18:00 |  |  |  |  | 42d |  | finish no earlier than 2021-09-10 18:00 | 王湾湾 | 0.5h |  |
| 49 | 1.1.3.1.19 | 项目周报 19 | 0.06d | 2021-09-17 16:30 | 2021-09-17 18:00 |  |  |  |  | 37d |  | finish no earlier than 2021-09-17 18:00 | 王湾湾 | 0.5h |  |
| 50 | 1.1.3.1.20 | 项目周报 20 | 0.06d | 2021-09-24 16:30 | 2021-09-24 18:00 |  |  |  |  | 32d |  | finish no earlier than 2021-09-24 18:00 | 王湾湾 | 0.5h |  |
| 51 | 1.1.3.1.21 | 项目周报 21 | 0.06d | 2021-10-08 16:30 | 2021-10-08 18:00 |  |  |  |  | 22d |  | finish no earlier than 2021-10-08 18:00 | 王湾湾 | 0.5h |  |
| 52 | 1.1.3.1.22 | 项目周报 22 | 0.06d | 2021-10-15 16:30 | 2021-10-15 18:00 |  |  |  |  | 17d |  | finish no earlier than 2021-10-15 18:00 | 王湾湾 | 0.5h |  |
| 53 | 1.1.3.1.23 | 项目周报 23 | 0.06d | 2021-10-22 16:30 | 2021-10-22 18:00 |  |  |  |  | 12d |  | finish no earlier than 2021-10-22 18:00 | 王湾湾 | 0.5h |  |
| 54 | 1.1.3.1.24 | 项目周报 24 | 0.06d | 2021-10-29 08:00 | 2021-10-29 08:30 |  |  |  |  | 7.94d |  | start no earlier than 2021-10-29 08:00 | 王湾湾 | 0.5h |  |

| ID | WBS | Task | Duration | Start | Finish | Total slack | Constraint | Resources | Work |
| --- | --- | --- | --- | --- | --- | --- | --- | --- | --- |
| 55 | 1.1.3.2 | **项目周例会** | 123.24d | 2021-05-14 16:00 | 2021-10-29 08:54 | 7.89d |  |  | 221h |
| 56 | 1.1.3.2.1 | 项目周例会 1 | 0.12d | 2021-05-14 16:00 | 2021-05-14 18:00 | 131d | finish no earlier than 2021-05-14 18:00 | 王湾湾; 闻锋; 王高磊; 王英磊; 刘翠; 王乐; 葛利涛; 张航; 崔晓文; 黄本华 | 10h |
| 57 | 1.1.3.2.2 | 项目周例会 2 | 0.12d | 2021-05-21 16:00 | 2021-05-21 18:00 | 126d | finish no earlier than 2021-05-21 18:00 | 王湾湾; 闻锋; 王高磊; 王英磊; 刘翠; 王乐; 葛利涛; 张航; 崔晓文; 黄本华 | 10h |
| 58 | 1.1.3.2.3 | 项目周例会 3 | 0.12d | 2021-05-28 16:00 | 2021-05-28 18:00 | 121d | finish no earlier than 2021-05-28 18:00 | 王湾湾; 闻锋; 王高磊; 王英磊; 刘翠; 王乐; 葛利涛; 张航; 崔晓文; 黄本华 | 10h |
| 59 | 1.1.3.2.4 | 项目周例会 4 | 0.12d | 2021-06-04 16:00 | 2021-06-04 18:00 | 116d | finish no earlier than 2021-06-04 18:00 | 王湾湾; 闻锋; 王高磊; 王英磊; 刘翠; 王乐; 葛利涛; 张航; 崔晓文; 黄本华 | 10h |
| 60 | 1.1.3.2.5 | 项目周例会 5 | 0.12d | 2021-06-11 16:00 | 2021-06-11 18:00 | 111d | finish no earlier than 2021-06-11 18:00 | 王湾湾; 闻锋; 王高磊; 王英磊; 刘翠; 王乐; 葛利涛; 张航; 崔晓文; 黄本华 | 10h |
| 61 | 1.1.3.2.6 | 项目周例会 6 | 0.11d | 2021-06-18 16:06 | 2021-06-18 18:00 | 106d | finish no earlier than 2021-06-18 18:00 | 王湾湾; 闻锋; 王高磊; 王英磊; 刘翠; 王乐; 葛利涛; 张航; 崔晓文; 黄本华 | 9h |
| 62 | 1.1.3.2.7 | 项目周例会 7 | 0.11d | 2021-06-25 16:06 | 2021-06-25 18:00 | 101d | finish no earlier than 2021-06-25 18:00 | 王湾湾; 闻锋; 王高磊; 王英磊; 刘翠; 王乐; 葛利涛; 张航; 崔晓文; 黄本华 | 9h |
| 63 | 1.1.3.2.8 | 项目周例会 8 | 0.11d | 2021-07-02 16:06 | 2021-07-02 18:00 | 96d | finish no earlier than 2021-07-02 18:00 | 王湾湾; 闻锋; 王高磊; 王英磊; 刘翠; 王乐; 葛利涛; 张航; 崔晓文; 黄本华 | 9h |
| 64 | 1.1.3.2.9 | 项目周例会 9 | 0.11d | 2021-07-09 16:06 | 2021-07-09 18:00 | 89d | finish no earlier than 2021-07-09 18:00 | 王湾湾; 闻锋; 王高磊; 王英磊; 刘翠; 王乐; 葛利涛; 张航; 崔晓文; 黄本华 | 9h |
| 65 | 1.1.3.2.10 | 项目周例会 10 | 0.11d | 2021-07-16 16:06 | 2021-07-16 18:00 | 83d | finish no earlier than 2021-07-16 18:00 | 王湾湾; 闻锋; 王高磊; 王英磊; 刘翠; 王乐; 葛利涛; 张航; 崔晓文; 黄本华 | 9h |
| 66 | 1.1.3.2.11 | 项目周例会 11 | 0.11d | 2021-07-23 16:06 | 2021-07-23 18:00 | 77d | finish no earlier than 2021-07-23 18:00 | 王湾湾; 闻锋; 王高磊; 王英磊; 刘翠; 王乐; 葛利涛; 张航; 崔晓文; 黄本华 | 9h |
| 67 | 1.1.3.2.12 | 项目周例会 12 | 0.11d | 2021-07-30 16:06 | 2021-07-30 18:00 | 72d | finish no earlier than 2021-07-30 18:00 | 王湾湾; 闻锋; 王高磊; 王英磊; 刘翠; 王乐; 葛利涛; 张航; 崔晓文; 黄本华 | 9h |
| 68 | 1.1.3.2.13 | 项目周例会 13 | 0.11d | 2021-08-06 16:06 | 2021-08-06 18:00 | 67d | finish no earlier than 2021-08-06 18:00 | 王湾湾; 闻锋; 王高磊; 王英磊; 刘翠; 王乐; 葛利涛; 张航; 崔晓文; 黄本华 | 9h |
| 69 | 1.1.3.2.14 | 项目周例会 14 | 0.11d | 2021-08-13 16:06 | 2021-08-13 18:00 | 62d | finish no earlier than 2021-08-13 18:00 | 王湾湾; 闻锋; 王高磊; 王英磊; 刘翠; 王乐; 葛利涛; 张航; 崔晓文; 黄本华 | 9h |
| 70 | 1.1.3.2.15 | 项目周例会 15 | 0.11d | 2021-08-20 16:06 | 2021-08-20 18:00 | 57d | finish no earlier than 2021-08-20 18:00 | 王湾湾; 闻锋; 王高磊; 王英磊; 刘翠; 王乐; 葛利涛; 张航; 崔晓文; 黄本华 | 9h |
| 71 | 1.1.3.2.16 | 项目周例会 16 | 0.11d | 2021-08-27 16:06 | 2021-08-27 18:00 | 52d | finish no earlier than 2021-08-27 18:00 | 王湾湾; 闻锋; 王高磊; 王英磊; 刘翠; 王乐; 葛利涛; 张航; 崔晓文; 黄本华 | 9h |
| 72 | 1.1.3.2.17 | 项目周例会 17 | 0.11d | 2021-09-03 16:06 | 2021-09-03 18:00 | 47d | finish no earlier than 2021-09-03 18:00 | 王湾湾; 闻锋; 王高磊; 王英磊; 刘翠; 王乐; 葛利涛; 张航; 崔晓文; 黄本华 | 9h |
| 73 | 1.1.3.2.18 | 项目周例会 18 | 0.11d | 2021-09-10 16:06 | 2021-09-10 18:00 | 42d | finish no earlier than 2021-09-10 18:00 | 王湾湾; 闻锋; 王高磊; 王英磊; 刘翠; 王乐; 葛利涛; 张航; 崔晓文; 黄本华 | 9h |
| 74 | 1.1.3.2.19 | 项目周例会 19 | 0.11d | 2021-09-17 16:06 | 2021-09-17 18:00 | 37d | finish no earlier than 2021-09-17 18:00 | 王湾湾; 闻锋; 王高磊; 王英磊; 刘翠; 王乐; 葛利涛; 张航; 崔晓文; 黄本华 | 9h |
| 75 | 1.1.3.2.20 | 项目周例会 20 | 0.11d | 2021-09-24 16:06 | 2021-09-24 18:00 | 32d | finish no earlier than 2021-09-24 18:00 | 王湾湾; 闻锋; 王高磊; 王英磊; 刘翠; 王乐; 葛利涛; 张航; 崔晓文; 黄本华 | 9h |
| 76 | 1.1.3.2.21 | 项目周例会 21 | 0.11d | 2021-10-08 16:06 | 2021-10-08 18:00 | 22d | finish no earlier than 2021-10-08 18:00 | 王湾湾; 闻锋; 王高磊; 王英磊; 刘翠; 王乐; 葛利涛; 张航; 崔晓文; 黄本华 | 9h |
| 77 | 1.1.3.2.22 | 项目周例会 22 | 0.11d | 2021-10-15 16:06 | 2021-10-15 18:00 | 17d | finish no earlier than 2021-10-15 18:00 | 王湾湾; 闻锋; 王高磊; 王英磊; 刘翠; 王乐; 葛利涛; 张航; 崔晓文; 黄本华 | 9h |
| 78 | 1.1.3.2.23 | 项目周例会 23 | 0.11d | 2021-10-22 16:06 | 2021-10-22 18:00 | 12d | finish no earlier than 2021-10-22 18:00 | 王湾湾; 闻锋; 王高磊; 王英磊; 刘翠; 王乐; 葛利涛; 张航; 崔晓文; 黄本华 | 9h |
| 79 | 1.1.3.2.24 | 项目周例会 24 | 0.11d | 2021-10-29 08:00 | 2021-10-29 08:54 | 7.89d | start no earlier than 2021-10-29 08:00 | 王湾湾; 闻锋; 王高磊; 王英磊; 刘翠; 王乐; 葛利涛; 张航; 崔晓文; 黄本华 | 9h |

| ID | WBS | Task | Type | Duration | Start | Finish | Predecessors | Baseline start | Baseline finish | Baseline duration | Total slack | Free slack | Constraint | Calendar | Resources | Work | Text1 |
| --- | --- | --- | --- | --- | --- | --- | --- | --- | --- | --- | --- | --- | --- | --- | --- | --- | --- |
| 80 | 1.1.3.3 | **里程碑评审(管理评审)** |  | 89.26d | 2021-07-06 08:00 | 2021-11-04 10:04 |  | 2006-06-14 08:00 | 2006-06-14 17:00 | 1d? | 3.74d |  |  |  |  | 36.96h |  |
| 81 | 1.1.3.3.1 | **计划、需求与设计里程碑评审** |  | 0.12d | 2021-07-06 08:00 | 2021-07-06 09:00 |  |  |  |  | 92.88d |  |  |  |  | 12h |  |
| 82 | 1.1.3.3.1.1 | 评审准备 |  | 0.12d | 2021-07-06 08:00 | 2021-07-06 09:00 |  | 2006-06-14 08:00 | 2006-06-14 17:00 | 1d? | 92.88d |  | start no earlier than 2021-07-06 08:00 |  | 王乐 | 1h |  |
| 83 | 1.1.3.3.1.2 | 执行评审 |  | 0.12d | 2021-07-06 08:00 | 2021-07-06 09:00 |  | 2006-06-14 08:00 | 2006-06-14 17:00 | 1d? | 92.88d |  | start no earlier than 2021-07-06 08:00 |  | 王湾湾; 闻锋; 王高磊; 王英磊; 刘翠; 王乐; 葛利涛; 张航; 客户; 黄本华 | 10h |  |
| 84 | 1.1.3.3.1.3 | 后续工作 |  | 0.12d | 2021-07-06 08:00 | 2021-07-06 09:00 |  | 2006-06-14 08:00 | 2006-06-14 17:00 | 1d? | 92.88d |  | start no earlier than 2021-07-06 08:00 |  | 王乐 | 1h |  |
| 85 | 1.1.3.3.2 | **编码与集成里程碑评审** |  | 0.26d | 2021-09-29 08:00 | 2021-09-29 10:04 |  |  |  |  | 29.74d |  |  |  |  | 12.48h |  |
| 86 | 1.1.3.3.2.1 | 评审准备 |  | 0.13d | 2021-09-29 08:00 | 2021-09-29 09:02 |  | 2006-06-14 08:00 | 2006-06-14 17:00 | 1d? | 29.74d | 0d | start no earlier than 2021-09-29 08:00 |  | 王乐 | 1.04h |  |
| 87 | 1.1.3.3.2.2 | 执行评审 |  | 0.13d | 2021-09-29 09:02 | 2021-09-29 10:04 | 86 | 2006-06-14 08:00 | 2006-06-14 17:00 | 1d? | 29.74d |  | finish no earlier than 2020-06-29 18:00 |  | 王湾湾; 闻锋; 王高磊; 王英磊; 刘翠; 王乐; 葛利涛; 张航; 客户; 黄本华 | 10.4h |  |
| 88 | 1.1.3.3.2.3 | 后续工作 |  | 0.13d | 2021-09-29 08:00 | 2021-09-29 09:02 |  | 2006-06-14 08:00 | 2006-06-14 17:00 | 1d? | 29.87d |  | start no earlier than 2021-09-29 08:00 |  | 王乐 | 1.04h |  |
| 89 | 1.1.3.3.3 | **测试、实施与结项里程碑评审** |  | 0.26d | 2021-11-04 08:00 | 2021-11-04 10:04 |  |  |  |  | 3.74d |  |  |  |  | 12.48h |  |
| 90 | 1.1.3.3.3.1 | 评审准备 |  | 0.13d | 2021-11-04 08:00 | 2021-11-04 09:02 |  | 2006-06-14 08:00 | 2006-06-14 17:00 | 1d? | 3.87d |  | start no earlier than 2021-11-04 08:00 |  | 王乐 | 1.04h |  |
| 91 | 1.1.3.3.3.2 | 执行评审 |  | 0.13d | 2021-11-04 08:00 | 2021-11-04 09:02 |  | 2006-06-14 08:00 | 2006-06-14 17:00 | 1d? | 3.74d | 0d | start no earlier than 2021-11-04 08:00 |  | 王湾湾; 闻锋; 王高磊; 王英磊; 刘翠; 王乐; 葛利涛; 张航; 客户; 黄本华 | 10.4h |  |
| 92 | 1.1.3.3.3.3 | 后续工作 |  | 0.13d | 2021-11-04 09:02 | 2021-11-04 10:04 | 91 | 2006-06-14 08:00 | 2006-06-14 17:00 | 1d? | 3.74d |  | start no earlier than 2020-09-09 08:00 |  | 王乐 | 1.04h |  |
| 93 | 1.1.3.4 | **度量信息维护更新** |  | 99.14d | 2021-06-14 08:00 | 2021-10-29 09:07 |  |  |  |  | 7.86d |  |  | 科创日历 |  | 6.72h | 《项目度量数据库》 |
| 94 | 1.1.3.4.1 | 《项目度量库》数据更新 1（需求开发阶段结束） |  | 0.14d | 2021-06-14 08:00 | 2021-06-14 09:07 |  |  |  |  | 106.86d |  | start no earlier than 2021-06-14 08:00 | 科创日历 | 王湾湾 | 1.12h |  |
| 95 | 1.1.3.4.2 | 《项目度量库》数据更新 2（系统设计阶段结束） | manual | 0.14d | 2021-07-06 08:00 | 2021-07-06 09:07 |  |  |  |  |  |  | start no earlier than 2021-07-06 08:00 | 科创日历 | 王湾湾 | 1.12h |  |
| 96 | 1.1.3.4.3 | 《项目度量库》数据更新 3（编码实现阶段结束） | manual | 0.14d | 2021-09-24 08:00 | 2021-09-24 09:07 |  |  |  |  |  |  | start no earlier than 2021-09-24 08:00 | 科创日历 | 王湾湾 | 1.12h |  |
| 97 | 1.1.3.4.4 | 《项目度量库》数据更新 4（产品集成阶段结束） | manual | 0.14d | 2021-09-29 08:00 | 2021-09-29 09:07 |  |  |  |  |  |  | start no earlier than 2021-09-29 08:00 | 科创日历 | 王湾湾 | 1.12h |  |
| 98 | 1.1.3.4.5 | 《项目度量库》数据更新 5（系统测试阶段结束） | manual | 0.14d | 2021-10-14 08:00 | 2021-10-14 09:07 |  |  |  |  |  |  | start no earlier than 2021-10-14 08:00 | 科创日历 | 王湾湾 | 1.12h |  |
| 99 | 1.1.3.4.6 | 《项目度量库》数据更新 6（产品交付阶段结束） | manual | 0.14d | 2021-10-29 08:00 | 2021-10-29 09:07 |  |  |  |  |  |  | start no earlier than 2021-10-29 08:00 | 科创日历 | 王湾湾 | 1.12h |  |
| 100 | 1.1.3.5 | **风险识别与跟踪** |  | 123.12d | 2021-05-14 16:30 | 2021-10-29 08:30 |  |  |  |  | 7.94d |  |  |  |  | 12h |  |
| 101 | 1.1.3.5.1 | 风险识别与跟踪 1 |  | 0.06d | 2021-05-14 16:30 | 2021-05-14 18:00 |  |  |  |  | 131d |  | finish no earlier than 2021-05-14 18:00 |  | 王湾湾 | 0.5h |  |
| 102 | 1.1.3.5.2 | 风险识别与跟踪 2 |  | 0.06d | 2021-05-21 16:30 | 2021-05-21 18:00 |  |  |  |  | 126d |  | finish no earlier than 2021-05-21 18:00 |  | 王湾湾 | 0.5h |  |
| 103 | 1.1.3.5.3 | 风险识别与跟踪 3 |  | 0.06d | 2021-05-28 16:30 | 2021-05-28 18:00 |  |  |  |  | 121d |  | finish no earlier than 2021-05-28 18:00 |  | 王湾湾 | 0.5h |  |
| 104 | 1.1.3.5.4 | 风险识别与跟踪 4 |  | 0.06d | 2021-06-04 16:30 | 2021-06-04 18:00 |  |  |  |  | 116d |  | finish no earlier than 2021-06-04 18:00 |  | 王湾湾 | 0.5h |  |
| 105 | 1.1.3.5.5 | 风险识别与跟踪 5 |  | 0.06d | 2021-06-11 16:30 | 2021-06-11 18:00 |  |  |  |  | 111d |  | finish no earlier than 2021-06-11 18:00 |  | 王湾湾 | 0.5h |  |
| 106 | 1.1.3.5.6 | 风险识别与跟踪 6 |  | 0.06d | 2021-06-18 16:30 | 2021-06-18 18:00 |  |  |  |  | 106d |  | finish no earlier than 2021-06-18 18:00 |  | 王湾湾 | 0.5h |  |
| 107 | 1.1.3.5.7 | 风险识别与跟踪 7 |  | 0.06d | 2021-06-25 16:30 | 2021-06-25 18:00 |  |  |  |  | 101d |  | finish no earlier than 2021-06-25 18:00 |  | 王湾湾 | 0.5h |  |
| 108 | 1.1.3.5.8 | 风险识别与跟踪 8 |  | 0.06d | 2021-07-02 16:30 | 2021-07-02 18:00 |  |  |  |  | 96d |  | finish no earlier than 2021-07-02 18:00 |  | 王湾湾 | 0.5h |  |
| 109 | 1.1.3.5.9 | 风险识别与跟踪 9 |  | 0.06d | 2021-07-09 16:30 | 2021-07-09 18:00 |  |  |  |  | 89d |  | finish no earlier than 2021-07-09 18:00 |  | 王湾湾 | 0.5h |  |
| 110 | 1.1.3.5.10 | 风险识别与跟踪 10 |  | 0.06d | 2021-07-16 16:30 | 2021-07-16 18:00 |  |  |  |  | 83d |  | finish no earlier than 2021-07-16 18:00 |  | 王湾湾 | 0.5h |  |
| 111 | 1.1.3.5.11 | 风险识别与跟踪 11 |  | 0.06d | 2021-07-23 16:30 | 2021-07-23 18:00 |  |  |  |  | 77d |  | finish no earlier than 2021-07-23 18:00 |  | 王湾湾 | 0.5h |  |
| 112 | 1.1.3.5.12 | 风险识别与跟踪 12 |  | 0.06d | 2021-07-30 16:30 | 2021-07-30 18:00 |  |  |  |  | 72d |  | finish no earlier than 2021-07-30 18:00 |  | 王湾湾 | 0.5h |  |
| 113 | 1.1.3.5.13 | 风险识别与跟踪 13 |  | 0.06d | 2021-08-06 16:30 | 2021-08-06 18:00 |  |  |  |  | 67d |  | finish no earlier than 2021-08-06 18:00 |  | 王湾湾 | 0.5h |  |
| 114 | 1.1.3.5.14 | 风险识别与跟踪 14 |  | 0.06d | 2021-08-13 16:30 | 2021-08-13 18:00 |  |  |  |  | 62d |  | finish no earlier than 2021-08-13 18:00 |  | 王湾湾 | 0.5h |  |
| 115 | 1.1.3.5.15 | 风险识别与跟踪 15 |  | 0.06d | 2021-08-20 16:30 | 2021-08-20 18:00 |  |  |  |  | 57d |  | finish no earlier than 2021-08-20 18:00 |  | 王湾湾 | 0.5h |  |
| 116 | 1.1.3.5.16 | 风险识别与跟踪 16 |  | 0.06d | 2021-08-27 16:30 | 2021-08-27 18:00 |  |  |  |  | 52d |  | finish no earlier than 2021-08-27 18:00 |  | 王湾湾 | 0.5h |  |
| 117 | 1.1.3.5.17 | 风险识别与跟踪 17 |  | 0.06d | 2021-09-03 16:30 | 2021-09-03 18:00 |  |  |  |  | 47d |  | finish no earlier than 2021-09-03 18:00 |  | 王湾湾 | 0.5h |  |
| 118 | 1.1.3.5.18 | 风险识别与跟踪 18 |  | 0.06d | 2021-09-10 16:30 | 2021-09-10 18:00 |  |  |  |  | 42d |  | finish no earlier than 2021-09-10 18:00 |  | 王湾湾 | 0.5h |  |
| 119 | 1.1.3.5.19 | 风险识别与跟踪 19 |  | 0.06d | 2021-09-17 16:30 | 2021-09-17 18:00 |  |  |  |  | 37d |  | finish no earlier than 2021-09-17 18:00 |  | 王湾湾 | 0.5h |  |
| 120 | 1.1.3.5.20 | 风险识别与跟踪 20 |  | 0.06d | 2021-09-24 16:30 | 2021-09-24 18:00 |  |  |  |  | 32d |  | finish no earlier than 2021-09-24 18:00 |  | 王湾湾 | 0.5h |  |
| 121 | 1.1.3.5.21 | 风险识别与跟踪 21 |  | 0.06d | 2021-10-08 16:30 | 2021-10-08 18:00 |  |  |  |  | 22d |  | finish no earlier than 2021-10-08 18:00 |  | 王湾湾 | 0.5h |  |
| 122 | 1.1.3.5.22 | 风险识别与跟踪 22 |  | 0.06d | 2021-10-15 16:30 | 2021-10-15 18:00 |  |  |  |  | 17d |  | finish no earlier than 2021-10-15 18:00 |  | 王湾湾 | 0.5h |  |
| 123 | 1.1.3.5.23 | 风险识别与跟踪 23 |  | 0.06d | 2021-10-22 16:30 | 2021-10-22 18:00 |  |  |  |  | 12d |  | finish no earlier than 2021-10-22 18:00 |  | 王湾湾 | 0.5h |  |
| 124 | 1.1.3.5.24 | 风险识别与跟踪 24 |  | 0.06d | 2021-10-29 08:00 | 2021-10-29 08:30 |  |  |  |  | 7.94d |  | start no earlier than 2021-10-29 08:00 |  | 王湾湾 | 0.5h |  |

| ID | WBS | Task | Type | Duration | Start | Finish | Predecessors | Baseline start | Baseline finish | Baseline duration | Total slack | Free slack | Constraint | Resources | Work | Baseline cost | Text1 |
| --- | --- | --- | --- | --- | --- | --- | --- | --- | --- | --- | --- | --- | --- | --- | --- | --- | --- |
| 125 | 1.1.4 | **项目结项** |  | 4.12d | 2021-11-01 08:00 | 2021-11-04 18:00 |  | 2006-06-14 08:00 | 2006-06-14 17:00 | 1d? |  |  |  |  | 102h |  |  |
| 126 | 1.1.4.1 | **结项准备** |  | 0.5d | 2021-11-01 08:00 | 2021-11-01 12:00 |  |  |  |  | 6.5d |  |  |  | 8h |  |  |
| 127 | 1.1.4.1.1 | 撰写《结项报告》 |  | 0.5d | 2021-11-01 08:00 | 2021-11-01 12:00 |  | 2006-06-14 08:00 | 2006-06-14 17:00 | 1d? | 6.5d |  | start no earlier than 2021-11-01 08:00 | 王湾湾 | 4h |  | 《项目结项总结报告》 |
| 128 | 1.1.4.1.2 | 结项申请，高级经理阅读申请材料 |  | 0.5d | 2021-11-01 08:00 | 2021-11-01 12:00 |  | 2006-06-14 08:00 | 2006-06-14 17:00 | 1d? | 6.5d |  | start no earlier than 2021-11-01 08:00 | 张航 | 4h |  | 《QA总结报告》 |
| 129 | 1.1.4.2 | **度量分析** |  | 0.5d | 2021-11-02 08:00 | 2021-11-02 12:00 |  |  |  |  | 5.5d |  |  |  | 8h |  |  |
| 130 | 1.1.4.2.1 | 项目结项阶段度量数据收集整理 |  | 0.5d | 2021-11-02 08:00 | 2021-11-02 12:00 |  |  |  |  | 5.5d |  | start no earlier than 2021-11-02 08:00 | 王湾湾 | 4h |  |  |
| 131 | 1.1.4.2.2 | 更新《项目度量数据库》 |  | 0.5d | 2021-11-02 08:00 | 2021-11-02 12:00 |  |  |  |  | 5.5d |  | start no earlier than 2021-11-02 08:00 | 王湾湾 | 4h |  | 《项目度量数据库》 |
| 132 | 1.1.4.3 | **召开项目结项会议** |  | 1d | 2021-11-03 08:00 | 2021-11-03 17:00 |  | 2006-06-14 08:00 | 2006-06-14 17:00 | 1d? | 0d |  |  |  | 84h |  |  |
| 133 | 1.1.4.3.1 | 项目结项会议 | manual | 1d | 2021-11-03 08:00 | 2021-11-03 17:00 |  |  |  |  |  |  |  | 王湾湾; 闻锋; 王高磊; 王英磊; 刘翠; 王乐; 葛利涛; 张航; 崔晓文; 黄本华 | 80h |  | 《项目结项评审报告》《结项会议纪要》 |
| 134 | 1.1.4.3.2 | 总结经验教训 |  | 0.25d | 2021-11-03 08:00 | 2021-11-03 10:00 |  |  |  |  | 4.5d | 0d | start no earlier than 2021-11-03 08:00 | 王湾湾 | 2h |  | 《项目过程改进建议》 |
| 135 | 1.1.4.3.3 | 高级经理批准结项 | manual | 0.25d | 2021-11-03 08:00 | 2021-11-03 10:00 | 134 |  |  |  |  |  | start no earlier than 2021-11-03 08:00 | 张航 | 2h |  | 高级经理审批后的《结项报告》 |
| 136 | 1.1.4.4 | **项目资产纳入组织过程资产库** |  | 0.25d | 2021-11-04 08:00 | 2021-11-04 10:00 |  | 2006-06-14 08:00 | 2006-06-14 17:00 | 1d? | 0d |  |  |  | 2h |  |  |
| 137 | 1.1.4.4.1 | EPG纳入组织资产库 | manual | 0.25d | 2021-11-04 08:00 | 2021-11-04 10:00 |  |  |  |  |  |  | start no earlier than 2021-11-04 08:00 | 张航 | 2h |  | 组织资产库 |
| 138 | 1.2 | **工程过程** |  | 136.12d | 2021-05-10 08:00 | 2021-11-09 18:00 |  |  |  |  |  |  |  |  | 2343.7h |  |  |
| 139 | 1.2.1 | **需求开发** |  | 20.12d | 2021-05-19 08:00 | 2021-06-15 18:00 |  | 2006-06-14 08:00 | 2006-06-15 17:00 | 2d? |  |  |  |  | 233h | 65 |  |
| 140 | 1.2.1.1 | **用户需求获取** |  | 4d | 2021-05-19 08:00 | 2021-05-24 18:00 |  | 2006-06-14 08:00 | 2006-06-14 17:00 | 1d? | 121.5d |  |  |  | 32h | 8 |  |
| 141 | 1.2.1.1.1 | 需求调查前准备 |  | 0.75d | 2021-05-19 08:00 | 2021-05-19 15:00 |  |  |  |  | 121.5d | 0d | start no earlier than 2021-04-04 08:00 | 康旭红 | 6h |  | 《需求调研计划》 |
| 142 | 1.2.1.1.2 | 需求调研 |  | 1.5d | 2021-05-19 15:00 | 2021-05-21 10:00 | 141 |  |  |  | 121.5d | 0d | start no earlier than 2021-01-25 08:00 | 康旭红 | 12h |  | 《需求调查单》 |
| 143 | 1.2.1.1.3 | 撰写《用户需求说明书》 |  | 1.75d | 2021-05-21 10:00 | 2021-05-24 18:00 | 142 |  |  |  | 121.5d | 0d | finish no earlier than 2021-05-24 18:00 | 康旭红 | 14h |  | 《用户需求说明书》 |
| 144 | 1.2.1.2 | **用户需求评审(正式评审)** |  | 3.25d | 2021-05-25 08:00 | 2021-05-28 10:00 | 143 | 2006-06-14 08:00 | 2006-06-14 17:00 | 1d? | 118.75d | 5.75d |  |  | 66h | 24 |  |
| 145 | 1.2.1.2.1 | 准备评审 |  | 0.5d | 2021-05-25 08:00 | 2021-05-25 12:00 |  | 2006-06-14 08:00 | 2006-06-14 17:00 | 1d? | 121.5d |  | start no earlier than 2021-05-25 08:00 | 王湾湾; 张航; 客户; 康旭红 | 16h | 8 | 《用户需求说明书评审准备表》 |
| 146 | 1.2.1.2.2 | 举行评审会议 |  | 0.5d | 2021-05-26 08:00 | 2021-05-26 12:00 |  | 2006-06-14 08:00 | 2006-06-14 17:00 | 1d? | 120.5d |  | start no earlier than 2021-05-26 08:00 | 王湾湾; 王高磊; 王英磊; 刘翠; 王乐; 葛利涛; 张航; 崔晓文; 客户; 黄本华; 康旭红'闻锋 | 44h | 8 | 《评审会议纪要》 |
| 147 | 1.2.1.2.3 | **修正、跟踪与审核** |  | 1.25d | 2021-05-27 08:00 | 2021-05-28 10:00 |  | 2006-06-14 08:00 | 2006-06-14 17:00 | 1d? | 118.75d |  |  |  | 6h |  |  |
| 148 | 1.2.1.2.3.1 | 修正工作产品 |  | 0.5d | 2021-05-27 08:00 | 2021-05-27 12:00 |  |  |  |  | 119.5d |  | start no earlier than 2021-05-27 08:00 | 康旭红 | 4h |  | 修正后的工作产品：《用户需求说明书》 |
| 149 | 1.2.1.2.3.2 | 修改后的工作产品的确认 |  | 0.25d | 2021-05-28 08:00 | 2021-05-28 10:00 |  |  |  |  | 118.75d |  | start no earlier than 2021-05-28 08:00 | 王乐 | 2h |  | 《用户需求说明书评审报告》 |
| 150 | 1.2.1.3 | 新建《需求跟踪矩阵》 |  | 0.25d | 2021-05-31 08:00 | 2021-05-31 10:00 |  |  |  |  | 116.75d | 0.75d | start no earlier than 2021-05-31 08:00 | 闻锋 | 2h |  | 《需求跟踪矩阵》 |

| ID | WBS | Task | Type | Duration | Start | Finish | Predecessors | Baseline start | Baseline finish | Baseline duration | Total slack | Free slack | Constraint | Resources | Work | Baseline cost | Text1 |
| --- | --- | --- | --- | --- | --- | --- | --- | --- | --- | --- | --- | --- | --- | --- | --- | --- | --- |
| 151 | 1.2.1.4 | **系统需求定义** |  | 7d | 2021-06-01 08:00 | 2021-06-09 18:00 | 150 | 2006-06-14 08:00 | 2006-06-14 14:00 | 5h | 113d |  |  |  | 56h | 5 |  |
| 152 | 1.2.1.4.1 | 撰写《产品需求规格说明书》 |  | 4d | 2021-06-01 08:00 | 2021-06-04 17:00 |  |  |  |  | 116d |  | start no earlier than 2021-06-01 08:00 | 康旭红 | 32h |  | 《产品需求规格说明书》 |
| 153 | 1.2.1.4.2 | 制作系统开发原型Demo |  | 3d | 2021-06-07 08:00 | 2021-06-09 18:00 | 144 |  |  |  | 113d |  | finish no earlier than 2021-06-09 18:00 | 康旭红 | 24h |  |  |
| 154 | 1.2.1.5 | **产品需求评审(正式评审)** |  | 2.25d | 2021-06-10 08:00 | 2021-06-14 10:00 |  |  |  |  | 1d |  |  |  | 75h |  |  |
| 155 | 1.2.1.5.1 | 准备评审 |  | 0.5d | 2021-06-10 08:00 | 2021-06-10 12:00 |  | 2006-06-14 08:00 | 2006-06-14 17:00 | 1d? | 112.5d |  | start no earlier than 2021-06-10 08:00 | 王湾湾; 张航; 客户; 康旭红 | 16h | 8 | 《评审准备表》 |
| 156 | 1.2.1.5.2 | 举行评审会议 |  | 0.5d | 2021-06-10 08:00 | 2021-06-10 12:00 |  | 2006-06-14 08:00 | 2006-06-14 17:00 | 1d? | 111.38d | 0.5d | start no earlier than 2021-06-10 08:00 | 王湾湾; 闻锋; 王高磊; 王英磊; 刘翠; 王乐; 葛利涛; 张航; 崔晓文; 客户; 黄本华; 康旭红 | 48h | 8 | 《评审会议记录》 |
| 157 | 1.2.1.5.3 | **修正、跟踪与审核** |  | 1.25d | 2021-06-11 08:00 | 2021-06-14 10:00 |  | 2006-06-14 08:00 | 2006-06-14 17:00 | 1d? | 0d |  |  |  | 11h |  |  |
| 158 | 1.2.1.5.3.1 | 修正工作产品 | manual | 1.12d | 2021-06-11 08:00 | 2021-06-11 18:00 | 156 |  |  |  |  |  | start no earlier than 2021-06-11 08:00 | 康旭红 | 9h |  | 修正后的工作产品：《产品需求规格说明书》 |
| 159 | 1.2.1.5.3.2 | 修改后的工作产品的确认 | manual | 0.25d | 2021-06-14 08:00 | 2021-06-14 10:00 | 156 |  |  |  |  |  | start no earlier than 2021-06-14 08:00 | 王乐 | 2h |  | 《产品需求规格说明书评审报告》 |
| 160 | 1.2.1.6 | 更新《需求跟踪矩阵》 |  | 0.25d | 2021-06-14 08:00 | 2021-06-14 10:00 |  |  |  |  | 110.75d |  | start no earlier than 2021-06-14 08:00 | 康旭红 | 2h |  | 《需求跟踪矩阵》《项目变更申请表》《项目变更记录表》 |
| 161 | 1.2.2 | **系统设计** |  | 17.25d | 2021-06-15 08:00 | 2021-07-06 10:00 |  |  |  |  | 3d |  |  |  | 161h |  |  |
| 162 | 1.2.2.1 | 撰写《技术解决方案》 |  | 1.5d | 2021-06-15 08:00 | 2021-06-16 12:00 |  |  |  |  | 108.5d |  | start no earlier than 2021-06-15 08:00 | 黄本华 | 12h |  | 《技术解决方案》 |
| 163 | 1.2.2.2 | 对于多方案进行决策(可选) |  | 0.5d | 2021-06-17 08:00 | 2021-06-17 12:00 |  |  |  |  | 107.5d |  | start no earlier than 2021-06-17 08:00 | 王湾湾; 闻锋; 张航; 黄本华 | 16h |  |  |
| 164 | 1.2.2.3 | **概要设计与数据库设计** |  | 3d | 2021-06-18 08:00 | 2021-06-22 17:00 |  | 2006-06-14 08:00 | 2006-06-14 17:00 | 1d? | 0d |  |  |  | 25h |  |  |
| 165 | 1.2.2.3.1 | 撰写概要设计文档与数据库设计文档 | manual | 2.12d | 2021-06-18 08:00 | 2021-06-21 18:00 |  |  |  |  |  |  | start no earlier than 2021-06-18 08:00 | 黄本华 | 17h |  | 《概要设计说明书》、《数据库设计说明书》 |
| 166 | 1.2.2.3.2 | 购买复用分析 |  | 1d | 2021-06-22 08:00 | 2021-06-22 17:00 | 165 |  |  |  | 103d | 0d | finish no earlier than 2021-06-11 18:00 | 黄本华 | 8h |  | 《概要设计说明书》、《数据库设计说明书》 |
| 167 | 1.2.2.4 | **概要设计数据库设计评审(正式评审)** |  | 3.25d | 2021-06-23 08:00 | 2021-06-28 10:00 | 166 | 2006-06-14 08:00 | 2006-06-14 17:00 | 1d? | 100.75d |  |  |  | 60h |  |  |
| 168 | 1.2.2.4.1 | 准备评审 |  | 0.5d | 2021-06-23 08:00 | 2021-06-23 12:00 |  | 2006-06-14 08:00 | 2006-06-14 17:00 | 1d? | 103d | 0.5d | start no earlier than 2021-06-23 08:00 | 王湾湾; 王高磊; 张航; 黄本华 | 16h | 8 | 《评审准备表》 |
| 169 | 1.2.2.4.2 | 举行评审会议 |  | 0.5d | 2021-06-24 08:00 | 2021-06-24 12:00 | 168 | 2006-06-14 08:00 | 2006-06-14 17:00 | 1d? | 102.5d |  | start no earlier than 2021-06-24 08:00 | 王湾湾; 闻锋; 王高磊; 王英磊; 刘翠; 王乐; 葛利涛; 张航; 崔晓文; 黄本华 | 40h | 8 | 《设计评审会议纪要》 |
| 170 | 1.2.2.4.3 | **修正、跟踪与审核** |  | 1.25d | 2021-06-25 08:00 | 2021-06-28 10:00 |  | 2006-06-14 08:00 | 2006-06-14 17:00 | 1d? | 100.75d |  |  |  | 4h |  |  |
| 171 | 1.2.2.4.3.1 | 修正工作产品 |  | 0.25d | 2021-06-25 08:00 | 2021-06-25 10:00 |  |  |  |  | 101.5d | 0.75d | start no earlier than 2021-06-25 08:00 | 黄本华 | 2h |  | 修正后的工作产品：《概要设计说明书》、《数据库设计说明书》 |
| 172 | 1.2.2.4.3.2 | 修改后的工作产品的确认 |  | 0.25d | 2021-06-28 08:00 | 2021-06-28 10:00 | 171 |  |  |  | 100.75d |  | start no earlier than 2021-06-28 08:00 | 王乐 | 2h |  | 《设计说明书评审报告》 |
| 173 | 1.2.2.5 | **详细设计** |  | 2d | 2021-06-29 08:00 | 2021-06-30 17:00 |  | 2006-06-14 08:00 | 2006-06-14 17:00 | 1d? | 98d |  |  |  | 16h |  | 《详细设计说明书》 |
| 174 | 1.2.2.5.1 | 撰写详细设计说明书 |  | 2d | 2021-06-29 08:00 | 2021-06-30 17:00 |  |  |  |  | 98d |  | start no earlier than 2021-06-29 08:00 | 黄本华 | 16h |  |  |

| ID | WBS | Task | Type | Duration | Start | Finish | Predecessors | Baseline start | Baseline finish | Baseline duration | Total slack | Free slack | Constraint | Resources | Work | Baseline cost | Text1 |
| --- | --- | --- | --- | --- | --- | --- | --- | --- | --- | --- | --- | --- | --- | --- | --- | --- | --- |
| 175 | 1.2.2.6 | **详细设计评审(正式评审)** |  | 5.25d | 2021-07-01 08:00 | 2021-07-06 10:00 |  | 2006-06-14 08:00 | 2006-06-14 17:00 | 1d? | 0d |  |  |  | 32h |  |  |
| 176 | 1.2.2.6.1 | 准备评审 | manual | 0.25d | 2021-07-01 08:00 | 2021-07-01 10:00 |  | 2006-06-14 08:00 | 2006-06-14 17:00 | 1d? |  |  |  | 王湾湾; 王高磊; 张航; 黄本华 | 8h | 8 | 《评审准备表》 |
| 177 | 1.2.2.6.2 | 举行评审会议 | manual | 0.25d | 2021-07-02 08:00 | 2021-07-02 10:00 | 176 | 2006-06-14 08:00 | 2006-06-14 17:00 | 1d? |  |  |  | 王湾湾; 闻锋; 王高磊; 王英磊; 刘翠; 王乐; 葛利涛; 张航; 崔晓文; 黄本华 | 20h | 8 | 《会议纪要》 |
| 178 | 1.2.2.6.3 | **修正、跟踪与审核** |  | 1.25d | 2021-07-05 08:00 | 2021-07-06 10:00 | 177 | 2006-06-14 08:00 | 2006-06-14 17:00 | 1d? | 0d |  |  |  | 4h |  |  |
| 179 | 1.2.2.6.3.1 | 修正工作产品 | manual | 0.25d | 2021-07-05 08:00 | 2021-07-05 10:00 | 177 |  |  |  |  |  |  | 黄本华 | 2h |  | 修正后的工作产品：《详细设计说明书》 |
| 180 | 1.2.2.6.3.2 | 修改后的工作产品的确认 | manual | 0.25d | 2021-07-06 08:00 | 2021-07-06 10:00 |  |  |  |  |  |  | start no earlier than 2021-07-06 08:00 | 王乐 | 2h |  | 《详细设计评审报告》 |
| 181 | 1.2.3 | **编码实现** |  | 59.5d | 2021-07-07 08:00 | 2021-09-24 12:00 |  | 2006-06-14 08:00 | 2006-06-14 17:00 | 1d? | 0d |  |  |  | 1649.72h |  |  |
| 182 | 1.2.3.1 | **编码实现模块功能** |  | 58d | 2021-07-07 08:00 | 2021-09-22 17:00 |  |  |  |  | 0d |  |  |  | 1593.72h |  | 程序源代码 |
| 183 | 1.2.3.1.1 | 编码实现1 | manual | 18.12d | 2021-07-07 08:00 | 2021-07-28 18:00 |  |  |  |  |  |  | start no earlier than 2021-07-07 08:00 | 闻锋; 王高磊; 王英磊 | 435h |  |  |
| 184 | 1.2.3.1.2 | 代码走查1 |  | 1d | 2021-07-29 08:00 | 2021-07-29 17:00 | 183 |  |  |  | 32.88d | 0d |  | 王湾湾; 闻锋; 王高磊; 王英磊 | 32h |  |  |
| 185 | 1.2.3.1.3 | 编码实现2 | manual | 17.12d | 2021-07-30 08:00 | 2021-08-22 18:00 | 184 |  |  |  |  |  | start no earlier than 2021-07-30 08:00 | 闻锋 [120%]; 王高磊 [120%]; 王英磊 [120%] | 493.2h |  |  |
| 186 | 1.2.3.1.4 | 代码走查2 |  | 1d | 2021-08-23 08:00 | 2021-08-23 17:00 | 185 |  |  |  | 34d | 0d |  | 王湾湾; 闻锋; 王高磊; 王英磊 | 32h |  |  |
| 187 | 1.2.3.1.5 | 编码实现3 |  | 21d | 2021-08-24 08:00 | 2021-09-21 18:00 | 186 |  |  |  | 34d | 0d | finish no earlier than 2021-09-21 18:00 | 闻锋 [113%]; 王高磊 [113%]; 王英磊 [113%] | 569.52h |  |  |
| 188 | 1.2.3.1.6 | 代码走查3 |  | 1d | 2021-09-22 08:00 | 2021-09-22 17:00 | 187 |  |  |  | 34d |  | start no earlier than 2021-07-01 08:00 | 王湾湾; 闻锋; 王高磊; 王英磊 | 32h |  |  |
| 189 | 1.2.3.2 | **编写支持文档** |  | 1.5d | 2021-09-23 08:00 | 2021-09-24 12:00 |  |  |  |  | 32.5d |  |  |  | 56h |  |  |
| 190 | 1.2.3.2.1 | 编写《用户操作手册》 |  | 1d | 2021-09-23 08:00 | 2021-09-23 18:00 |  |  |  |  | 32.5d | 0d | finish no earlier than 2021-09-23 18:00 | 闻锋; 王高磊; 王英磊 | 24h |  | 《用户手册》《维护手册》 |
| 191 | 1.2.3.3.2 | 评审支持文档(非正式评审) |  | 0.5d | 2021-09-24 08:00 | 2021-09-24 12:00 | 190 |  |  |  | 32.5d |  |  | 王湾湾; 闻锋; 王高磊; 王英磊; 刘翠; 王乐; 葛利涛; 崔晓文 | 32h |  |  |
| 192 | 1.2.4 | **产品集成** |  | 3d | 2021-09-27 08:00 | 2021-09-29 17:00 |  |  |  |  | 29d |  |  |  | 84h |  |  |
| 193 | 1.2.4.1 | 制定《产品集成计划》 |  | 0.5d | 2021-09-27 08:00 | 2021-09-27 12:00 |  |  |  |  | 31.5d |  | start no earlier than 2021-09-27 08:00 | 王英磊 | 4h |  |  |
| 194 | 1.2.4.2 | 评审《产品集成计划》 |  | 0.5d | 2021-09-27 08:00 | 2021-09-27 12:00 |  |  |  |  | 31.5d |  | start no earlier than 2021-09-27 08:00 | 王湾湾; 闻锋; 王高磊; 王英磊; 刘翠; 王乐; 葛利涛; 崔晓文 | 32h |  |  |
| 195 | 1.2.4.3 | 审查接口的兼容性 |  | 1d | 2021-09-28 08:00 | 2021-09-28 17:00 |  |  |  |  | 29d | 0d | start no earlier than 2021-09-28 08:00 | 闻锋; 王高磊; 王英磊 | 24h |  | 《接口关系表》 |
| 196 | 1.2.4.4 | 组装产品组件 |  | 1d | 2021-09-29 08:00 | 2021-09-29 17:00 | 195 |  |  |  | 29d |  |  | 闻锋; 王高磊; 王英磊 | 24h |  | 《接口关系表》 |
| 197 | 1.2.5 | **系统测试** |  | 10.25d | 2021-09-30 08:00 | 2021-10-14 10:00 |  | 2006-06-14 08:00 | 2006-06-14 17:00 | 1d? | 2d |  |  |  | 78.98h |  |  |
| 198 | 1.2.5.1 | 制定《系统测试计划》 |  | 1d | 2021-09-30 08:00 | 2021-09-30 17:00 |  |  |  |  | 28d |  | start no earlier than 2021-09-30 08:00 | 刘翠 | 8h |  | 《系统测试计划》 |
| 199 | 1.2.5.2 | 编写《系统测试用例》 | manual | 1.12d | 2021-10-04 08:00 | 2021-10-04 18:00 |  |  |  |  |  |  | start no earlier than 2021-10-04 08:00 | 刘翠 | 9h |  | 《系统测试用例》 |

| ID | WBS | Task | Type | Duration | Start | Finish | Predecessors | Remaining | Baseline start | Baseline finish | Baseline duration | Total slack | Free slack | Constraint | Resources | Work | Actual work | Baseline cost | Text1 |
| --- | --- | --- | --- | --- | --- | --- | --- | --- | --- | --- | --- | --- | --- | --- | --- | --- | --- | --- | --- |
| 200 | 1.2.5.3 | **评审《系统测试用例》《系统测试计划》** |  | 2.25d | 2021-10-05 08:00 | 2021-10-07 10:00 | 199 |  |  |  |  | 23.75d |  |  |  | 27.98h |  |  |  |
| 201 | 1.2.5.3.1 | 评审准备 |  | 0.25d | 2021-10-05 08:00 | 2021-10-05 10:00 |  |  | 2006-06-14 08:00 | 2006-06-14 17:00 | 1d? | 25.75d |  | start no earlier than 2021-10-05 08:00 | 王湾湾; 王高磊; 张航 | 6h |  | 8 | 《评审准备表》 |
| 202 | 1.2.5.3.2 | 举行评审会议 |  | 0.25d | 2021-10-06 08:00 | 2021-10-06 10:00 |  |  |  |  |  | 24.5d | 0.75d | start no earlier than 2021-10-06 08:00 | 王湾湾 [87%]; 闻锋 [87%]; 王高磊 [87%]; 王英磊 [145%]; 刘翠 [87%]; 王乐 [87%]; 葛利涛 [87%]; 张航 [87%]; 崔晓文 [145%] | 17.98h |  |  | 《会议记录》 |
| 203 | 1.2.5.3.3 | **修正、跟踪与审核** |  | 0.25d | 2021-10-07 08:00 | 2021-10-07 10:00 | 202 |  | 2006-06-14 08:00 | 2006-06-14 17:00 | 1d? | 23.75d |  |  |  | 4h |  |  |  |
| 204 | 1.2.5.3.3.1 | 修正工作产品 |  | 0.25d | 2021-10-07 08:00 | 2021-10-07 10:00 |  |  |  |  |  | 23.75d |  | start no earlier than 2021-10-07 08:00 | 刘翠 | 2h |  |  | 修正后的工作产品：《系统测试用例》 |
| 205 | 1.2.5.3.3.2 | 修改后的工作产品的确认 |  | 0.25d | 2021-10-07 08:00 | 2021-10-07 10:00 |  |  |  |  |  | 23.75d |  | start no earlier than 2021-10-07 08:00 | 王乐 | 2h |  |  | 《系统测试用例评审报告》 |
| 206 | 1.2.5.4 | **执行系统测试** |  | 4.25d | 2021-10-08 08:00 | 2021-10-14 10:00 |  |  |  |  |  | 18.75d |  |  |  | 34h |  |  |  |
| 207 | 1.2.5.4.1 | 搭建系统测试环境 |  | 0.5d | 2021-10-08 08:00 | 2021-10-08 12:00 |  |  |  |  |  | 22.5d |  | start no earlier than 2021-10-08 08:00 | 刘翠 | 4h |  |  |  |
| 208 | 1.2.5.4.2 | 执行系统测试用例 |  | 1d | 2021-10-11 08:00 | 2021-10-11 18:00 |  |  |  |  |  | 20.75d | 0d | finish no earlier than 2021-10-11 18:00 | 刘翠 [150%] | 12h |  |  |  |
| 209 | 1.2.5.4.3 | 记录并跟踪缺陷 |  | 0.25d | 2021-10-12 08:00 | 2021-10-12 10:00 | 208 |  |  |  |  | 20.75d |  |  | 刘翠 [200%] | 4h |  |  | 《系统测试用例》、《BUG记录单》 |
| 210 | 1.2.5.4.4 | 修改缺陷 |  | 1d | 2021-10-13 08:00 | 2021-10-13 18:00 |  |  |  |  |  | 18.75d | 0d | finish no earlier than 2021-10-13 18:00 | 闻锋 [50%]; 王高磊 [50%]; 王英磊 [50%] | 12h |  |  | 代码 |
| 211 | 1.2.5.4.5 | 撰写《系统测试报告》 |  | 0.25d | 2021-10-14 08:00 | 2021-10-14 10:00 | 210 |  |  |  |  | 18.75d |  |  | 刘翠 | 2h |  |  | 《系统测试报告》 |
| 212 | 1.2.6 | **产品交付** |  | 11d | 2021-10-15 08:00 | 2021-10-29 18:00 |  |  | 2006-06-14 08:00 | 2006-06-14 17:00 | 1d? | 7d |  |  |  | 137h |  |  |  |
| 213 | 1.2.6.1 | 产品打包交付 |  | 1d | 2021-10-15 08:00 | 2021-10-15 17:00 |  |  |  |  |  | 14d | 0d | start no earlier than 2021-10-15 08:00 | 王湾湾 | 8h |  |  | 《产品打包清单》 |
| 214 | 1.2.6.2 | 用户使用培训 |  | 3d | 2021-10-18 08:00 | 2021-10-20 18:00 | 213 |  |  |  |  | 14d |  | finish no earlier than 2021-10-20 18:00 | 王湾湾 | 24h |  |  |  |
| 215 | 1.2.6.3 | **用户验收测试** |  | 5d | 2021-10-25 08:00 | 2021-10-29 18:00 |  |  |  |  |  | 1d |  |  |  | 97h |  |  |  |
| 216 | 1.2.6.3.1 | 编写验收测试计划 |  | 1d | 2021-10-25 08:00 | 2021-10-25 17:00 |  |  |  |  |  | 11d |  | start no earlier than 2021-10-25 08:00 | 刘翠 | 8h |  |  |  |
| 217 | 1.2.6.3.2 | 编写验收测试用例 | manual | 1d | 2021-10-26 08:00 | 2021-10-26 17:00 |  |  |  |  |  |  |  | start no earlier than 2021-10-26 08:00 | 刘翠 | 8h |  |  |  |
| 218 | 1.2.6.3.3 | 评审《验收测试计划》《验收测试用例》 |  | 1d | 2021-10-27 08:00 | 2021-10-27 17:00 | 217 |  |  |  |  | 8d | 0d |  | 王湾湾; 闻锋; 王高磊; 王英磊; 刘翠; 王乐; 葛利涛; 崔晓文 | 64h |  |  |  |
| 219 | 1.2.6.3.4 | 执行验收测试 |  | 1d | 2021-10-28 08:00 | 2021-10-28 17:00 | 218 |  |  |  |  | 8d |  |  | 刘翠 | 8h |  |  |  |
| 220 | 1.2.6.3.5 | 编写验收测试报告 | manual | 1.12d | 2021-10-29 08:00 | 2021-10-29 18:00 |  |  |  |  |  |  |  | start no earlier than 2021-10-29 08:00 | 刘翠 | 9h |  |  |  |
| 221 | 1.2.6.4 | 编写《客户验收报告》,双方签字确认 |  | 1d | 2021-10-29 08:00 | 2021-10-29 18:00 |  |  |  |  |  | 7d |  | finish no earlier than 2021-10-29 18:00 | 刘翠 | 8h |  |  | 《产品交接验收单》、《客户验收报告》 |
| 222 | 1.3 | **支持过程** |  | 133d | 2021-05-10 08:00 A | 2021-11-04 18:00 |  | 132.64d |  |  |  | 3d |  |  |  | 194.84h | 8.96h |  |  |
| 223 | 1.3.1 | **质量保证** |  | 133d | 2021-05-10 08:00 | 2021-11-04 18:00 |  |  |  |  |  | 3d |  |  |  | 79.84h |  |  |  |
| 224 | 1.3.1.1 | **过程和产品检查** |  | 133d | 2021-05-10 08:00 | 2021-11-04 18:00 |  |  | 2016-10-12 08:00 |  | 91d | 3d |  |  |  | 63.84h |  |  |  |
| 225 | 1.3.1.1.1 | 过程和产品检查 |  | 133d | 2021-05-10 08:00 | 2021-11-04 18:00 |  |  |  |  |  | 3d |  | finish no earlier than 2021-11-04 18:00 | 王乐 [2%] | 21.28h |  |  |  |
| 226 | 1.3.1.1.2 | 不符合项目报告编制 |  | 133d | 2021-05-10 08:00 | 2021-11-04 18:00 |  |  |  |  |  | 3d |  | finish no earlier than 2021-11-04 18:00 | 王乐 [2%] | 21.28h |  |  |  |
| 227 | 1.3.1.1.3 | 不一致问题跟踪 |  | 133d | 2021-05-10 08:00 | 2021-11-04 18:00 |  |  |  |  |  | 3d |  | finish no earlier than 2021-11-04 18:00 | 王乐 [2%] | 21.28h |  |  |  |

| ID | WBS | Task | Duration | Start | Finish | Complete | Remaining | Total slack | Constraint | Resources | Work | Actual work |
| --- | --- | --- | --- | --- | --- | --- | --- | --- | --- | --- | --- | --- |
| 228 | 1.3.1.2 | **QA里程碑报告编制** | 89.5d | 2021-07-06 13:00 | 2021-11-04 18:00 |  |  | 3d |  |  | 16h |  |
| 229 | 1.3.1.2.1 | 计划、需求与设计里程碑评审 | 0.5d | 2021-07-06 13:00 | 2021-07-06 18:00 |  |  | 92d | finish no earlier than 2021-07-06 18:00 | 王乐 | 4h |  |
| 230 | 1.3.1.2.2 | 编码与集成里程碑评审 | 0.5d | 2021-09-29 08:00 | 2021-09-29 12:00 |  |  | 29.5d | start no earlier than 2021-09-29 08:00 | 王乐 | 4h |  |
| 231 | 1.3.1.2.3 | 测试、实施与结项里程碑评审 | 1d | 2021-11-04 08:00 | 2021-11-04 18:00 |  |  | 3d | finish no earlier than 2021-11-04 18:00 | 王乐 | 8h |  |
| 232 | 1.3.2 | **配置管理** | 132.12d | 2021-05-10 08:00 A | 2021-11-03 18:00 | 8% | 121.86d |  |  |  | 115h | 8.96h |
| 233 | 1.3.2.1 | 创建配置库、分配人员权限 | 0.25d | 2021-05-10 08:00 A | 2021-05-10 10:00 A | 100% |  |  | finish no earlier than 2020-03-07 18:00 | 葛利涛 | 2h | 2h |
| 234 | 1.3.2.2 | **需求结束后基线** | 0.5d | 2021-06-14 08:00 | 2021-06-14 12:00 |  |  | 110.5d |  |  | 7h |  |
| 235 | 1.3.2.2.1 | 基线创建申请 | 0.12d | 2021-06-14 08:00 | 2021-06-14 09:00 |  |  | 110.88d | start no earlier than 2021-06-14 08:00 | 葛利涛 | 1h |  |
| 236 | 1.3.2.2.2 | 功能和物理审计 | 0.5d | 2021-06-14 08:00 | 2021-06-14 12:00 |  |  | 110.5d | start no earlier than 2021-06-14 08:00 | 葛利涛 | 4h |  |
| 237 | 1.3.2.2.3 | 基线域中创建基线 | 0.12d | 2021-06-14 08:00 | 2021-06-14 09:00 |  |  | 110.88d | start no earlier than 2021-06-14 08:00 | 葛利涛 | 1h |  |
| 238 | 1.3.2.2.4 | 基线发布 | 0.12d | 2021-06-14 08:00 | 2021-06-14 09:00 |  |  | 110.88d | start no earlier than 2021-06-14 08:00 | 葛利涛 | 1h |  |
| 239 | 1.3.2.3 | **设计结束后基线** | 0.5d | 2021-07-07 08:00 | 2021-07-07 12:00 |  |  |  |  |  | 7h |  |
| 240 | 1.3.2.3.1 | 基线创建申请 | 0.12d | 2021-07-06 08:00 | 2021-07-06 09:00 |  |  | 92.88d | start no earlier than 2021-07-06 08:00 | 葛利涛 | 1h |  |
| 241 | 1.3.2.3.2 | 功能和物理审计 | 0.5d | 2021-07-06 08:00 | 2021-07-06 12:00 |  |  | 92.5d | start no earlier than 2021-07-06 08:00 | 葛利涛 | 4h |  |
| 242 | 1.3.2.3.3 | 基线域中创建基线 | 0.12d | 2021-07-06 08:00 | 2021-07-06 09:00 |  |  | 92.88d | start no earlier than 2021-07-06 08:00 | 葛利涛 | 1h |  |
| 243 | 1.3.2.3.4 | 基线发布 | 0.12d | 2021-07-06 08:00 | 2021-07-06 09:00 |  |  | 92.88d | start no earlier than 2021-07-06 08:00 | 葛利涛 | 1h |  |
| 244 | 1.3.2.4 | **编码结束后基线** | 1d | 2021-09-24 08:00 | 2021-09-24 18:00 |  |  | 32d |  |  | 25h |  |
| 245 | 1.3.2.4.1 | 基线创建申请 | 0.12d | 2021-09-24 08:00 | 2021-09-24 09:00 |  |  | 32.88d | start no earlier than 2021-09-24 08:00 | 葛利涛 | 1h |  |
| 246 | 1.3.2.4.2 | 功能和物理审计 | 1d | 2021-09-24 08:00 | 2021-09-24 18:00 |  |  | 32d | finish no earlier than 2021-09-24 18:00 | 葛利涛 | 8h |  |
| 247 | 1.3.2.4.3 | 基线域中创建基线 | 1d | 2021-09-24 08:00 | 2021-09-24 18:00 |  |  | 32d | finish no earlier than 2021-09-24 18:00 | 葛利涛 | 8h |  |
| 248 | 1.3.2.4.4 | 基线发布 | 1d | 2021-09-24 08:00 | 2021-09-24 18:00 |  |  | 32d | finish no earlier than 2021-09-24 18:00 | 葛利涛 | 8h |  |
| 249 | 1.3.2.5 | **系统测试结束后基线** | 1d | 2021-10-14 08:00 A | 2021-10-14 18:00 | 10% | 0.9d | 18d |  |  | 25h | 2.48h |
| 250 | 1.3.2.5.1 | 基线创建申请 | 0.12d | 2021-10-14 08:00 A | 2021-10-14 09:00 | 48% | 0.07d | 18.88d | finish no earlier than 2020-07-20 18:00 | 葛利涛 | 1h | 0.48h |
| 251 | 1.3.2.5.2 | 功能和物理审计 | 1d | 2021-10-14 08:00 | 2021-10-14 18:00 |  |  | 18d | finish no earlier than 2021-10-14 18:00 | 葛利涛 | 8h |  |
| 252 | 1.3.2.5.3 | 基线域中创建基线 | 1d | 2021-10-14 08:00 A | 2021-10-14 17:00 | 13% | 0.88d | 18d | finish no earlier than 2021-10-08 18:00 | 葛利涛 | 8h | 1h |
| 253 | 1.3.2.5.4 | 基线发布 | 1d | 2021-10-14 08:00 A | 2021-10-14 17:00 | 13% | 0.88d | 18d | finish no earlier than 2021-10-08 18:00 | 葛利涛 | 8h | 1h |

| ID | WBS | Task | Duration | Start | Finish | Complete | Remaining | Total slack | Constraint | Resources | Work | Actual work |
| --- | --- | --- | --- | --- | --- | --- | --- | --- | --- | --- | --- | --- |
| 254 | 1.3.2.6 | **产品交付基线** | 1d | 2021-10-29 08:00 A | 2021-10-29 17:00 | 18% | 0.82d | 7d |  |  | 25h | 4.48h |
| 255 | 1.3.2.6.1 | 基线创建申请 | 0.12d | 2021-10-29 08:00 A | 2021-10-29 09:00 | 48% | 0.07d | 7.88d | finish no earlier than 2020-07-27 18:00 | 葛利涛 | 1h | 0.48h |
| 256 | 1.3.2.6.2 | 功能和物理审计 | 1d | 2021-10-29 08:00 A | 2021-10-29 17:00 | 25% | 0.75d | 7d | finish no earlier than 2021-10-22 18:00 | 葛利涛 | 8h | 2h |
| 257 | 1.3.2.6.3 | 基线域中创建基线 | 1d | 2021-10-29 08:00 A | 2021-10-29 17:00 | 13% | 0.88d | 7d | finish no earlier than 2021-10-22 18:00 | 葛利涛 | 8h | 1h |
| 258 | 1.3.2.6.4 | 基线发布 | 1d | 2021-10-29 08:00 A | 2021-10-29 17:00 | 13% | 0.88d | 7d | finish no earlier than 2021-10-22 18:00 | 葛利涛 | 8h | 1h |
| 259 | 1.3.2.7 | **配置库备份和配置项状态跟踪** | 123.26d | 2021-05-14 15:57 | 2021-10-29 09:02 |  |  | 7.87d |  |  | 24h |  |
| 260 | 1.3.2.7.1 | 配置库备份和配置项状态跟踪 1 | 0.13d | 2021-05-14 15:57 | 2021-05-14 18:00 |  |  | 131d | finish no earlier than 2021-05-14 18:00 | 葛利涛 [96.2%] | 1h |  |
| 261 | 1.3.2.7.2 | 配置库备份和配置项状态跟踪 2 | 0.13d | 2021-05-21 15:57 | 2021-05-21 18:00 |  |  | 126d | finish no earlier than 2021-05-21 18:00 | 葛利涛 [96.2%] | 1h |  |
| 262 | 1.3.2.7.3 | 配置库备份和配置项状态跟踪 3 | 0.13d | 2021-05-28 15:57 | 2021-05-28 18:00 |  |  | 121d | finish no earlier than 2021-05-28 18:00 | 葛利涛 [96.2%] | 1h |  |
| 263 | 1.3.2.7.4 | 配置库备份和配置项状态跟踪 4 | 0.12d | 2021-06-04 16:00 | 2021-06-04 18:00 |  |  | 116d | finish no earlier than 2021-06-04 18:00 | 葛利涛 | 1h |  |
| 264 | 1.3.2.7.5 | 配置库备份和配置项状态跟踪 5 | 0.12d | 2021-06-11 16:00 | 2021-06-11 18:00 |  |  | 111d | finish no earlier than 2021-06-11 18:00 | 葛利涛 | 1h |  |
| 265 | 1.3.2.7.6 | 配置库备份和配置项状态跟踪 6 | 0.12d | 2021-06-18 16:00 | 2021-06-18 18:00 |  |  | 106d | finish no earlier than 2021-06-18 18:00 | 葛利涛 | 1h |  |
| 266 | 1.3.2.7.7 | 配置库备份和配置项状态跟踪 7 | 0.12d | 2021-06-25 16:00 | 2021-06-25 18:00 |  |  | 101d | finish no earlier than 2021-06-25 18:00 | 葛利涛 | 1h |  |
| 267 | 1.3.2.7.8 | 配置库备份和配置项状态跟踪 8 | 0.12d | 2021-07-02 16:00 | 2021-07-02 18:00 |  |  | 96d | finish no earlier than 2021-07-02 18:00 | 葛利涛 | 1h |  |
| 268 | 1.3.2.7.9 | 配置库备份和配置项状态跟踪 9 | 0.12d | 2021-07-09 16:00 | 2021-07-09 18:00 |  |  | 89d | finish no earlier than 2021-07-09 18:00 | 葛利涛 | 1h |  |
| 269 | 1.3.2.7.10 | 配置库备份和配置项状态跟踪 10 | 0.12d | 2021-07-16 16:00 | 2021-07-16 18:00 |  |  | 83d | finish no earlier than 2021-07-16 18:00 | 葛利涛 | 1h |  |
| 270 | 1.3.2.7.11 | 配置库备份和配置项状态跟踪 11 | 0.12d | 2021-07-23 16:00 | 2021-07-23 18:00 |  |  | 77d | finish no earlier than 2021-07-23 18:00 | 葛利涛 | 1h |  |
| 271 | 1.3.2.7.12 | 配置库备份和配置项状态跟踪 12 | 0.12d | 2021-07-30 16:00 | 2021-07-30 18:00 |  |  | 72d | finish no earlier than 2021-07-30 18:00 | 葛利涛 | 1h |  |
| 272 | 1.3.2.7.13 | 配置库备份和配置项状态跟踪 13 | 0.12d | 2021-08-06 16:00 | 2021-08-06 18:00 |  |  | 67d | finish no earlier than 2021-08-06 18:00 | 葛利涛 | 1h |  |
| 273 | 1.3.2.7.14 | 配置库备份和配置项状态跟踪 14 | 0.12d | 2021-08-13 16:00 | 2021-08-13 18:00 |  |  | 62d | finish no earlier than 2021-08-13 18:00 | 葛利涛 | 1h |  |
| 274 | 1.3.2.7.15 | 配置库备份和配置项状态跟踪 15 | 0.12d | 2021-08-20 16:00 | 2021-08-20 18:00 |  |  | 57d | finish no earlier than 2021-08-20 18:00 | 葛利涛 | 1h |  |
| 275 | 1.3.2.7.16 | 配置库备份和配置项状态跟踪 16 | 0.12d | 2021-08-27 16:00 | 2021-08-27 18:00 |  |  | 52d | finish no earlier than 2021-08-27 18:00 | 葛利涛 | 1h |  |
| 276 | 1.3.2.7.17 | 配置库备份和配置项状态跟踪 17 | 0.12d | 2021-09-03 16:00 | 2021-09-03 18:00 |  |  | 47d | finish no earlier than 2021-09-03 18:00 | 葛利涛 | 1h |  |
| 277 | 1.3.2.7.18 | 配置库备份和配置项状态跟踪 18 | 0.12d | 2021-09-10 16:00 | 2021-09-10 18:00 |  |  | 42d | finish no earlier than 2021-09-10 18:00 | 葛利涛 | 1h |  |
| 278 | 1.3.2.7.19 | 配置库备份和配置项状态跟踪 19 | 0.12d | 2021-09-17 16:00 | 2021-09-17 18:00 |  |  | 37d | finish no earlier than 2021-09-17 18:00 | 葛利涛 | 1h |  |
| 279 | 1.3.2.7.20 | 配置库备份和配置项状态跟踪 20 | 0.12d | 2021-09-24 16:00 | 2021-09-24 18:00 |  |  | 32d | finish no earlier than 2021-09-24 18:00 | 葛利涛 | 1h |  |
| 280 | 1.3.2.7.21 | 配置库备份和配置项状态跟踪 21 | 0.13d | 2021-10-08 15:57 | 2021-10-08 18:00 |  |  | 22d | finish no earlier than 2021-10-08 18:00 | 葛利涛 [96.2%] | 1h |  |
| 281 | 1.3.2.7.22 | 配置库备份和配置项状态跟踪 22 | 0.13d | 2021-10-15 15:57 | 2021-10-15 18:00 |  |  | 17d | finish no earlier than 2021-10-15 18:00 | 葛利涛 [96.2%] | 1h |  |
| 282 | 1.3.2.7.23 | 配置库备份和配置项状态跟踪 23 | 0.13d | 2021-10-22 15:57 | 2021-10-22 18:00 |  |  | 12d | finish no earlier than 2021-10-22 18:00 | 葛利涛 [96.2%] | 1h |  |
| 283 | 1.3.2.7.24 | 配置库备份和配置项状态跟踪 24 | 0.13d | 2021-10-29 08:00 | 2021-10-29 09:02 |  |  | 7.87d | start no earlier than 2021-10-29 08:00 | 葛利涛 [96.2%] | 1h |  |
