# 项目进度表1

Schedule from MS Project, 2021-10-08 to 2022-05-04, status date 2020-03-01, A marks actual dates.
南瑞继保

## Calendars

- 标准: Mon-Fri 08:00-12:00, 13:00-17:00; Sat-Sun off. Exceptions (off unless hours are given): 2021-10-17 08:00-12:00, 13:00-17:00, 2021-11-06 08:00-12:00, 13:00-17:00, 2022-01-23 08:00-12:00, 13:00-17:00, 2022-02-05 08:00-12:00, 13:00-17:00, 2022-02-13 08:00-12:00, 13:00-17:00.
- 科创日历: Mon-Fri 08:00-12:00, 13:00-17:00; Sat-Sun off.

## Resources

| Resource | Group | Rate |
| --- | --- | --- |
| PM | 管理 | 1 |
| SM |  | 1 |
| QA | 质保 | 1 |
| CM | 配置 | 1 |
| CCB |  | 1 |
| 叶春阳 |  |  |
| 张瑞 |  |  |
| 张凯达 |  |  |
| 宋祥东 |  |  |
| 刘珊珊 |  |  |
| 王晓丽 |  |  |
| 林青晔 |  |  |
| 纪昊天 |  |  |
| 李豪 |  |  |
| 李卫东 |  |  |
| 金浩琰 |  |  |
| 任敬华 |  |  |
| 徐建斌 |  |  |
| 张颖菁 |  |  |
| 王志 |  |  |
| 任敬华 |  |  |
| 殷淑萍 |  |  |
| 王志 |  |  |
| 冯鑫 |  |  |
| 滕荣 |  |  |
| 何恩超 |  |  |
| 彭丽群 |  |  |

## Schedule

| ID | WBS | Task | Duration | Start | Finish | Predecessors | Remaining | Baseline start | Baseline finish | Baseline duration | Total slack | Free slack | Constraint | Resources | Work | Actual work | Baseline cost | Text1 |
| --- | --- | --- | --- | --- | --- | --- | --- | --- | --- | --- | --- | --- | --- | --- | --- | --- | --- | --- |
| 1 | 1 | **投资管理系统项目** | 154.12d? | 2021-10-08 08:00 A | 2022-05-04 18:00 |  | 153.93d? |  |  |  |  |  |  |  | 4206.58h | 7.96h |  |  |
| 2 | 1.1 | **项目管理** | 154.12d? | 2021-10-08 08:00 | 2022-05-04 18:00 |  |  |  |  |  |  |  |  |  | 952.68h |  |  |  |
| 3 | 1.1.1 | **项目启动** | 0.25d | 2021-10-08 08:00 | 2021-10-08 10:00 |  |  |  |  |  | 153.5d |  |  |  | 20h |  |  |  |
| 4 | 1.1.1.1 | 项目启动会议 | 0.25d | 2021-10-08 08:00 | 2021-10-08 10:00 |  |  | 2006-06-14 08:00 | 2006-06-14 17:00 | 1d? | 153.5d | 0d | start no earlier than 2021-10-01 08:00 | 任敬华; 徐建斌; 张颖菁; 王志; 殷淑萍; 冯鑫; 滕荣; 何恩超 | 20h |  | 8 | 《项目启动会议纪要》 |
| 5 | 1.1.2 | **项目计划** | 17.12d | 2021-10-08 08:00 | 2021-10-29 18:00 |  |  |  |  |  |  |  |  |  | 258h |  |  |  |
| 6 | 1.1.2.1 | **初步计划** | 16.75d | 2021-10-08 10:00 | 2021-10-29 18:00 |  |  |  |  |  | 133.75d |  |  |  | 94h |  |  |  |
| 7 | 1.1.2.1.1 | 初步裁剪 | 0.25d | 2021-10-08 10:00 | 2021-10-08 12:00 | 4 |  | 2006-06-14 08:00 | 2006-06-14 17:00 | 1d? | 153.5d |  | start no earlier than 2020-11-14 08:00 | 任敬华 | 2h |  |  | 《项目已定义过程》 |
| 8 | 1.1.2.1.2 | 初步估算（规模和工作量） | 5d | 2021-10-11 08:00 | 2021-10-15 18:00 |  |  |  |  |  | 146d | 0d | finish no earlier than 2021-10-15 18:00 | 任敬华 | 40h |  |  | 《项目估算表》 |
| 9 | 1.1.2.1.3 | **制定项目初步计划及下属子计划** | 11d | 2021-10-17 08:00 | 2021-10-29 18:00 |  |  | 2006-06-14 08:00 | 2006-06-14 17:00 | 1d? | 128d |  |  |  | 52h |  |  |  |
| 10 | 1.1.2.1.3.1 | 制定初步的《项目计划》 | 2d | 2021-10-17 08:00 | 2021-10-18 18:00 | 8 |  |  |  |  | 146d |  | finish no earlier than 2021-10-18 18:00 | 任敬华 | 16h |  |  | 《项目计划》初稿 |
| 11 | 1.1.2.1.3.2 | 制定初步的《质量保证计划》 | 2d | 2021-10-19 08:00 | 2021-10-20 18:00 |  |  | 2006-06-14 08:00 | 2006-06-14 17:00 | 1d? | 142d | 0d | finish no earlier than 2021-10-20 18:00 | 张颖菁 [50%] | 8h |  |  | 《质量保证计划》初稿 |
| 12 | 1.1.2.1.3.3 | 制定初步的《配置管理计划》 | 2d | 2021-10-21 08:00 | 2021-10-22 18:00 | 11 |  | 2006-06-14 08:00 | 2006-06-14 17:00 | 1d? | 142d |  | finish no earlier than 2021-10-22 18:00 | 徐建斌 [50%] | 8h |  |  | 《配置管理计划》初稿 |
| 13 | 1.1.2.1.3.4 | 制定初步的《项目进度表》 | 2d | 2021-10-25 08:00 | 2021-10-26 18:00 |  |  |  |  |  | 122d | 0d | finish no earlier than 2021-10-26 18:00 | 任敬华 [50%] | 8h |  |  | 《项目进度表》初稿 |
| 14 | 1.1.2.1.3.5 | 初步项目计划及下属子计划审批 | 3d | 2021-10-27 08:00 | 2021-10-29 18:00 | 13 |  |  |  |  | 122d | 0d | finish no earlier than 2021-10-29 18:00 | 任敬华 [50%] | 12h |  |  |  |
| 15 | 1.1.2.2 | **详细计划** | 20d | 2021-11-01 08:00 | 2021-11-25 18:00 |  |  | 2006-06-14 08:00 | 2006-06-14 17:00 | 1d? | 117d |  |  |  | 164h |  |  |  |
| 16 | 1.1.2.2.1 | 详细裁剪 | 2d | 2021-11-01 08:00 | 2021-11-02 18:00 | 14 |  |  |  |  | 122d | 0d | finish no earlier than 2021-11-02 18:00 | 任敬华 | 16h |  |  |  |
| 17 | 1.1.2.2.2 | 详细估算（规模和工作量） | 6d | 2021-11-03 08:00 | 2021-11-09 17:00 | 16 |  | 2006-06-14 08:00 | 2006-06-14 17:00 | 1d? | 122d | 0d | start no earlier than 2021-11-03 08:00 | 任敬华 | 48h |  |  | 《项目功能点复杂度估算》、《项目计划》中的“项目估算”内容、《项目估算表单(PERT)》 |
| 18 | 1.1.2.2.3 | **制定详细的《项目计划》及下属子计划** | 3.25d | 2021-11-10 08:00 | 2021-11-15 10:00 |  |  | 2006-06-14 08:00 | 2006-06-14 17:00 | 1d? | 119.75d |  |  |  | 8h |  |  |  |
| 19 | 1.1.2.2.3.1 | 更新《项目计划》 | 0.25d | 2021-11-10 08:00 | 2021-11-10 10:00 | 17 |  |  |  |  | 122d | 0.75d | start no earlier than 2021-04-02 08:00 | 任敬华 | 2h |  |  | 《项目计划》终稿 |
| 20 | 1.1.2.2.3.2 | 更新《配置管理计划》 | 0.25d | 2021-11-11 08:00 | 2021-11-11 10:00 | 19 |  | 2006-06-14 08:00 | 2006-06-14 17:00 | 1d? | 121.25d | 0.75d | start no earlier than 2021-11-11 08:00 | 徐建斌 | 2h |  |  | 《配置管理计划》终稿 |
| 21 | 1.1.2.2.3.3 | 更新《质量保证计划》 | 0.25d | 2021-11-12 08:00 | 2021-11-12 10:00 | 20 |  | 2006-06-14 08:00 | 2006-06-14 17:00 | 1d? | 120.5d | 0.75d | start no earlier than 2021-11-12 08:00 | 张颖菁 | 2h |  |  | 《质量保证计划》终稿 |
| 22 | 1.1.2.2.3.4 | 更新《项目进度表》 | 0.25d | 2021-11-15 08:00 | 2021-11-15 10:00 | 21 |  | 2006-06-14 08:00 | 2006-06-14 17:00 | 1d? | 119.75d | 2.25d | start no earlier than 2021-11-15 08:00 | 任敬华 | 2h |  |  | 《项目进度表》终稿 |
| 23 | 1.1.2.2.4 | **《项目计划》及下属子计划评审(管理评审)** | 6.5d | 2021-11-17 13:00 | 2021-11-25 18:00 |  |  |  |  |  | 117d |  |  |  | 92h |  |  |  |
| 24 | 1.1.2.2.4.1 | 准备评审 | 0.5d | 2021-11-17 13:00 | 2021-11-17 18:00 | 22 |  | 2006-06-14 08:00 | 2006-06-14 17:00 | 1d? | 117.5d | 0d | finish no earlier than 2021-11-17 18:00 | 任敬华; 王志; 冯鑫 | 12h |  | 8 | 《项目计划评审准备表》 |
| 25 | 1.1.2.2.4.2 | 举行评审会议 | 0.5d | 2021-11-18 08:00 | 2021-11-18 12:00 | 24 |  | 2006-06-14 08:00 | 2006-06-14 17:00 | 1d? | 117.5d | 0.5d | start no earlier than 2021-04-04 08:00 | 任敬华; 徐建斌; 张颖菁; 王志; 殷淑萍; 冯鑫; 滕荣; 何恩超 | 40h |  | 8 | 《项目计划评审报告》《项目计划评审会议纪要》 |

| ID | WBS | Task | Duration | Start | Finish | Predecessors | Baseline start | Baseline finish | Baseline duration | Total slack | Free slack | Constraint | Resources | Work | Text1 |
| --- | --- | --- | --- | --- | --- | --- | --- | --- | --- | --- | --- | --- | --- | --- | --- |
| 26 | 1.1.2.2.4.3 | **修正、跟踪与审核** | 5d | 2021-11-19 08:00 | 2021-11-25 18:00 |  | 2006-06-14 08:00 | 2006-06-14 17:00 | 1d? | 117d |  |  |  | 40h |  |
| 27 | 1.1.2.2.4.3.1 | 修正工作产品 | 3d | 2021-11-19 08:00 | 2021-11-23 18:00 | 25 |  |  |  | 117d | 0d | finish no earlier than 2021-11-23 18:00 | 任敬华 | 24h | 修正后的工作产品：《项目计划》及下属子计划 |
| 28 | 1.1.2.2.4.3.2 | 修改后的工作产品的确认 | 2d | 2021-11-24 08:00 | 2021-11-25 18:00 | 27 |  |  |  | 117d |  | finish no earlier than 2021-11-25 18:00 | 张颖菁 | 16h | 《项目变更记录》 |
| 29 | 1.1.3 | **执行与控制** | 152.39d | 2021-10-11 08:00 | 2022-05-04 11:07 |  |  |  |  | 0.61d |  |  |  | 565.68h |  |
| 30 | 1.1.3.1 | **项目周报** | 150.12d | 2021-10-11 08:00 | 2022-05-02 09:00 |  |  |  |  | 2.88d |  |  |  | 29h |  |
| 31 | 1.1.3.1.1 | 项目周报 1 | 0.12d | 2021-10-11 08:00 | 2021-10-11 09:00 |  |  |  |  | 89.25d | 5.88d | start no earlier than 2021-10-11 08:00 | 任敬华 | 1h |  |
| 32 | 1.1.3.1.2 | 项目周报 2 | 0.12d | 2021-10-18 08:00 | 2021-10-18 09:00 | 31 |  |  |  | 83.38d | 4.88d | start no earlier than 2021-10-18 08:00 | 任敬华 | 1h |  |
| 33 | 1.1.3.1.3 | 项目周报 3 | 0.12d | 2021-10-25 08:00 | 2021-10-25 09:00 | 32 |  |  |  | 78.5d | 4.88d | start no earlier than 2021-10-25 08:00 | 任敬华 | 1h |  |
| 34 | 1.1.3.1.4 | 项目周报 4 | 0.12d | 2021-11-01 08:00 | 2021-11-01 09:00 | 33 |  |  |  | 73.62d | 4.88d | start no earlier than 2021-11-01 08:00 | 任敬华 | 1h |  |
| 35 | 1.1.3.1.5 | 项目周报 5 | 0.12d | 2021-11-08 08:00 | 2021-11-08 09:00 | 34 |  |  |  | 68.75d | 4.88d | start no earlier than 2021-11-08 08:00 | 任敬华 | 1h |  |
| 36 | 1.1.3.1.6 | 项目周报 6 | 0.12d | 2021-11-15 08:00 | 2021-11-15 09:00 | 35 |  |  |  | 63.88d | 4.88d | start no earlier than 2021-11-15 08:00 | 任敬华 | 1h |  |
| 37 | 1.1.3.1.7 | 项目周报 7 | 0.12d | 2021-11-22 08:00 | 2021-11-22 09:00 | 36 |  |  |  | 59d | 4.88d | start no earlier than 2021-11-22 08:00 | 任敬华 | 1h |  |
| 38 | 1.1.3.1.8 | 项目周报 8 | 0.12d | 2021-11-29 08:00 | 2021-11-29 09:00 | 37 |  |  |  | 54.12d | 4.88d | start no earlier than 2021-11-29 08:00 | 任敬华 | 1h |  |
| 39 | 1.1.3.1.9 | 项目周报 9 | 0.12d | 2021-12-06 08:00 | 2021-12-06 09:00 | 38 |  |  |  | 49.25d | 4.88d | start no earlier than 2021-12-06 08:00 | 任敬华 | 1h |  |
| 40 | 1.1.3.1.10 | 项目周报 10 | 0.12d | 2021-12-13 08:00 | 2021-12-13 09:00 | 39 |  |  |  | 44.38d | 4.88d | start no earlier than 2021-12-13 08:00 | 任敬华 | 1h |  |
| 41 | 1.1.3.1.11 | 项目周报 11 | 0.12d | 2021-12-20 08:00 | 2021-12-20 09:00 | 40 |  |  |  | 39.5d | 4.88d | start no earlier than 2021-12-20 08:00 | 任敬华 | 1h |  |
| 42 | 1.1.3.1.12 | 项目周报 12 | 0.12d | 2021-12-27 08:00 | 2021-12-27 09:00 | 41 |  |  |  | 34.62d | 4.88d | start no earlier than 2021-12-27 08:00 | 任敬华 | 1h |  |
| 43 | 1.1.3.1.13 | 项目周报 13 | 0.12d | 2022-01-03 08:00 | 2022-01-03 09:00 | 42 |  |  |  | 29.75d | 4.88d | start no earlier than 2022-01-03 08:00 | 任敬华 | 1h |  |
| 44 | 1.1.3.1.14 | 项目周报 14 | 0.12d | 2022-01-10 08:00 | 2022-01-10 09:00 | 43 |  |  |  | 30.88d |  | start no earlier than 2022-01-10 08:00 | 任敬华 | 1h |  |
| 45 | 1.1.3.1.15 | 项目周报 15 | 0.12d | 2022-01-17 08:00 | 2022-01-17 09:00 |  |  |  |  | 24.5d | 5.88d | start no earlier than 2022-01-17 08:00 | 任敬华 | 1h |  |
| 46 | 1.1.3.1.16 | 项目周报 16 | 0.12d | 2022-01-24 08:00 | 2022-01-24 09:00 | 45 |  |  |  | 18.62d | 4.88d | start no earlier than 2022-01-24 08:00 | 任敬华 | 1h |  |
| 47 | 1.1.3.1.17 | 项目周报 17 | 0.12d | 2022-01-31 08:00 | 2022-01-31 09:00 | 46 |  |  |  | 13.75d | 7.88d | start no earlier than 2022-01-31 08:00 | 任敬华 | 1h |  |
| 48 | 1.1.3.1.18 | 项目周报 18 | 0.12d | 2022-02-10 08:00 | 2022-02-10 09:00 | 47 |  |  |  | 5.88d |  | start no earlier than 2022-02-10 08:00 | 任敬华 | 1h |  |
| 49 | 1.1.3.1.19 | 项目周报 19 | 0.12d | 2022-02-21 08:00 | 2022-02-21 09:00 |  |  |  |  | 52.88d |  | start no earlier than 2022-02-21 08:00 | 任敬华 | 1h |  |
| 50 | 1.1.3.1.20 | 项目周报 20 | 0.12d | 2022-02-28 08:00 | 2022-02-28 09:00 |  |  |  |  | 47.88d |  | start no earlier than 2022-02-28 08:00 | 任敬华 | 1h |  |
| 51 | 1.1.3.1.21 | 项目周报 21 | 0.12d | 2022-03-07 08:00 | 2022-03-07 09:00 |  |  |  |  | 42.88d |  | start no earlier than 2022-03-07 08:00 | 任敬华 | 1h |  |
| 52 | 1.1.3.1.22 | 项目周报 22 | 0.12d | 2022-03-14 08:00 | 2022-03-14 09:00 |  |  |  |  | 37.88d |  | start no earlier than 2022-03-14 08:00 | 任敬华 | 1h |  |
| 53 | 1.1.3.1.23 | 项目周报 23 | 0.12d | 2022-03-21 08:00 | 2022-03-21 09:00 |  |  |  |  | 32.88d |  | start no earlier than 2022-03-21 08:00 | 任敬华 | 1h |  |
| 54 | 1.1.3.1.24 | 项目周报 24 | 0.12d | 2022-03-28 08:00 | 2022-03-28 09:00 |  |  |  |  | 27.88d |  | start no earlier than 2022-03-28 08:00 | 任敬华 | 1h |  |
| 55 | 1.1.3.1.25 | 项目周报 25 | 0.12d | 2022-04-04 08:00 | 2022-04-04 09:00 |  |  |  |  | 22.88d |  | start no earlier than 2022-04-04 08:00 | 任敬华 | 1h |  |
| 56 | 1.1.3.1.26 | 项目周报 26 | 0.12d | 2022-04-11 08:00 | 2022-04-11 09:00 |  |  |  |  | 17.88d |  | start no earlier than 2022-04-11 08:00 | 任敬华 | 1h |  |
| 57 | 1.1.3.1.27 | 项目周报 27 | 0.12d | 2022-04-18 08:00 | 2022-04-18 09:00 |  |  |  |  | 12.88d |  | start no earlier than 2022-04-18 08:00 | 任敬华 | 1h |  |
| 58 | 1.1.3.1.28 | 项目周报 28 | 0.12d | 2022-04-25 08:00 | 2022-04-25 09:00 |  |  |  |  | 7.88d |  | start no earlier than 2022-04-25 08:00 | 任敬华 | 1h |  |
| 59 | 1.1.3.1.29 | 项目周报 29 | 0.12d | 2022-05-02 08:00 | 2022-05-02 09:00 |  |  |  |  | 2.88d |  | start no earlier than 2022-05-02 08:00 | 任敬华 | 1h |  |

| ID | WBS | Task | Duration | Start | Finish | Predecessors | Total slack | Free slack | Constraint | Resources | Work |
| --- | --- | --- | --- | --- | --- | --- | --- | --- | --- | --- | --- |
| 60 | 1.1.3.2 | **项目周例会** | 150.2d | 2021-10-11 15:24 | 2022-05-02 18:00 |  | 2d |  |  |  | 464h |
| 61 | 1.1.3.2.1 | 项目周例会 1 | 0.2d | 2021-10-11 15:24 | 2021-10-11 18:00 |  | 148.6d | 5.8d | finish no earlier than 2021-10-11 18:00 | 任敬华; 徐建斌; 张颖菁; 王志; 殷淑萍; 冯鑫; 滕荣; 何恩超 | 16h |
| 62 | 1.1.3.2.2 | 项目周例会 2 | 0.2d | 2021-10-18 15:24 | 2021-10-18 18:00 | 61 | 142.8d | 4.8d | finish no earlier than 2021-10-18 18:00 | 任敬华; 徐建斌; 张颖菁; 王志; 殷淑萍; 冯鑫; 滕荣; 何恩超 | 16h |
| 63 | 1.1.3.2.3 | 项目周例会 3 | 0.2d | 2021-10-25 15:24 | 2021-10-25 18:00 | 62 | 138d | 4.8d | finish no earlier than 2021-10-25 18:00 | 任敬华; 徐建斌; 张颖菁; 王志; 殷淑萍; 冯鑫; 滕荣; 何恩超 | 16h |
| 64 | 1.1.3.2.4 | 项目周例会 4 | 0.2d | 2021-11-01 15:24 | 2021-11-01 18:00 | 63 | 133.2d | 5.8d | finish no earlier than 2021-11-01 18:00 | 任敬华; 徐建斌; 张颖菁; 王志; 殷淑萍; 冯鑫; 滕荣; 何恩超 | 16h |
| 65 | 1.1.3.2.5 | 项目周例会 5 | 0.2d | 2021-11-08 15:24 | 2021-11-08 18:00 | 64 | 127.4d | 4.8d | finish no earlier than 2021-11-08 18:00 | 任敬华; 徐建斌; 张颖菁; 王志; 殷淑萍; 冯鑫; 滕荣; 何恩超 | 16h |
| 66 | 1.1.3.2.6 | 项目周例会 6 | 0.2d | 2021-11-15 15:24 | 2021-11-15 18:00 | 65 | 122.6d | 4.8d | finish no earlier than 2021-11-15 18:00 | 任敬华; 徐建斌; 张颖菁; 王志; 殷淑萍; 冯鑫; 滕荣; 何恩超 | 16h |
| 67 | 1.1.3.2.7 | 项目周例会 7 | 0.2d | 2021-11-22 15:24 | 2021-11-22 18:00 | 66 | 117.8d | 4.8d | finish no earlier than 2021-11-22 18:00 | 任敬华; 徐建斌; 张颖菁; 王志; 殷淑萍; 冯鑫; 滕荣; 何恩超 | 16h |
| 68 | 1.1.3.2.8 | 项目周例会 8 | 0.2d | 2021-11-29 15:24 | 2021-11-29 18:00 | 67 | 113d | 4.8d | finish no earlier than 2021-11-29 18:00 | 任敬华; 徐建斌; 张颖菁; 王志; 殷淑萍; 冯鑫; 滕荣; 何恩超 | 16h |
| 69 | 1.1.3.2.9 | 项目周例会 9 | 0.2d | 2021-12-06 15:24 | 2021-12-06 18:00 | 68 | 108.2d | 4.8d | finish no earlier than 2021-12-06 18:00 | 任敬华; 徐建斌; 张颖菁; 王志; 殷淑萍; 冯鑫; 滕荣; 何恩超 | 16h |
| 70 | 1.1.3.2.10 | 项目周例会 10 | 0.2d | 2021-12-13 15:24 | 2021-12-13 18:00 | 69 | 103.4d | 4.8d | finish no earlier than 2021-12-13 18:00 | 任敬华; 徐建斌; 张颖菁; 王志; 殷淑萍; 冯鑫; 滕荣; 何恩超 | 16h |
| 71 | 1.1.3.2.11 | 项目周例会 11 | 0.2d | 2021-12-20 15:24 | 2021-12-20 18:00 | 70 | 98.6d | 4.8d | finish no earlier than 2021-12-20 18:00 | 任敬华; 徐建斌; 张颖菁; 王志; 殷淑萍; 冯鑫; 滕荣; 何恩超 | 16h |
| 72 | 1.1.3.2.12 | 项目周例会 12 | 0.2d | 2021-12-27 15:24 | 2021-12-27 18:00 | 71 | 93.8d | 4.8d | finish no earlier than 2021-12-27 18:00 | 任敬华; 徐建斌; 张颖菁; 王志; 殷淑萍; 冯鑫; 滕荣; 何恩超 | 16h |
| 73 | 1.1.3.2.13 | 项目周例会 13 | 0.2d | 2022-01-03 15:24 | 2022-01-03 18:00 | 72 | 89d | 9.8d | finish no earlier than 2022-01-03 18:00 | 任敬华; 徐建斌; 张颖菁; 王志; 殷淑萍; 冯鑫; 滕荣; 何恩超 | 16h |
| 74 | 1.1.3.2.14 | 项目周例会 14 | 0.2d | 2022-01-17 15:24 | 2022-01-17 18:00 | 73 | 79.2d | 0d | finish no earlier than 2022-01-17 18:00 | 任敬华; 徐建斌; 张颖菁; 王志; 殷淑萍; 冯鑫; 滕荣; 何恩超 | 16h |
| 75 | 1.1.3.2.15 | 项目周例会 15 | 0.2d | 2022-01-18 08:00 | 2022-01-18 09:36 | 74 | 79.2d | 5.6d | finish no earlier than 2022-01-17 18:00 | 任敬华; 徐建斌; 张颖菁; 王志; 殷淑萍; 冯鑫; 滕荣; 何恩超 | 16h |
| 76 | 1.1.3.2.16 | 项目周例会 16 | 0.2d | 2022-01-24 15:24 | 2022-01-24 18:00 | 75 | 73.6d | 4.8d | finish no earlier than 2022-01-24 18:00 | 任敬华; 徐建斌; 张颖菁; 王志; 殷淑萍; 冯鑫; 滕荣; 何恩超 | 16h |
| 77 | 1.1.3.2.17 | 项目周例会 17 | 0.2d | 2022-01-31 15:24 | 2022-01-31 18:00 | 76 | 68.8d | 8.8d | finish no earlier than 2022-01-31 18:00 | 任敬华; 徐建斌; 张颖菁; 王志; 殷淑萍; 冯鑫; 滕荣; 何恩超 | 16h |
| 78 | 1.1.3.2.18 | 项目周例会 18 | 0.2d | 2022-02-10 15:24 | 2022-02-10 18:00 | 77 | 60d |  | finish no earlier than 2022-02-10 18:00 | 任敬华; 徐建斌; 张颖菁; 王志; 殷淑萍; 冯鑫; 滕荣; 何恩超 | 16h |
| 79 | 1.1.3.2.19 | 项目周例会 19 | 0.2d | 2022-02-21 15:24 | 2022-02-21 18:00 |  | 52d |  | finish no earlier than 2022-02-21 18:00 | 任敬华; 徐建斌; 张颖菁; 王志; 殷淑萍; 冯鑫; 滕荣; 何恩超 | 16h |
| 80 | 1.1.3.2.20 | 项目周例会 20 | 0.2d | 2022-02-28 15:24 | 2022-02-28 18:00 |  | 47d |  | finish no earlier than 2022-02-28 18:00 | 任敬华; 徐建斌; 张颖菁; 王志; 殷淑萍; 冯鑫; 滕荣; 何恩超 | 16h |
| 81 | 1.1.3.2.21 | 项目周例会 21 | 0.2d | 2022-03-07 15:24 | 2022-03-07 18:00 |  | 42d |  | finish no earlier than 2022-03-07 18:00 | 任敬华; 徐建斌; 张颖菁; 王志; 殷淑萍; 冯鑫; 滕荣; 何恩超 | 16h |
| 82 | 1.1.3.2.22 | 项目周例会 22 | 0.2d | 2022-03-14 15:24 | 2022-03-14 18:00 |  | 37d |  | finish no earlier than 2022-03-14 18:00 | 任敬华; 徐建斌; 张颖菁; 王志; 殷淑萍; 冯鑫; 滕荣; 何恩超 | 16h |
| 83 | 1.1.3.2.23 | 项目周例会 23 | 0.2d | 2022-03-21 15:24 | 2022-03-21 18:00 |  | 32d |  | finish no earlier than 2022-03-21 18:00 | 任敬华; 徐建斌; 张颖菁; 王志; 殷淑萍; 冯鑫; 滕荣; 何恩超 | 16h |
| 84 | 1.1.3.2.24 | 项目周例会 24 | 0.2d | 2022-03-28 15:24 | 2022-03-28 18:00 |  | 27d |  | finish no earlier than 2022-03-28 18:00 | 任敬华; 徐建斌; 张颖菁; 王志; 殷淑萍; 冯鑫; 滕荣; 何恩超 | 16h |
| 85 | 1.1.3.2.25 | 项目周例会 25 | 0.2d | 2022-04-04 15:24 | 2022-04-04 18:00 |  | 22d |  | finish no earlier than 2022-04-04 18:00 | 任敬华; 徐建斌; 张颖菁; 王志; 殷淑萍; 冯鑫; 滕荣; 何恩超 | 16h |
| 86 | 1.1.3.2.26 | 项目周例会 26 | 0.2d | 2022-04-11 15:24 | 2022-04-11 18:00 |  | 17d |  | finish no earlier than 2022-04-11 18:00 | 任敬华; 徐建斌; 张颖菁; 王志; 殷淑萍; 冯鑫; 滕荣; 何恩超 | 16h |
| 87 | 1.1.3.2.27 | 项目周例会 27 | 0.2d | 2022-04-18 15:24 | 2022-04-18 18:00 |  | 12d |  | finish no earlier than 2022-04-18 18:00 | 任敬华; 徐建斌; 张颖菁; 王志; 殷淑萍; 冯鑫; 滕荣; 何恩超 | 16h |
| 88 | 1.1.3.2.28 | 项目周例会 28 | 0.2d | 2022-04-25 15:24 | 2022-04-25 18:00 |  | 7d |  | finish no earlier than 2022-04-25 18:00 | 任敬华; 徐建斌; 张颖菁; 王志; 殷淑萍; 冯鑫; 滕荣; 何恩超 | 16h |
| 89 | 1.1.3.2.29 | 项目周例会 29 | 0.2d | 2022-05-02 15:24 | 2022-05-02 18:00 |  | 2d |  | finish no earlier than 2022-05-02 18:00 | 任敬华; 徐建斌; 张颖菁; 王志; 殷淑萍; 冯鑫; 滕荣; 何恩超 | 16h |

| ID | WBS | Task | Type | Duration | Start | Finish | Predecessors | Baseline start | Baseline finish | Baseline duration | Total slack | Free slack | Constraint | Calendar | Resources | Work | Text1 |
| --- | --- | --- | --- | --- | --- | --- | --- | --- | --- | --- | --- | --- | --- | --- | --- | --- | --- |
| 90 | 1.1.3.3 | **里程碑评审(管理评审)** |  | 97.39d | 2021-12-23 08:00 | 2022-05-04 11:07 |  | 2006-06-14 08:00 | 2006-06-14 17:00 | 1d? | 0.61d |  |  |  |  | 36.96h |  |
| 91 | 1.1.3.3.1 | **计划、需求与设计里程碑评审** |  | 0.12d | 2021-12-23 08:00 | 2021-12-23 09:00 |  |  |  |  | 97.88d |  |  |  |  | 12h |  |
| 92 | 1.1.3.3.1.1 | 评审准备 |  | 0.12d | 2021-12-23 08:00 | 2021-12-23 09:00 |  | 2006-06-14 08:00 | 2006-06-14 17:00 | 1d? | 97.88d |  | start no earlier than 2021-12-23 08:00 |  | 张颖菁 | 1h |  |
| 93 | 1.1.3.3.1.2 | 执行评审 |  | 0.12d | 2021-12-23 08:00 | 2021-12-23 09:00 |  | 2006-06-14 08:00 | 2006-06-14 17:00 | 1d? | 97.88d |  | start no earlier than 2021-12-23 08:00 |  | 任敬华; 徐建斌; 张颖菁; 王志; 殷淑萍; 冯鑫; 何恩超; 彭丽群 | 10h |  |
| 94 | 1.1.3.3.1.3 | 后续工作 |  | 0.12d | 2021-12-23 08:00 | 2021-12-23 09:00 |  | 2006-06-14 08:00 | 2006-06-14 17:00 | 1d? | 97.88d |  | start no earlier than 2021-12-23 08:00 |  | 张颖菁 | 1h |  |
| 95 | 1.1.3.3.2 | **编码与集成里程碑评审** |  | 0.39d | 2022-02-23 08:00 | 2022-02-23 11:07 |  |  |  |  | 50.61d |  |  |  |  | 12.48h |  |
| 96 | 1.1.3.3.2.1 | 评审准备 |  | 0.13d | 2022-02-23 08:00 | 2022-02-23 09:02 |  | 2006-06-14 08:00 | 2006-06-14 17:00 | 1d? | 50.61d | 0d | start no earlier than 2022-02-23 08:00 |  | 张颖菁 | 1.04h |  |
| 97 | 1.1.3.3.2.2 | 执行评审 |  | 0.13d | 2022-02-23 09:02 | 2022-02-23 10:04 | 96 | 2006-06-14 08:00 | 2006-06-14 17:00 | 1d? | 50.61d | 0d | finish no earlier than 2020-06-29 18:00 |  | 任敬华; 徐建斌; 张颖菁; 王志; 殷淑萍; 冯鑫; 何恩超; 彭丽群 | 10.4h |  |
| 98 | 1.1.3.3.2.3 | 后续工作 |  | 0.13d | 2022-02-23 10:04 | 2022-02-23 11:07 | 97 | 2006-06-14 08:00 | 2006-06-14 17:00 | 1d? | 50.61d |  | start no earlier than 2021-07-08 08:00 |  | 张颖菁 | 1.04h |  |
| 99 | 1.1.3.3.3 | **测试、实施与结项里程碑评审** |  | 0.39d | 2022-05-04 08:00 | 2022-05-04 11:07 |  |  |  |  | 0.61d |  |  |  |  | 12.48h |  |
| 100 | 1.1.3.3.3.1 | 评审准备 |  | 0.13d | 2022-05-04 08:00 | 2022-05-04 09:02 |  | 2006-06-14 08:00 | 2006-06-14 17:00 | 1d? | 0.61d | 0d | start no earlier than 2022-05-04 08:00 |  | 张颖菁 | 1.04h |  |
| 101 | 1.1.3.3.3.2 | 执行评审 |  | 0.13d | 2022-05-04 09:02 | 2022-05-04 10:04 | 100 | 2006-06-14 08:00 | 2006-06-14 17:00 | 1d? | 0.61d | 0d | start no earlier than 2021-07-30 08:00 |  | 任敬华; 徐建斌; 张颖菁; 王志; 殷淑萍; 冯鑫; 何恩超; 彭丽群 | 10.4h |  |
| 102 | 1.1.3.3.3.3 | 后续工作 |  | 0.13d | 2022-05-04 10:04 | 2022-05-04 11:07 | 101 | 2006-06-14 08:00 | 2006-06-14 17:00 | 1d? | 0.61d |  | start no earlier than 2020-09-09 08:00 |  | 张颖菁 | 1.04h |  |
| 103 | 1.1.3.4 | **度量信息维护更新** |  | 114.14d | 2021-11-25 08:00 | 2022-05-04 09:07 |  |  |  |  | 0.86d |  |  | 科创日历 |  | 6.72h | 《项目度量数据库》 |
| 104 | 1.1.3.4.1 | 《项目度量库》数据更新 1（需求开发阶段结束） |  | 0.14d | 2021-11-25 08:00 | 2021-11-25 09:07 |  |  |  |  | 114.86d |  | start no earlier than 2021-11-25 08:00 | 科创日历 | 任敬华 | 1.12h |  |
| 105 | 1.1.3.4.2 | 《项目度量库》数据更新 2（系统设计阶段结束） | manual | 0.14d | 2021-12-23 08:00 | 2021-12-23 09:07 |  |  |  |  |  |  | start no earlier than 2021-12-23 08:00 | 科创日历 | 任敬华 | 1.12h |  |
| 106 | 1.1.3.4.3 | 《项目度量库》数据更新 3（编码实现阶段结束） | manual | 0.14d | 2022-02-09 08:00 | 2022-02-09 09:07 |  |  |  |  |  |  | start no earlier than 2022-02-09 08:00 | 科创日历 | 任敬华 | 1.12h |  |
| 107 | 1.1.3.4.4 | 《项目度量库》数据更新 4（产品集成阶段结束） | manual | 0.14d | 2022-02-23 08:00 | 2022-02-23 09:07 |  |  |  |  |  |  | start no earlier than 2022-02-23 08:00 | 科创日历 | 任敬华 | 1.12h |  |
| 108 | 1.1.3.4.5 | 《项目度量库》数据更新 5（系统测试阶段结束） | manual | 0.14d | 2022-03-24 08:00 | 2022-03-24 09:07 |  |  |  |  |  |  | start no earlier than 2022-03-24 08:00 | 科创日历 | 任敬华 | 1.12h |  |
| 109 | 1.1.3.4.6 | 《项目度量库》数据更新 6（产品交付阶段结束） | manual | 0.14d | 2022-05-04 08:00 | 2022-05-04 09:07 |  |  |  |  |  |  | start no earlier than 2022-05-04 08:00 | 科创日历 | 任敬华 | 1.12h |  |
| 110 | 1.1.3.5 | **风险识别与跟踪** |  | 150.12d | 2021-10-11 16:00 | 2022-05-02 18:00 |  |  |  |  | 2d |  |  |  |  | 29h |  |
| 111 | 1.1.3.5.1 | 风险识别与跟踪 1 |  | 0.12d | 2021-10-11 16:00 | 2021-10-11 18:00 |  |  |  |  | 152d |  | finish no earlier than 2021-10-11 18:00 |  | 任敬华 | 1h |  |
| 112 | 1.1.3.5.2 | 风险识别与跟踪 2 |  | 0.12d | 2021-10-18 16:00 | 2021-10-18 18:00 |  |  |  |  | 146d |  | finish no earlier than 2021-10-18 18:00 |  | 任敬华 | 1h |  |
| 113 | 1.1.3.5.3 | 风险识别与跟踪 3 |  | 0.12d | 2021-10-25 16:00 | 2021-10-25 18:00 |  |  |  |  | 141d |  | finish no earlier than 2021-10-25 18:00 |  | 任敬华 | 1h |  |
| 114 | 1.1.3.5.4 | 风险识别与跟踪 4 |  | 0.12d | 2021-11-01 16:00 | 2021-11-01 18:00 |  |  |  |  | 136d |  | finish no earlier than 2021-11-01 18:00 |  | 任敬华 | 1h |  |
| 115 | 1.1.3.5.5 | 风险识别与跟踪 5 |  | 0.12d | 2021-11-08 16:00 | 2021-11-08 18:00 |  |  |  |  | 130d |  | finish no earlier than 2021-11-08 18:00 |  | 任敬华 | 1h |  |
| 116 | 1.1.3.5.6 | 风险识别与跟踪 6 |  | 0.12d | 2021-11-15 16:00 | 2021-11-15 18:00 |  |  |  |  | 125d |  | finish no earlier than 2021-11-15 18:00 |  | 任敬华 | 1h |  |
| 117 | 1.1.3.5.7 | 风险识别与跟踪 7 |  | 0.12d | 2021-11-22 16:00 | 2021-11-22 18:00 |  |  |  |  | 120d |  | finish no earlier than 2021-11-22 18:00 |  | 任敬华 | 1h |  |
| 118 | 1.1.3.5.8 | 风险识别与跟踪 8 |  | 0.12d | 2021-11-29 16:00 | 2021-11-29 18:00 |  |  |  |  | 115d |  | finish no earlier than 2021-11-29 18:00 |  | 任敬华 | 1h |  |
| 119 | 1.1.3.5.9 | 风险识别与跟踪 9 |  | 0.12d | 2021-12-06 16:00 | 2021-12-06 18:00 |  |  |  |  | 110d |  | finish no earlier than 2021-12-06 18:00 |  | 任敬华 | 1h |  |
| 120 | 1.1.3.5.10 | 风险识别与跟踪 10 |  | 0.12d | 2021-12-13 16:00 | 2021-12-13 18:00 |  |  |  |  | 105d |  | finish no earlier than 2021-12-13 18:00 |  | 任敬华 | 1h |  |
| 121 | 1.1.3.5.11 | 风险识别与跟踪 11 |  | 0.12d | 2021-12-20 16:00 | 2021-12-20 18:00 |  |  |  |  | 100d |  | finish no earlier than 2021-12-20 18:00 |  | 任敬华 | 1h |  |
| 122 | 1.1.3.5.12 | 风险识别与跟踪 12 |  | 0.12d | 2021-12-27 16:00 | 2021-12-27 18:00 |  |  |  |  | 95d |  | finish no earlier than 2021-12-27 18:00 |  | 任敬华 | 1h |  |
| 123 | 1.1.3.5.13 | 风险识别与跟踪 13 |  | 0.12d | 2022-01-03 16:00 | 2022-01-03 18:00 |  |  |  |  | 90d |  | finish no earlier than 2022-01-03 18:00 |  | 任敬华 | 1h |  |
| 124 | 1.1.3.5.14 | 风险识别与跟踪 14 |  | 0.12d | 2022-01-17 16:00 | 2022-01-17 18:00 |  |  |  |  | 80d |  | finish no earlier than 2022-01-17 18:00 |  | 任敬华 | 1h |  |
| 125 | 1.1.3.5.15 | 风险识别与跟踪 15 |  | 0.12d | 2022-01-17 16:00 | 2022-01-17 18:00 |  |  |  |  | 80d |  | finish no earlier than 2022-01-17 18:00 |  | 任敬华 | 1h |  |
| 126 | 1.1.3.5.16 | 风险识别与跟踪 16 |  | 0.12d | 2022-01-24 16:00 | 2022-01-24 18:00 |  |  |  |  | 74d |  | finish no earlier than 2022-01-24 18:00 |  | 任敬华 | 1h |  |
| 127 | 1.1.3.5.17 | 风险识别与跟踪 17 |  | 0.12d | 2022-01-31 16:00 | 2022-01-31 18:00 |  |  |  |  | 69d |  | finish no earlier than 2022-01-31 18:00 |  | 任敬华 | 1h |  |
| 128 | 1.1.3.5.18 | 风险识别与跟踪 18 |  | 0.12d | 2022-02-10 16:00 | 2022-02-10 18:00 |  |  |  |  | 60d |  | finish no earlier than 2022-02-10 18:00 |  | 任敬华 | 1h |  |
| 129 | 1.1.3.5.19 | 风险识别与跟踪 19 |  | 0.13d | 2022-02-21 15:57 | 2022-02-21 18:00 |  |  |  |  | 52d |  | finish no earlier than 2022-02-21 18:00 |  | 任敬华 [96.2%] | 1h |  |
| 130 | 1.1.3.5.20 | 风险识别与跟踪 20 |  | 0.13d | 2022-02-28 15:57 | 2022-02-28 18:00 |  |  |  |  | 47d |  | finish no earlier than 2022-02-28 18:00 |  | 任敬华 [96.2%] | 1h |  |
| 131 | 1.1.3.5.21 | 风险识别与跟踪 21 |  | 0.13d | 2022-03-07 15:57 | 2022-03-07 18:00 |  |  |  |  | 42d |  | finish no earlier than 2022-03-07 18:00 |  | 任敬华 [96.2%] | 1h |  |
| 132 | 1.1.3.5.22 | 风险识别与跟踪 22 |  | 0.13d | 2022-03-14 15:57 | 2022-03-14 18:00 |  |  |  |  | 37d |  | finish no earlier than 2022-03-14 18:00 |  | 任敬华 [96.2%] | 1h |  |
| 133 | 1.1.3.5.23 | 风险识别与跟踪 23 |  | 0.13d | 2022-03-21 15:57 | 2022-03-21 18:00 |  |  |  |  | 32d |  | finish no earlier than 2022-03-21 18:00 |  | 任敬华 [96.2%] | 1h |  |
| 134 | 1.1.3.5.24 | 风险识别与跟踪 24 |  | 0.13d | 2022-03-28 15:57 | 2022-03-28 18:00 |  |  |  |  | 27d |  | finish no earlier than 2022-03-28 18:00 |  | 任敬华 [96.2%] | 1h |  |
| 135 | 1.1.3.5.25 | 风险识别与跟踪 25 |  | 0.13d | 2022-04-04 15:57 | 2022-04-04 18:00 |  |  |  |  | 22d |  | finish no earlier than 2022-04-04 18:00 |  | 任敬华 [96.2%] | 1h |  |
| 136 | 1.1.3.5.26 | 风险识别与跟踪 26 |  | 0.13d | 2022-04-11 15:57 | 2022-04-11 18:00 |  |  |  |  | 17d |  | finish no earlier than 2022-04-11 18:00 |  | 任敬华 [96.2%] | 1h |  |
| 137 | 1.1.3.5.27 | 风险识别与跟踪 27 |  | 0.13d | 2022-04-18 15:57 | 2022-04-18 18:00 |  |  |  |  | 12d |  | finish no earlier than 2022-04-18 18:00 |  | 任敬华 [96.2%] | 1h |  |
| 138 | 1.1.3.5.28 | 风险识别与跟踪 28 |  | 0.13d | 2022-04-25 15:57 | 2022-04-25 18:00 |  |  |  |  | 7d |  | finish no earlier than 2022-04-25 18:00 |  | 任敬华 [96.2%] | 1h |  |
| 139 | 1.1.3.5.29 | 风险识别与跟踪 29 |  | 0.13d | 2022-05-02 15:57 | 2022-05-02 18:00 |  |  |  |  | 2d |  | finish no earlier than 2022-05-02 18:00 |  | 任敬华 [96.2%] | 1h |  |

| ID | WBS | Task | Type | Duration | Start | Finish | Predecessors | Baseline start | Baseline finish | Baseline duration | Total slack | Free slack | Constraint | Resources | Work | Baseline cost | Text1 |
| --- | --- | --- | --- | --- | --- | --- | --- | --- | --- | --- | --- | --- | --- | --- | --- | --- | --- |
| 140 | 1.1.4 | **项目结项** |  | 11d | 2022-04-20 08:00 | 2022-05-04 18:00 |  | 2006-06-14 08:00 | 2006-06-14 17:00 | 1d? | 0d |  |  |  | 109h |  |  |
| 141 | 1.1.4.1 | **结项准备** |  | 2d | 2022-04-20 08:00 | 2022-04-21 17:00 |  |  |  |  | 2d |  |  |  | 16h |  |  |
| 142 | 1.1.4.1.1 | 撰写《结项报告》 |  | 1d | 2022-04-20 08:00 | 2022-04-20 17:00 | 236 | 2006-06-14 08:00 | 2006-06-14 17:00 | 1d? | 2d | 0d | start no earlier than 2022-04-20 08:00 | 任敬华 | 8h |  | 《项目结项总结报告》 |
| 143 | 1.1.4.1.2 | 结项申请，高级经理阅读申请材料 |  | 1d | 2022-04-21 08:00 | 2022-04-21 17:00 | 142 | 2006-06-14 08:00 | 2006-06-14 17:00 | 1d? | 2d | 0d | start no earlier than 2021-07-29 08:00 | 冯鑫 | 8h |  | 《QA总结报告》 |
| 144 | 1.1.4.2 | **度量分析** |  | 1.5d | 2022-04-22 08:00 | 2022-04-25 12:00 |  |  |  |  | 1.5d |  |  |  | 8h |  |  |
| 145 | 1.1.4.2.1 | 项目结项阶段度量数据收集整理 |  | 0.5d | 2022-04-22 08:00 | 2022-04-22 12:00 | 143 |  |  |  | 2d | 0.5d | start no earlier than 2021-07-29 08:00 | 任敬华 | 4h |  |  |
| 146 | 1.1.4.2.2 | 更新《项目度量数据库》 |  | 0.5d | 2022-04-25 08:00 | 2022-04-25 12:00 | 145 |  |  |  | 1.5d | 0.5d | start no earlier than 2022-04-25 08:00 | 任敬华 | 4h |  | 《项目度量数据库》 |
| 147 | 1.1.4.3 | **召开项目结项会议** |  | 4.5d | 2022-04-26 08:00 | 2022-05-02 12:00 |  | 2006-06-14 08:00 | 2006-06-14 17:00 | 1d? | 0d |  |  |  | 68h |  |  |
| 148 | 1.1.4.3.1 | 项目结项会议 | manual | 0.5d | 2022-04-26 08:00 | 2022-04-26 12:00 | 146 |  |  |  |  |  |  | 任敬华; 徐建斌; 张颖菁; 王志; 殷淑萍; 冯鑫; 滕荣; 何恩超 | 40h |  | 《项目结项评审报告》《结项会议纪要》 |
| 149 | 1.1.4.3.2 | 总结经验教训 |  | 3d | 2022-04-27 08:00 | 2022-04-29 18:00 | 148 |  |  |  | 0.5d | 0d | finish no earlier than 2022-04-29 18:00 | 任敬华 | 24h |  | 《项目过程改进建议》 |
| 150 | 1.1.4.3.3 | 高级经理批准结项 | manual | 0.5d | 2022-05-02 08:00 | 2022-05-02 12:00 | 149 |  |  |  |  |  | start no earlier than 2022-05-02 08:00 | 冯鑫 | 4h |  | 高级经理审批后的《结项报告》 |
| 151 | 1.1.4.4 | **项目资产纳入组织过程资产库** |  | 2d | 2022-05-03 08:00 | 2022-05-04 18:00 |  | 2006-06-14 08:00 | 2006-06-14 17:00 | 1d? | 0d |  |  |  | 17h |  |  |
| 152 | 1.1.4.4.1 | EPG纳入组织资产库 | manual | 2.12d | 2022-05-03 08:00 | 2022-05-04 18:00 | 150 |  |  |  |  |  | start no earlier than 2022-05-03 08:00 | 冯鑫 | 17h |  | 组织资产库 |
| 153 | 1.2 | **工程过程** |  | 126d | 2021-11-01 08:00 | 2022-04-19 17:00 |  |  |  |  | 9.88d |  |  |  | 1886.98h |  |  |
| 154 | 1.2.1 | **需求开发** |  | 20d | 2021-11-01 08:00 | 2021-11-25 18:00 |  | 2006-06-14 08:00 | 2006-06-15 17:00 | 2d? | 14d |  |  |  | 195h | 65 |  |
| 155 | 1.2.1.1 | **用户需求获取** |  | 3.5d | 2021-11-01 08:00 | 2021-11-04 12:00 |  | 2006-06-14 08:00 | 2006-06-14 17:00 | 1d? | 19.88d |  |  |  | 14h | 8 |  |
| 156 | 1.2.1.1.1 | 需求调查前准备 |  | 0.5d | 2021-11-01 08:00 | 2021-11-01 12:00 |  |  |  |  | 21.38d | 1.5d | start no earlier than 2021-11-01 08:00 | 任敬华 [75%] | 3h |  | 《需求调研计划》 |
| 157 | 1.2.1.1.2 | 需求调研 |  | 0.5d | 2021-11-03 08:00 | 2021-11-03 12:00 | 156 |  |  |  | 19.88d | 0d | start no earlier than 2021-11-03 08:00 | 任敬华 [75%] | 3h |  | 《需求调查单》 |
| 158 | 1.2.1.1.3 | 撰写《用户需求说明书》 |  | 1d | 2021-11-03 13:00 | 2021-11-04 12:00 | 157 |  |  |  | 19.88d | 0.5d | finish no earlier than 2020-03-25 18:00 | 任敬华 | 8h |  | 《用户需求说明书》 |
| 159 | 1.2.1.2 | **用户需求评审(正式评审)** |  | 4.25d | 2021-11-05 08:00 | 2021-11-10 10:00 | 158 | 2006-06-14 08:00 | 2006-06-14 17:00 | 1d? | 16.88d |  |  |  | 62h | 24 |  |
| 160 | 1.2.1.2.1 | 准备评审 |  | 0.5d | 2021-11-05 08:00 | 2021-11-05 12:00 | 158 | 2006-06-14 08:00 | 2006-06-14 17:00 | 1d? | 19.38d | 1.5d | start no earlier than 2021-11-05 08:00 | 任敬华; 冯鑫; 彭丽群 | 12h | 8 | 《用户需求说明书评审准备表》 |
| 161 | 1.2.1.2.2 | 举行评审会议 |  | 0.5d | 2021-11-08 08:00 | 2021-11-08 12:00 | 160 | 2006-06-14 08:00 | 2006-06-14 17:00 | 1d? | 17.88d | 0.5d | start no earlier than 2021-11-08 08:00 | 任敬华; 徐建斌; 张颖菁; 王志; 殷淑萍; 冯鑫; 滕荣; 何恩超; 彭丽群 | 44h | 8 | 《评审会议纪要》 |
| 162 | 1.2.1.2.3 | **修正、跟踪与审核** |  | 1.25d | 2021-11-09 08:00 | 2021-11-10 10:00 |  | 2006-06-14 08:00 | 2006-06-14 17:00 | 1d? | 16.88d |  |  |  | 6h |  |  |
| 163 | 1.2.1.2.3.1 | 修正工作产品 |  | 0.5d | 2021-11-09 08:00 | 2021-11-09 12:00 | 161 |  |  |  | 17.38d | 0.5d | start no earlier than 2021-11-09 08:00 | 任敬华 | 4h |  | 修正后的工作产品：《用户需求说明书》 |
| 164 | 1.2.1.2.3.2 | 修改后的工作产品的确认 |  | 0.25d | 2021-11-10 08:00 | 2021-11-10 10:00 | 163 |  |  |  | 16.88d | 0.75d | start no earlier than 2021-11-10 08:00 | 张颖菁 | 2h |  | 《用户需求说明书评审报告》 |
| 165 | 1.2.1.3 | 新建《需求跟踪矩阵》 |  | 0.25d | 2021-11-11 08:00 | 2021-11-11 10:00 | 164 |  |  |  | 16.12d | 0.75d | start no earlier than 2021-11-11 08:00 | 任敬华 | 2h |  | 《需求跟踪矩阵》 |

| ID | WBS | Task | Type | Duration | Start | Finish | Predecessors | Baseline start | Baseline finish | Baseline duration | Total slack | Free slack | Constraint | Resources | Work | Baseline cost | Text1 |
| --- | --- | --- | --- | --- | --- | --- | --- | --- | --- | --- | --- | --- | --- | --- | --- | --- | --- |
| 166 | 1.2.1.4 | **系统需求定义** |  | 2d | 2021-11-12 08:00 | 2021-11-15 17:00 | 165 | 2006-06-14 08:00 | 2006-06-14 14:00 | 5h | 15.38d |  |  |  | 16h | 5 |  |
| 167 | 1.2.1.4.1 | 撰写《产品需求规格说明书》 |  | 1d | 2021-11-12 08:00 | 2021-11-12 17:00 | 165 |  |  |  | 15.38d | 0d | start no earlier than 2021-11-12 08:00 | 任敬华 | 8h |  | 《产品需求规格说明书》 |
| 168 | 1.2.1.4.2 | 制作系统开发原型Demo |  | 1d | 2021-11-15 08:00 | 2021-11-15 17:00 | 167 |  |  |  | 15.38d | 0d |  | 任敬华 | 8h |  |  |
| 169 | 1.2.1.5 | **产品需求评审(正式评审)** |  | 4.5d | 2021-11-16 08:00 | 2021-11-22 12:00 |  |  |  |  | 2d |  |  |  | 77h |  |  |
| 170 | 1.2.1.5.1 | 准备评审 |  | 0.5d | 2021-11-16 08:00 | 2021-11-16 12:00 | 168 | 2006-06-14 08:00 | 2006-06-14 17:00 | 1d? | 15.38d | 0.5d | start no earlier than 2021-04-22 08:00 | 任敬华; 冯鑫; 彭丽群 | 12h | 8 | 《评审准备表》 |
| 171 | 1.2.1.5.2 | 举行评审会议 |  | 0.5d | 2021-11-17 08:00 | 2021-11-17 12:00 | 170 | 2006-06-14 08:00 | 2006-06-14 17:00 | 1d? | 14.88d | 0.5d | start no earlier than 2021-11-17 08:00 | 任敬华; 徐建斌; 张颖菁; 王志; 殷淑萍; 冯鑫; 滕荣; 何恩超; 彭丽群 | 44h | 8 | 《评审会议记录》 |
| 172 | 1.2.1.5.3 | **修正、跟踪与审核** |  | 2.5d | 2021-11-18 08:00 | 2021-11-22 12:00 |  | 2006-06-14 08:00 | 2006-06-14 17:00 | 1d? | 0d |  |  |  | 21h |  |  |
| 173 | 1.2.1.5.3.1 | 修正工作产品 | manual | 2.12d | 2021-11-18 08:00 | 2021-11-19 18:00 | 171 |  |  |  |  |  | start no earlier than 2021-11-18 08:00 | 任敬华 | 17h |  | 修正后的工作产品：《产品需求规格说明书》 |
| 174 | 1.2.1.5.3.2 | 修改后的工作产品的确认 | manual | 0.5d | 2021-11-22 08:00 | 2021-11-22 12:00 | 173 |  |  |  |  |  | start no earlier than 2021-11-22 08:00 | 张颖菁 | 4h |  | 《产品需求规格说明书评审报告》 |
| 175 | 1.2.1.6 | 更新《需求跟踪矩阵》 |  | 3d | 2021-11-23 08:00 | 2021-11-25 18:00 | 174 |  |  |  | 14d | 0d | finish no earlier than 2021-11-25 18:00 | 任敬华 | 24h |  | 《需求跟踪矩阵》《项目变更申请表》《项目变更记录表》 |
| 176 | 1.2.2 | **系统设计** |  | 21d | 2021-11-26 08:00 | 2021-12-24 18:00 |  |  |  |  | 0d |  |  |  | 214h |  |  |
| 177 | 1.2.2.1 | 撰写《技术解决方案》 | manual | 1d | 2021-11-26 08:00 | 2021-11-26 17:00 | 175 |  |  |  |  |  |  | 何恩超 | 8h |  | 《技术解决方案》 |
| 178 | 1.2.2.2 | 对于多方案进行决策(可选) |  | 0.5d | 2021-11-29 08:00 | 2021-11-29 12:00 | 177 |  |  |  | 14d | 0.5d | start no earlier than 2021-04-28 08:00 | 任敬华; 冯鑫; 何恩超 | 16h |  |  |
| 179 | 1.2.2.3 | **概要设计与数据库设计** |  | 3.5d | 2021-11-30 08:00 | 2021-12-03 12:00 |  | 2006-06-14 08:00 | 2006-06-14 17:00 | 1d? | 0d |  |  |  | 28h |  |  |
| 180 | 1.2.2.3.1 | 撰写概要设计文档与数据库设计文档 | manual | 2.5d | 2021-11-30 08:00 | 2021-12-02 12:00 | 178 |  |  |  |  |  | start no earlier than 2021-11-30 08:00 | 何恩超 | 20h |  | 《概要设计说明书》、《数据库设计说明书》 |
| 181 | 1.2.2.3.2 | 购买复用分析 |  | 1d | 2021-12-02 13:00 | 2021-12-03 12:00 | 180 |  |  |  | 13.5d | 0.5d | start no earlier than 2021-10-28 08:00 | 何恩超 | 8h |  | 《概要设计说明书》、《数据库设计说明书》 |
| 182 | 1.2.2.4 | **概要设计数据库设计评审(正式评审)** |  | 3.5d | 2021-12-06 08:00 | 2021-12-09 12:00 |  | 2006-06-14 08:00 | 2006-06-14 17:00 | 1d? | 5d |  |  |  | 36h |  |  |
| 183 | 1.2.2.4.1 | 准备评审 |  | 0.25d | 2021-12-06 08:00 | 2021-12-06 10:00 | 181 | 2006-06-14 08:00 | 2006-06-14 17:00 | 1d? | 13d | 0.75d | start no earlier than 2021-12-06 08:00 | 任敬华; 王志; 冯鑫; 何恩超 | 8h | 8 | 《评审准备表》 |
| 184 | 1.2.2.4.2 | 举行评审会议 |  | 0.25d | 2021-12-07 08:00 | 2021-12-07 10:00 | 183 | 2006-06-14 08:00 | 2006-06-14 17:00 | 1d? | 12.25d | 0.75d | start no earlier than 2021-12-07 08:00 | 任敬华; 徐建斌; 张颖菁; 王志; 殷淑萍; 冯鑫; 滕荣; 何恩超 | 20h | 8 | 《设计评审会议纪要》 |
| 185 | 1.2.2.4.3 | **修正、跟踪与审核** |  | 1.5d | 2021-12-08 08:00 | 2021-12-09 12:00 |  | 2006-06-14 08:00 | 2006-06-14 17:00 | 1d? | 3d |  |  |  | 8h |  |  |
| 186 | 1.2.2.4.3.1 | 修正工作产品 |  | 0.5d | 2021-12-08 08:00 | 2021-12-08 12:00 | 184 |  |  |  | 11.5d |  | start no earlier than 2021-12-08 08:00 | 何恩超 | 4h |  | 修正后的工作产品：《概要设计说明书》、《数据库设计说明书》 |
| 187 | 1.2.2.4.3.2 | 修改后的工作产品的确认 |  | 0.5d | 2021-12-09 08:00 | 2021-12-09 12:00 |  |  |  |  | 2d | 0.5d | start no earlier than 2021-12-09 08:00 | 张颖菁 | 4h |  | 《设计说明书评审报告》 |
| 188 | 1.2.2.5 | **详细设计** |  | 2.5d | 2021-12-10 08:00 | 2021-12-14 12:00 |  | 2006-06-14 08:00 | 2006-06-14 17:00 | 1d? | 1.5d |  |  |  | 20h |  | 《详细设计说明书》 |
| 189 | 1.2.2.5.1 | 撰写详细设计说明书 |  | 2.5d | 2021-12-10 08:00 | 2021-12-14 12:00 | 187 |  |  |  | 1.5d | 0.5d | start no earlier than 2021-12-10 08:00 | 何恩超 | 20h |  |  |

| ID | WBS | Task | Type | Duration | Start | Finish | Predecessors | Baseline start | Baseline finish | Baseline duration | Total slack | Free slack | Constraint | Resources | Work | Baseline cost | Text1 |
| --- | --- | --- | --- | --- | --- | --- | --- | --- | --- | --- | --- | --- | --- | --- | --- | --- | --- |
| 190 | 1.2.2.6 | **详细设计评审(正式评审)** |  | 8d | 2021-12-15 08:00 | 2021-12-24 18:00 |  | 2006-06-14 08:00 | 2006-06-14 17:00 | 1d? | 0d |  |  |  | 106h |  |  |
| 191 | 1.2.2.6.1 | 准备评审 | manual | 0.5d | 2021-12-15 08:00 | 2021-12-15 12:00 | 189 | 2006-06-14 08:00 | 2006-06-14 17:00 | 1d? |  |  |  | 任敬华; 王志; 冯鑫; 何恩超 | 16h | 8 | 《评审准备表》 |
| 192 | 1.2.2.6.2 | 举行评审会议 | manual | 0.5d | 2021-12-16 08:00 | 2021-12-16 12:00 | 191 | 2006-06-14 08:00 | 2006-06-14 17:00 | 1d? |  |  |  | 任敬华; 徐建斌; 张颖菁; 王志; 殷淑萍; 冯鑫; 滕荣; 何恩超 | 40h | 8 | 《会议纪要》 |
| 193 | 1.2.2.6.3 | **修正、跟踪与审核** |  | 6d | 2021-12-17 08:00 | 2021-12-24 18:00 | 192 | 2006-06-14 08:00 | 2006-06-14 17:00 | 1d? | 0d |  |  |  | 50h |  |  |
| 194 | 1.2.2.6.3.1 | 修正工作产品 | manual | 3.12d | 2021-12-17 08:00 | 2021-12-21 18:00 | 192 |  |  |  |  |  |  | 何恩超 | 25h |  | 修正后的工作产品：《详细设计说明书》 |
| 195 | 1.2.2.6.3.2 | 修改后的工作产品的确认 | manual | 3.12d | 2021-12-22 08:00 | 2021-12-24 18:00 | 194 |  |  |  |  |  | start no earlier than 2021-12-22 08:00 | 张颖菁 | 25h |  | 《详细设计评审报告》 |
| 196 | 1.2.3 | **编码实现** |  | 36d | 2021-12-24 08:00 | 2022-02-09 17:00 | 176 | 2006-06-14 08:00 | 2006-06-14 17:00 | 1d? | 0d |  |  |  | 941h |  |  |
| 197 | 1.2.3.1 | **编码实现模块功能** |  | 34d | 2021-12-24 08:00 | 2022-02-07 17:00 |  |  |  |  | 0d |  |  |  | 873h |  | 程序源代码 |
| 198 | 1.2.3.1.1 | 编码实现1 | manual | 10.12d | 2021-12-24 08:00 | 2022-01-06 18:00 |  |  |  |  |  |  | start no earlier than 2021-12-24 08:00 | 王志; 任敬华; 殷淑萍 | 243h |  |  |
| 199 | 1.2.3.1.2 | 代码走查1 |  | 1d | 2022-01-07 08:00 | 2022-01-07 17:00 | 198 |  |  |  | 37.88d | 0d |  | 任敬华; 王志; 殷淑萍 | 32h |  |  |
| 200 | 1.2.3.1.3 | 编码实现2 | manual | 9.12d | 2022-01-10 08:00 | 2022-01-20 18:00 | 199 |  |  |  |  |  | start no earlier than 2022-01-10 08:00 | 王志 [120%]; 任敬华 [120%]; 殷淑萍 [120%] | 262.8h |  |  |
| 201 | 1.2.3.1.4 | 代码走查2 |  | 1d | 2022-01-21 08:00 | 2022-01-21 17:00 | 200 |  |  |  | 38d | 1d |  | 任敬华; 王志; 殷淑萍 | 32h |  |  |
| 202 | 1.2.3.1.5 | 编码实现3 |  | 10d | 2022-01-24 08:00 | 2022-02-04 18:00 | 201 |  |  |  | 37d |  | finish no earlier than 2022-02-04 18:00 | 王志 [113%]; 任敬华 [113%]; 殷淑萍 [113%] | 271.2h |  |  |
| 203 | 1.2.3.1.6 | 代码走查3 |  | 1d | 2022-02-07 08:00 | 2022-02-07 17:00 |  |  |  |  | 15.38d | 0d | start no earlier than 2022-02-07 08:00 | 任敬华; 王志; 殷淑萍 | 32h |  |  |
| 204 | 1.2.3.2 | **编写支持文档** |  | 2d | 2022-02-08 08:00 | 2022-02-09 17:00 |  |  |  |  | 15.38d |  |  |  | 68h |  |  |
| 205 | 1.2.3.2.1 | 编写《用户操作手册》 |  | 1.5d | 2022-02-08 08:00 | 2022-02-09 12:00 | 203 |  |  |  | 15.38d | 0d | start no earlier than 2021-07-02 08:00 | 王志; 任敬华; 殷淑萍 | 36h |  | 《用户手册》《维护手册》 |
| 206 | 1.2.3.3.2 | 评审支持文档(非正式评审) |  | 0.5d | 2022-02-09 13:00 | 2022-02-09 17:00 | 205 |  |  |  | 15.38d | 0d | start no earlier than 2021-07-05 08:00 | 任敬华; 徐建斌; 张颖菁; 王志; 殷淑萍; 滕荣 | 32h |  |  |
| 207 | 1.2.4 | **产品集成** |  | 11d | 2022-02-10 08:00 | 2022-02-23 18:00 |  |  |  |  | 9d |  |  |  | 219h |  |  |
| 208 | 1.2.4.1 | 制定《产品集成计划》 |  | 4d | 2022-02-10 08:00 | 2022-02-14 17:00 | 206 |  |  |  | 15.38d | 0d | start no earlier than 2021-07-06 08:00 | 殷淑萍 | 32h |  |  |
| 209 | 1.2.4.2 | 评审《产品集成计划》 |  | 1d | 2022-02-15 08:00 | 2022-02-15 17:00 | 208 |  |  |  | 15.38d | 1d | start no earlier than 2021-07-07 08:00 | 任敬华; 徐建斌; 张颖菁; 王志; 殷淑萍; 滕荣 | 64h |  |  |
| 210 | 1.2.4.3 | 审查接口的兼容性 |  | 3d | 2022-02-17 08:00 | 2022-02-21 18:00 | 209 |  |  |  | 14.38d | 0d | finish no earlier than 2022-02-21 18:00 | 王志; 任敬华; 殷淑萍 | 72h |  | 《接口关系表》 |
| 211 | 1.2.4.4 | 组装产品组件 | manual | 2.12d | 2022-02-22 08:00 | 2022-02-23 18:00 | 210 |  |  |  |  |  |  | 王志; 任敬华; 殷淑萍 | 51h |  | 《接口关系表》 |
| 212 | 1.2.5 | **系统测试** |  | 21d | 2022-02-24 08:00 | 2022-03-24 17:00 |  | 2006-06-14 08:00 | 2006-06-14 17:00 | 1d? | 1d |  |  |  | 164.98h |  |  |
| 213 | 1.2.5.1 | 制定《系统测试计划》 |  | 1d | 2022-02-24 08:00 | 2022-02-24 17:00 | 211 |  |  |  | 14.5d | 0d | start no earlier than 2021-07-09 08:00 | 王志 | 8h |  | 《系统测试计划》 |
| 214 | 1.2.5.2 | 编写《系统测试用例》 | manual | 2d | 2022-02-25 08:00 | 2022-02-28 17:00 | 213 |  |  |  |  |  | start no earlier than 2022-02-25 08:00 | 王志 | 16h |  | 《系统测试用例》 |

| ID | WBS | Task | Type | Duration | Start | Finish | Predecessors | Remaining | Baseline start | Baseline finish | Baseline duration | Total slack | Free slack | Constraint | Resources | Work | Actual work | Baseline cost | Text1 |
| --- | --- | --- | --- | --- | --- | --- | --- | --- | --- | --- | --- | --- | --- | --- | --- | --- | --- | --- | --- |
| 215 | 1.2.5.3 | **评审《系统测试用例》《系统测试计划》** |  | 6d | 2022-03-01 08:00 | 2022-03-08 17:00 | 214 |  |  |  |  | 13d |  |  |  | 55.98h |  |  |  |
| 216 | 1.2.5.3.1 | 评审准备 |  | 0.25d | 2022-03-01 08:00 | 2022-03-01 10:00 | 214 |  | 2006-06-14 08:00 | 2006-06-14 17:00 | 1d? | 14.5d | 0.75d | start no earlier than 2021-04-27 08:00 | 任敬华; 王志; 冯鑫 | 6h |  | 8 | 《评审准备表》 |
| 217 | 1.2.5.3.2 | 举行评审会议 |  | 0.25d | 2022-03-02 08:00 | 2022-03-02 10:00 | 216 |  |  |  |  | 13.75d | 0.75d | start no earlier than 2022-03-02 08:00 | 任敬华 [87%]; 徐建斌 [87%]; 张颖菁 [87%]; 王志 [87%]; 殷淑萍 [145%]; 冯鑫 [87%]; 滕荣 [145%] | 17.98h |  |  | 《会议记录》 |
| 218 | 1.2.5.3.3 | **修正、跟踪与审核** |  | 4d | 2022-03-03 08:00 | 2022-03-08 17:00 | 217 |  | 2006-06-14 08:00 | 2006-06-14 17:00 | 1d? | 13d |  |  |  | 32h |  |  |  |
| 219 | 1.2.5.3.3.1 | 修正工作产品 |  | 3d | 2022-03-03 08:00 | 2022-03-07 18:00 | 217 |  |  |  |  | 13d | 0d | finish no earlier than 2022-03-07 18:00 | 王志 | 24h |  |  | 修正后的工作产品：《系统测试用例》 |
| 220 | 1.2.5.3.3.2 | 修改后的工作产品的确认 |  | 1d | 2022-03-08 08:00 | 2022-03-08 17:00 | 219 |  |  |  |  | 13d | 0d | finish no earlier than 2022-03-04 18:00 | 张颖菁 | 8h |  |  | 《系统测试用例评审报告》 |
| 221 | 1.2.5.4 | **执行系统测试** |  | 12d | 2022-03-09 08:00 | 2022-03-24 17:00 | 196 |  |  |  |  | 12d |  |  |  | 85h |  |  |  |
| 222 | 1.2.5.4.1 | 搭建系统测试环境 |  | 0.5d | 2022-03-09 08:00 | 2022-03-09 12:00 | 220 |  |  |  |  | 13d | 0.5d | start no earlier than 2021-07-14 08:00 | 王志 | 4h |  |  |  |
| 223 | 1.2.5.4.2 | 执行系统测试用例 |  | 4d | 2022-03-10 08:00 | 2022-03-15 18:00 | 222 |  |  |  |  | 12.5d | 0d | finish no earlier than 2022-03-15 18:00 | 王志 [50%] | 16h |  |  |  |
| 224 | 1.2.5.4.3 | 记录并跟踪缺陷 |  | 0.5d | 2022-03-16 08:00 | 2022-03-16 12:00 | 223 |  |  |  |  | 12.5d | 0.5d | start no earlier than 2021-07-16 08:00 | 王志 [25%] | 1h |  |  | 《系统测试用例》、《BUG记录单》 |
| 225 | 1.2.5.4.4 | 修改缺陷 |  | 4d | 2022-03-17 08:00 | 2022-03-22 18:00 | 224 |  |  |  |  | 12d | 0d | finish no earlier than 2022-03-22 18:00 | 王志 [50%]; 任敬华 [50%]; 殷淑萍 [50%] | 48h |  |  | 代码 |
| 226 | 1.2.5.4.5 | 撰写《系统测试报告》 |  | 2d | 2022-03-23 08:00 | 2022-03-24 17:00 | 225 |  |  |  |  | 12d | 0d | start no earlier than 2021-07-18 08:00 | 王志 | 16h |  |  | 《系统测试报告》 |
| 227 | 1.2.6 | **产品交付** |  | 18d | 2022-03-25 08:00 | 2022-04-19 17:00 | 226 |  | 2006-06-14 08:00 | 2006-06-14 17:00 | 1d? | 9.88d |  |  |  | 153h |  |  |  |
| 228 | 1.2.6.1 | 产品打包交付 |  | 2d | 2022-03-25 08:00 | 2022-03-28 17:00 | 226 |  |  |  |  | 17.88d | 6d | start no earlier than 2021-05-06 08:00 | 任敬华 | 16h |  |  | 《产品打包清单》 |
| 229 | 1.2.6.2 | 用户使用培训 |  | 3d | 2022-04-06 08:00 | 2022-04-08 18:00 | 228 |  |  |  |  | 11.88d | 0d | finish no earlier than 2022-04-08 18:00 | 任敬华 | 24h |  |  |  |
| 230 | 1.2.6.3 | **用户验收测试** |  | 6d | 2022-04-11 08:00 | 2022-04-18 18:00 |  |  |  |  |  | 1d |  |  |  | 105h |  |  |  |
| 231 | 1.2.6.3.1 | 编写验收测试计划 |  | 1d | 2022-04-11 08:00 | 2022-04-11 18:00 | 229 |  |  |  |  | 11.88d | 0d | finish no earlier than 2022-04-11 18:00 | 王志 | 8h |  |  |  |
| 232 | 1.2.6.3.2 | 编写验收测试用例 | manual | 2d | 2022-04-12 08:00 | 2022-04-13 17:00 | 231 |  |  |  |  |  |  | start no earlier than 2022-04-12 08:00 | 王志 | 16h |  |  |  |
| 233 | 1.2.6.3.3 | 评审《验收测试计划》《验收测试用例》 |  | 1d | 2022-04-14 08:00 | 2022-04-14 18:00 | 232 |  |  |  |  | 11.88d | 0d | finish no earlier than 2022-04-14 18:00 | 任敬华; 徐建斌; 张颖菁; 王志; 殷淑萍; 滕荣 | 64h |  |  |  |
| 234 | 1.2.6.3.4 | 执行验收测试 |  | 1d | 2022-04-15 08:00 | 2022-04-15 17:00 | 233 |  |  |  |  | 11.88d | 0d |  | 王志 | 8h |  |  |  |
| 235 | 1.2.6.3.5 | 编写验收测试报告 | manual | 1.12d | 2022-04-18 08:00 | 2022-04-18 18:00 | 234 |  |  |  |  |  |  | start no earlier than 2022-04-18 08:00 | 王志 | 9h |  |  |  |
| 236 | 1.2.6.4 | 编写《客户验收报告》,双方签字确认 | manual | 1d | 2022-04-19 08:00 | 2022-04-19 17:00 |  |  |  |  |  |  |  | start no earlier than 2022-04-19 08:00 | 王志 | 8h |  |  | 《产品交接验收单》、《客户验收报告》 |
| 237 | 1.3 | **支持过程** |  | 154.12d? | 2021-10-08 08:00 A | 2022-05-04 18:00 |  | 153.88d? |  |  |  |  |  |  |  | 1366.92h | 7.96h |  |  |
| 238 | 1.3.1 | **质量保证** |  | 154.12d | 2021-10-08 08:00 | 2022-05-04 18:00 |  |  |  |  |  |  |  |  |  | 85.92h |  |  |  |
| 239 | 1.3.1.1 | **过程和产品检查** |  | 154d | 2021-10-08 08:00 | 2022-05-04 18:00 |  |  | 2016-10-12 08:00 |  | 91d | 0d |  |  |  | 73.92h |  |  |  |
| 240 | 1.3.1.1.1 | 过程和产品检查 |  | 154d | 2021-10-08 08:00 | 2022-05-04 18:00 |  |  |  |  |  | 0d |  | finish no earlier than 2022-05-04 18:00 | 张颖菁 [2%] | 24.64h |  |  |  |
| 241 | 1.3.1.1.2 | 不符合项目报告编制 |  | 154d | 2021-10-08 08:00 | 2022-05-04 18:00 |  |  |  |  |  | 0d |  | finish no earlier than 2022-05-04 18:00 | 张颖菁 [2%] | 24.64h |  |  |  |
| 242 | 1.3.1.1.3 | 不一致问题跟踪 |  | 154d | 2021-10-08 08:00 | 2022-05-04 18:00 |  |  |  |  |  | 0d |  | finish no earlier than 2022-05-04 18:00 | 张颖菁 [2%] | 24.64h |  |  |  |

| ID | WBS | Task | Duration | Start | Finish | Complete | Remaining | Total slack | Constraint | Resources | Work | Actual work |
| --- | --- | --- | --- | --- | --- | --- | --- | --- | --- | --- | --- | --- |
| 243 | 1.3.1.2 | **QA里程碑报告编制** | 97.5d | 2021-12-23 08:00 | 2022-05-04 12:00 |  |  | 0.5d |  |  | 12h |  |
| 244 | 1.3.1.2.1 | 计划、需求与设计里程碑评审 | 0.5d | 2021-12-23 08:00 | 2021-12-23 12:00 |  |  | 97.5d | start no earlier than 2021-12-23 08:00 | 张颖菁 | 4h |  |
| 245 | 1.3.1.2.2 | 编码与集成里程碑评审 | 0.5d | 2022-02-23 08:00 | 2022-02-23 12:00 |  |  | 50.5d | start no earlier than 2022-02-23 08:00 | 张颖菁 | 4h |  |
| 246 | 1.3.1.2.3 | 测试、实施与结项里程碑评审 | 0.5d | 2022-05-04 08:00 | 2022-05-04 12:00 |  |  | 0.5d | start no earlier than 2022-05-04 08:00 | 张颖菁 | 4h |  |
| 247 | 1.3.2 | **配置管理** | 154d | 2021-10-08 08:00 A | 2022-05-04 18:00 | 1% | 153.04d | 0d |  |  | 1281h | 7.96h |
| 248 | 1.3.2.1 | 创建配置库、分配人员权限 | 154d | 2021-10-08 08:00 A | 2022-05-04 18:00 |  | 153.75d | 0d | finish no earlier than 2022-05-04 18:00 | 徐建斌 | 1232h | 2h |
| 249 | 1.3.2.2 | **需求结束后基线** | 0.12d | 2021-11-25 08:00 | 2021-11-25 09:00 |  |  | 117.88d |  |  | 4h |  |
| 250 | 1.3.2.2.1 | 基线创建申请 | 0.12d | 2021-11-25 08:00 | 2021-11-25 09:00 |  |  | 117.88d | start no earlier than 2021-11-25 08:00 | 徐建斌 | 1h |  |
| 251 | 1.3.2.2.2 | 功能和物理审计 | 0.12d | 2021-11-25 08:00 | 2021-11-25 09:00 |  |  | 117.88d | finish no earlier than 2021-11-25 09:00 | 徐建斌 | 1h |  |
| 252 | 1.3.2.2.3 | 基线域中创建基线 | 0.12d | 2021-11-25 08:00 | 2021-11-25 09:00 |  |  | 117.88d | start no earlier than 2021-11-25 08:00 | 徐建斌 | 1h |  |
| 253 | 1.3.2.2.4 | 基线发布 | 0.12d | 2021-11-25 08:00 | 2021-11-25 09:00 |  |  | 117.88d | start no earlier than 2021-11-25 08:00 | 徐建斌 | 1h |  |
| 254 | 1.3.2.3 | **设计结束后基线** | 0.12d | 2021-12-23 08:00 | 2021-12-23 09:00 |  |  | 97.88d |  |  | 4h |  |
| 255 | 1.3.2.3.1 | 基线创建申请 | 0.12d | 2021-12-23 08:00 | 2021-12-23 09:00 |  |  | 97.88d | start no earlier than 2021-12-23 08:00 | 徐建斌 | 1h |  |
| 256 | 1.3.2.3.2 | 功能和物理审计 | 0.12d | 2021-12-23 08:00 | 2021-12-23 09:00 |  |  | 97.88d | finish no earlier than 2021-12-23 09:00 | 徐建斌 | 1h |  |
| 257 | 1.3.2.3.3 | 基线域中创建基线 | 0.12d | 2021-12-23 08:00 | 2021-12-23 09:00 |  |  | 97.88d | start no earlier than 2021-12-23 08:00 | 徐建斌 | 1h |  |
| 258 | 1.3.2.3.4 | 基线发布 | 0.12d | 2021-12-23 08:00 | 2021-12-23 09:00 |  |  | 97.88d | start no earlier than 2021-12-23 08:00 | 徐建斌 | 1h |  |
| 259 | 1.3.2.4 | **编码结束后基线** | 0.12d | 2022-02-09 08:00 | 2022-02-09 09:00 |  |  | 61.88d |  |  | 4h |  |
| 260 | 1.3.2.4.1 | 基线创建申请 | 0.12d | 2022-02-09 08:00 | 2022-02-09 09:00 |  |  | 61.88d | start no earlier than 2022-02-09 08:00 | 徐建斌 | 1h |  |
| 261 | 1.3.2.4.2 | 功能和物理审计 | 0.12d | 2022-02-09 08:00 | 2022-02-09 09:00 |  |  | 61.88d | finish no earlier than 2022-02-09 09:00 | 徐建斌 | 1h |  |
| 262 | 1.3.2.4.3 | 基线域中创建基线 | 0.12d | 2022-02-09 08:00 | 2022-02-09 09:00 |  |  | 61.88d | start no earlier than 2022-02-09 08:00 | 徐建斌 | 1h |  |
| 263 | 1.3.2.4.4 | 基线发布 | 0.12d | 2022-02-09 08:00 | 2022-02-09 09:00 |  |  | 61.88d | start no earlier than 2022-02-09 08:00 | 徐建斌 | 1h |  |
| 264 | 1.3.2.5 | **系统测试结束后基线** | 0.12d | 2022-03-24 08:00 A | 2022-03-24 09:00 | 62% | 0.05d | 29.88d |  |  | 4h | 2.48h |
| 265 | 1.3.2.5.1 | 基线创建申请 | 0.12d | 2022-03-24 08:00 A | 2022-03-24 09:00 | 48% | 0.07d | 29.88d | finish no earlier than 2020-07-20 18:00 | 徐建斌 | 1h | 0.48h |
| 266 | 1.3.2.5.2 | 功能和物理审计 | 0.12d | 2022-03-24 08:00 | 2022-03-24 09:00 |  |  | 29.88d | finish no earlier than 2022-03-24 09:00 | 徐建斌 | 1h |  |
| 267 | 1.3.2.5.3 | 基线域中创建基线 | 0.12d | 2022-03-24 08:00 A | 2022-03-24 09:00 A | 100% |  |  | finish no earlier than 2020-07-20 18:00 | 徐建斌 | 1h | 1h |
| 268 | 1.3.2.5.4 | 基线发布 | 0.12d | 2022-03-24 08:00 A | 2022-03-24 09:00 A | 100% |  |  | finish no earlier than 2020-07-20 18:00 | 徐建斌 | 1h | 1h |

| ID | WBS | Task | Duration | Start | Finish | Complete | Remaining | Total slack | Constraint | Resources | Work | Actual work |
| --- | --- | --- | --- | --- | --- | --- | --- | --- | --- | --- | --- | --- |
| 269 | 1.3.2.6 | **产品交付基线** | 0.12d | 2022-04-19 08:00 A | 2022-04-19 09:00 | 87% | 0.02d | 11.88d |  |  | 4h | 3.48h |
| 270 | 1.3.2.6.1 | 基线创建申请 | 0.12d | 2022-04-19 08:00 A | 2022-04-19 09:00 | 48% | 0.07d | 11.88d | finish no earlier than 2020-07-27 18:00 | 徐建斌 | 1h | 0.48h |
| 271 | 1.3.2.6.2 | 功能和物理审计 | 0.12d | 2022-04-19 08:00 A | 2022-04-19 09:00 A | 100% |  |  | finish no earlier than 2022-04-19 09:00 | 徐建斌 | 1h | 1h |
| 272 | 1.3.2.6.3 | 基线域中创建基线 | 0.12d | 2022-04-19 08:00 A | 2022-04-19 09:00 A | 100% |  |  | finish no earlier than 2020-07-27 18:00 | 徐建斌 | 1h | 1h |
| 273 | 1.3.2.6.4 | 基线发布 | 0.12d | 2022-04-19 08:00 A | 2022-04-19 09:00 A | 100% |  |  | finish no earlier than 2020-07-27 18:00 | 徐建斌 | 1h | 1h |
| 274 | 1.3.2.7 | **配置库备份和配置项状态跟踪** | 150.12d | 2021-10-11 16:00 | 2022-05-02 18:00 |  |  | 2d |  |  | 29h |  |
| 275 | 1.3.2.7.1 | 配置库备份和配置项状态跟踪 1 | 0.12d | 2021-10-11 16:00 | 2021-10-11 18:00 |  |  | 152d | finish no earlier than 2021-10-11 18:00 | 徐建斌 | 1h |  |
| 276 | 1.3.2.7.2 | 配置库备份和配置项状态跟踪 2 | 0.12d | 2021-10-18 16:00 | 2021-10-18 18:00 |  |  | 146d | finish no earlier than 2021-10-18 18:00 | 徐建斌 | 1h |  |
| 277 | 1.3.2.7.3 | 配置库备份和配置项状态跟踪 3 | 0.12d | 2021-10-25 16:00 | 2021-10-25 18:00 |  |  | 141d | finish no earlier than 2021-10-25 18:00 | 徐建斌 | 1h |  |
| 278 | 1.3.2.7.4 | 配置库备份和配置项状态跟踪 4 | 0.12d | 2021-11-01 16:00 | 2021-11-01 18:00 |  |  | 136d | finish no earlier than 2021-11-01 18:00 | 徐建斌 | 1h |  |
| 279 | 1.3.2.7.5 | 配置库备份和配置项状态跟踪 5 | 0.12d | 2021-11-08 16:00 | 2021-11-08 18:00 |  |  | 130d | finish no earlier than 2021-11-08 18:00 | 徐建斌 | 1h |  |
| 280 | 1.3.2.7.6 | 配置库备份和配置项状态跟踪 6 | 0.12d | 2021-11-15 16:00 | 2021-11-15 18:00 |  |  | 125d | finish no earlier than 2021-11-15 18:00 | 徐建斌 | 1h |  |
| 281 | 1.3.2.7.7 | 配置库备份和配置项状态跟踪 7 | 0.12d | 2021-11-22 16:00 | 2021-11-22 18:00 |  |  | 120d | finish no earlier than 2021-11-22 18:00 | 徐建斌 | 1h |  |
| 282 | 1.3.2.7.8 | 配置库备份和配置项状态跟踪 8 | 0.12d | 2021-11-29 16:00 | 2021-11-29 18:00 |  |  | 115d | finish no earlier than 2021-11-29 18:00 | 徐建斌 | 1h |  |
| 283 | 1.3.2.7.9 | 配置库备份和配置项状态跟踪 9 | 0.12d | 2021-12-06 16:00 | 2021-12-06 18:00 |  |  | 110d | finish no earlier than 2021-12-06 18:00 | 徐建斌 | 1h |  |
| 284 | 1.3.2.7.10 | 配置库备份和配置项状态跟踪 10 | 0.12d | 2021-12-13 16:00 | 2021-12-13 18:00 |  |  | 105d | finish no earlier than 2021-12-13 18:00 | 徐建斌 | 1h |  |
| 285 | 1.3.2.7.11 | 配置库备份和配置项状态跟踪 11 | 0.12d | 2021-12-20 16:00 | 2021-12-20 18:00 |  |  | 100d | finish no earlier than 2021-12-20 18:00 | 徐建斌 | 1h |  |
| 286 | 1.3.2.7.12 | 配置库备份和配置项状态跟踪 12 | 0.12d | 2021-12-27 16:00 | 2021-12-27 18:00 |  |  | 95d | finish no earlier than 2021-12-27 18:00 | 徐建斌 | 1h |  |
| 287 | 1.3.2.7.13 | 配置库备份和配置项状态跟踪 13 | 0.12d | 2022-01-03 16:00 | 2022-01-03 18:00 |  |  | 90d | finish no earlier than 2022-01-03 18:00 | 徐建斌 | 1h |  |
| 288 | 1.3.2.7.14 | 配置库备份和配置项状态跟踪 14 | 0.12d | 2022-01-17 16:00 | 2022-01-17 18:00 |  |  | 80d | finish no earlier than 2022-01-17 18:00 | 徐建斌 | 1h |  |
| 289 | 1.3.2.7.15 | 配置库备份和配置项状态跟踪 15 | 0.12d | 2022-01-17 16:00 | 2022-01-17 18:00 |  |  | 80d | finish no earlier than 2022-01-17 18:00 | 徐建斌 | 1h |  |
| 290 | 1.3.2.7.16 | 配置库备份和配置项状态跟踪 16 | 0.12d | 2022-01-24 16:00 | 2022-01-24 18:00 |  |  | 74d | finish no earlier than 2022-01-24 18:00 | 徐建斌 | 1h |  |
| 291 | 1.3.2.7.17 | 配置库备份和配置项状态跟踪 17 | 0.12d | 2022-01-31 16:00 | 2022-01-31 18:00 |  |  | 69d | finish no earlier than 2022-01-31 18:00 | 徐建斌 | 1h |  |
| 292 | 1.3.2.7.18 | 配置库备份和配置项状态跟踪 18 | 0.12d | 2022-02-10 16:00 | 2022-02-10 18:00 |  |  | 60d | finish no earlier than 2022-02-10 18:00 | 徐建斌 | 1h |  |
| 293 | 1.3.2.7.19 | 配置库备份和配置项状态跟踪 19 | 0.13d | 2022-02-21 15:57 | 2022-02-21 18:00 |  |  | 52d | finish no earlier than 2022-02-21 18:00 | 徐建斌 [96.2%] | 1h |  |
| 294 | 1.3.2.7.20 | 配置库备份和配置项状态跟踪 20 | 0.13d | 2022-02-28 15:57 | 2022-02-28 18:00 |  |  | 47d | finish no earlier than 2022-02-28 18:00 | 徐建斌 [96.2%] | 1h |  |
| 295 | 1.3.2.7.21 | 配置库备份和配置项状态跟踪 21 | 0.13d | 2022-03-07 15:57 | 2022-03-07 18:00 |  |  | 42d | finish no earlier than 2022-03-07 18:00 | 徐建斌 [96.2%] | 1h |  |
| 296 | 1.3.2.7.22 | 配置库备份和配置项状态跟踪 22 | 0.13d | 2022-03-14 15:57 | 2022-03-14 18:00 |  |  | 37d | finish no earlier than 2022-03-14 18:00 | 徐建斌 [96.2%] | 1h |  |
| 297 | 1.3.2.7.23 | 配置库备份和配置项状态跟踪 23 | 0.13d | 2022-03-21 15:57 | 2022-03-21 18:00 |  |  | 32d | finish no earlier than 2022-03-21 18:00 | 徐建斌 [96.2%] | 1h |  |
| 298 | 1.3.2.7.24 | 配置库备份和配置项状态跟踪 24 | 0.13d | 2022-03-28 15:57 | 2022-03-28 18:00 |  |  | 27d | finish no earlier than 2022-03-28 18:00 | 徐建斌 [96.2%] | 1h |  |
| 299 | 1.3.2.7.25 | 配置库备份和配置项状态跟踪 25 | 0.13d | 2022-04-04 15:57 | 2022-04-04 18:00 |  |  | 22d | finish no earlier than 2022-04-04 18:00 | 徐建斌 [96.2%] | 1h |  |
| 300 | 1.3.2.7.26 | 配置库备份和配置项状态跟踪 26 | 0.13d | 2022-04-11 15:57 | 2022-04-11 18:00 |  |  | 17d | finish no earlier than 2022-04-11 18:00 | 徐建斌 [96.2%] | 1h |  |
| 301 | 1.3.2.7.27 | 配置库备份和配置项状态跟踪 27 | 0.13d | 2022-04-18 15:57 | 2022-04-18 18:00 |  |  | 12d | finish no earlier than 2022-04-18 18:00 | 徐建斌 [96.2%] | 1h |  |
| 302 | 1.3.2.7.28 | 配置库备份和配置项状态跟踪 28 | 0.13d | 2022-04-25 15:57 | 2022-04-25 18:00 |  |  | 7d | finish no earlier than 2022-04-25 18:00 | 徐建斌 [96.2%] | 1h |  |
| 303 | 1.3.2.7.29 | 配置库备份和配置项状态跟踪 29 | 0.13d | 2022-05-02 15:57 | 2022-05-02 18:00 |  |  | 2d | finish no earlier than 2022-05-02 18:00 | 徐建斌 [96.2%] | 1h |  |
