# TRANSFAR-PIPLAN.Draft

Schedule from MS Project, 2021-01-04 to 2022-07-28, status date 2013-03-08.

## Calendars

- 项目日历: Mon-Fri 08:00-12:00, 13:00-17:00; Sat-Sun off. Exceptions (off unless hours are given): 2021-01-23 to 2021-01-24 08:00-12:00, 13:00-17:00, 2021-02-13 to 2021-02-14 08:00-12:00, 13:00-17:00, 2021-02-20 08:00-12:00, 13:00-17:00, 2021-02-27 to 2021-02-28 08:00-12:00, 13:00-17:00, 2021-03-13 08:00-12:00, 13:00-17:00, 2021-03-27 to 2021-03-28 08:00-12:00, 13:00-17:00, 2021-04-03 08:00-12:00, 13:00-17:00, 2021-04-10 08:00-12:00, 13:00-17:00, 2021-04-17 to 2021-04-18 08:00-12:00, 13:00-17:00, 2021-05-01 08:00-12:00, 13:00-17:00, 2021-05-15 08:00-12:00, 13:00-17:00, 2021-05-22 to 2021-05-23 08:00-12:00, 13:00-17:00, 2021-06-05 08:00-12:00, 13:00-17:00, 2021-07-31 to 2021-08-01 08:00-12:00, 13:00-17:00, 2021-08-14 08:00-12:00, 13:00-17:00, 2021-08-28 to 2021-08-29 08:00-12:00, 13:00-17:00, 2021-09-11 08:00-12:00, 13:00-17:00, 2021-09-25 to 2021-09-26 08:00-12:00, 13:00-17:00, 2021-10-09 08:00-12:00, 13:00-17:00, 2021-10-23 to 2021-10-24 08:00-12:00, 13:00-17:00, 2021-11-06 08:00-12:00, 13:00-17:00, 2021-12-11 08:00-12:00, 13:00-17:00, 2022-01-08 08:00-12:00, 13:00-17:00, 2022-01-15 to 2022-01-16 08:00-12:00, 13:00-17:00, 2022-02-19 08:00-12:00, 13:00-17:00, 2022-03-12 to 2022-03-13 08:00-12:00, 13:00-17:00, 2022-05-01 08:00-12:00, 13:00-17:00.

## Resources

| Resource | Rate |
| --- | --- |
| 咨询师 | 1 |
| 主任评估师 | 1 |
| EPG | 7 |
| 相关项目组 | 5 |
| 软件测试组 | 2 |
| ATMs | 2 |

## Schedule

| ID | WBS | Task | Type | Duration | Start | Finish | Predecessors | Total slack | Free slack | Constraint | Resources | Work | Cost |
| --- | --- | --- | --- | --- | --- | --- | --- | --- | --- | --- | --- | --- | --- |
| 1 | 1 | **CMMI3过程改进项目** |  | 447.12d? | 2021-01-04 | 2022-07-28 |  | 0d |  |  |  | 2683.5h | 11,038.5 |
| 2 | 1.1 | 咨询公司选型阶段 |  | 15d | 2021-01-04 | 2021-01-22 |  | 280.88d | 0d | start no earlier than 2021-01-04 | EPG | 120h | 840 |
| 3 | 1.1 | **项目启动阶段** |  | 20.12d | 2021-01-23 | 2021-02-15 |  |  |  |  |  | 100h | 260.6 |
| 4 | 1.1.11 | 项目启动会议 |  | 3d | 2021-01-23 | 2021-01-25 | 2 | 280.88d | 3d | start no earlier than 2021-01-22 | EPG; 咨询师 | 16h | 69.6 |
| 5 | 1.1.22 | **过程访谈** |  | 5.12d | 2021-01-24 | 2021-01-28 |  |  |  |  |  | 28h | 31 |
| 6 | 1.2.2.1 | 高层经理访谈 |  | 0.5d | 2021-01-24 | 2021-01-24 |  | 277.88d | 0d | start no earlier than 2021-01-24 |  |  |  |
| 7 | 1.2.2.2 | CMMI项目负责人、研发负责人访谈 |  | 1.5d | 2021-01-24 | 2021-01-25 | 6 | 277.88d | 0d | start no earlier than 2021-01-24 | 咨询师 | 4h | 6 |
| 8 | 1.2.2.3 | 研发人员访谈 |  | 1d | 2021-01-26 | 2021-01-26 | 7 | 277.88d | 0d | start no earlier than 2021-01-26 | 咨询师 | 8h | 10 |
| 9 | 1.2.2.4 | 测试人员访谈 |  | 1d | 2021-01-27 | 2021-01-27 | 8 | 277.88d | 0d | start no earlier than 2016-07-15 | 咨询师 | 8h | 4 |
| 10 | 1.2.2.5 | 人力资源部门访谈 |  | 0.5d | 2021-01-28 | 2021-01-28 | 9 | 277.88d | 0d | start no earlier than 2016-07-16 | 咨询师 | 4h | 6 |
| 11 | 1.2.2.6 | 其他相关部门访谈 |  | 0.5d | 2021-01-28 | 2021-01-28 | 10 | 277.88d | 0d | start no earlier than 2016-07-17 | 咨询师 | 4h | 5 |
| 12 | 1.1.33 | **过程改进计划制定** |  | 10.12d | 2021-01-29 | 2021-02-11 | 4 |  |  |  |  | 56h | 160 |
| 13 | 1.1.33.2 | 项目差距分析 |  | 2d | 2021-01-29 | 2021-02-01 | 11 | 277.88d | 0d | start no earlier than 2016-07-17 | 咨询师 | 16h | 20 |
| 14 | 1.1.33.9 | EPG组建及制定EPG章程 |  | 3d | 2021-02-02 | 2021-02-04 | 13 | 277.88d | 0d | start no earlier than 2016-07-21 | 咨询师 | 24h | 24 |
| 15 | 1.1.33.3 | 过程改进计划制定 |  | 5d | 2021-02-05 | 2021-02-11 | 14 | 279.88d | 0d | start no earlier than 2016-07-24 | EPG [40%] | 16h | 116 |
| 16 | 1.1.3 | 项目启动结束 | milestone | 0d | 2021-02-12 | 2021-02-12 | 15 | 279.88d | 1d | start no earlier than 2021-02-12 |  |  |  |
| 17 | 1.2 | **过程域培训阶段** |  | 14.12d | 2021-02-13 | 2021-02-27 |  |  |  |  |  | 96h | 386.4 |
| 18 | 1.2.9 | **CMMI3过程域知识培训** |  | 14d | 2021-02-13 | 2021-02-27 | 16 | 396d |  |  |  | 96h | 386.4 |
| 19 | 1.2.9.1 | CMMI Overview Training |  | 3d | 2021-02-13 | 2021-02-15 | 2 | 278.88d | 0d | start no earlier than 2016-07-31 | EPG; 咨询师 | 16h | 66.4 |
| 20 | 1.2.9.2 | 组织过程域培训[OPD&OPF&OT&GOV&II] |  | 3d | 2021-02-16 | 2021-02-18 | 19 | 278.88d | 0d | finish no earlier than 2021-02-14 | EPG; 咨询师 | 16h | 64 |
| 21 | 1.2.9.3 | 工程过程域培训(RDM&TS&PI&VV&PR) |  | 3d | 2021-02-19 | 2021-02-22 | 20 | 278.88d | 0d | start no earlier than 2016-08-04 | EPG; 咨询师 | 32h | 128 |
| 22 | 1.2.9.4 | 项目管理域培训[PLAN&EST&MC&RSK&MPM&DAR&CAR] |  | 3d | 2021-02-23 | 2021-02-25 | 21 | 278.88d | 0d | start no earlier than 2016-08-06 | EPG; 咨询师 | 32h | 128 |
| 23 | 1.2.9.5 | 支持过程域培训[PQA&CM] |  | 2d | 2021-02-26 | 2021-02-27 | 22 | 278.88d | 0d | start no earlier than 2021-02-20 |  |  |  |
| 24 | 1.2.10 | 过程培训结束 | milestone | 0d | 2021-02-27 | 2021-02-27 | 23 | 278.88d | 0d | start no earlier than 2016-08-12 |  |  |  |

Notes:
- 4: 参加人员及会议情况参见会议记录。

| ID | WBS | Task | Type | Duration | Start | Finish | Predecessors | Total slack | Free slack | Constraint | Resources | Work | Cost |
| --- | --- | --- | --- | --- | --- | --- | --- | --- | --- | --- | --- | --- | --- |
| 25 | 1.3 | **过程定义阶段** |  | 81d? | 2021-02-28 | 2021-06-03 |  |  |  |  |  | 414h | 2,713 |
| 26 | 1.4.1 | **过程定义** |  | 64.12d? | 2021-02-28 | 2021-05-14 |  |  |  |  |  | 356h | 2,538 |
| 27 | 1.4.1.1 | **组织管理过程定义** |  | 5.12d? | 2021-02-28 | 2021-03-04 |  |  |  |  |  | 33h | 231 |
| 28 | 1.4.1.1.1 | 组织过程管理 [PAD&PCM] | manual | 2.12d | 2021-02-28 | 2021-03-01 | 24 |  |  | start no earlier than 2021-02-28 | EPG | 17h | 119 |
| 29 | 1.4.1.1.2 | 组织培训 [OT] |  | 2d | 2021-03-02 | 2021-03-03 | 28 | 279d | 0d |  | EPG | 16h | 112 |
| 30 | 1.4.1.1.3 | 治理和实施设施[GOV&II] |  | 1d? | 2021-03-04 | 2021-03-04 | 29 | 279d |  | start no earlier than 2021-02-27 |  |  |  |
| 31 | 1.4.1.2 | **工程过程定义** |  | 14d | 2021-03-05 | 2021-03-23 |  |  |  |  |  | 106h | 740 |
| 32 | 1.4.1.2.1 | 需求开发与管理[RDM] | manual | 5.12d | 2021-03-05 | 2021-03-12 |  |  |  | start no earlier than 2021-03-05 | EPG | 41h | 295 |
| 33 | 1.4.1.2.2 | 技术解决方案[TS] | manual | 2.12d | 2021-03-13 | 2021-03-14 |  |  |  | start no earlier than 2021-03-13 | EPG | 17h | 119 |
| 34 | 1.4.1.2.3 | 产品集成[PI] |  | 2d | 2021-03-15 | 2021-03-16 | 33 | 43d | 0d |  | EPG | 16h | 114 |
| 35 | 1.4.1.2.4 | 验证和确认[VV] |  | 2d | 2021-03-17 | 2021-03-18 | 34 | 43d | 0d |  | EPG | 16h | 96 |
| 36 | 1.4.1.2.5 | 同行评审[PR] |  | 3d | 2021-03-19 | 2021-03-23 | 35 | 43d |  | finish no earlier than 2021-03-15 | EPG | 16h | 116 |
| 37 | 1.4.1.3 | **项目管理过程定义** |  | 15.12d | 2021-03-24 | 2021-04-08 |  |  |  |  |  | 48h | 360 |
| 38 | 1.4.1.3.1 | 项目计划和估算[PLAN&EST] |  | 4d | 2021-03-24 | 2021-03-29 |  | 259d |  | start no earlier than 2021-03-24 | EPG | 32h | 240 |
| 39 | 1.4.1.3.2 | 项目监控[MC] |  | 4d | 2021-03-30 | 2021-04-02 | 31FS+2d | 255d |  | start no earlier than 2021-03-30 | EPG | 16h | 120 |
| 40 | 1.4.1.3.3 | 风险管理[RSK] | milestone | 0d | 2021-04-04 | 2021-04-04 | 31FS+2d | 359.12d | 0d | finish no earlier than 2021-04-04 | EPG |  |  |
| 41 | 1.4.1.3.4 | 管理性能和度量 [MPM] |  | 2d | 2021-04-05 | 2021-04-06 | 40 | 242d | 0d | start no earlier than 2021-03-27 |  |  |  |
| 42 | 1.4.1.3.5 | 决策原因分析与解决方案 [DAR&CAR] |  | 2d | 2021-04-07 | 2021-04-08 | 41 | 242d |  |  |  |  |  |
| 43 | 1.4.1.4 | **支持过程定义** |  | 6.12d | 2021-04-09 | 2021-04-15 | 37FS+5d |  |  |  |  | 32h | 224 |
| 44 | 1.4.1.4.1 | 质量保证 [PQA] |  | 3d | 2021-04-09 | 2021-04-12 |  | 247d |  | start no earlier than 2021-04-09 | EPG | 16h | 104 |
| 45 | 1.4.1.4.2 | 配置管理 [CM] |  | 3d | 2021-04-13 | 2021-04-15 |  | 244d |  | start no earlier than 2021-04-13 | EPG | 16h | 120 |
| 46 | 1.4.1.5 | **组织资产** |  | 24.12d | 2021-04-16 | 2021-05-14 | 43FS+3d |  |  |  |  | 137h | 983 |
| 47 | 1.4.1.5.1 | 组织方针政策 |  | 1d | 2021-04-16 | 2021-04-16 | 43 | 238d | 5d | start no earlier than 2016-10-08 | EPG | 8h | 56 |
| 48 | 1.4.1.5.2 | 软件生命周期说明 |  | 3d | 2021-04-17 | 2021-04-19 | 43 | 235d | 7d | start no earlier than 2021-04-17 | EPG | 8h | 56 |
| 49 | 1.4.1.5.3 | 裁剪指南 |  | 2d | 2021-04-20 | 2021-04-21 | 43 | 228.88d | 10d | start no earlier than 2021-04-20 | EPG | 8h | 64 |
| 50 | 1.4.1.5.4 | 工作环境指南 |  | 3d | 2021-04-22 | 2021-04-26 | 47 | 233d | 0d | start no earlier than 2021-04-22 | EPG | 8h | 48 |
| 51 | 1.4.1.5.5 | 团队建立指南 |  | 2d | 2021-04-27 | 2021-04-28 | 50 | 233d |  | start no earlier than 2021-04-10 | EPG | 8h | 56 |
| 52 | 1.4.1.5.6 | 组织度量库 |  | 2d | 2021-04-29 | 2021-04-30 | 48 | 228d | 0d | start no earlier than 2021-04-29 | EPG | 16h | 112 |
| 53 | 1.4.1.5.7 | 风险列表库 |  | 3d | 2021-05-01 | 2021-05-04 | 52 | 228d |  | start no earlier than 2016-10-22 | EPG | 16h | 112 |
| 54 | 1.4.1.5.8 | 经验教训库 | manual | 4.12d | 2021-05-05 | 2021-05-09 | 49 |  |  | start no earlier than 2021-05-05 | EPG | 33h | 231 |
| 55 | 1.4.1.5.9 | 培训数据库 |  | 4d | 2021-05-10 | 2021-05-13 | 54 | 220d | 0d | start no earlier than 2016-10-22 | EPG | 24h | 168 |
| 56 | 1.4.1.5.10 | 其它 |  | 1d | 2021-05-14 | 2021-05-14 | 55 | 220d |  | start no earlier than 2016-10-29 | EPG | 8h | 80 |

| ID | WBS | Task | Type | Duration | Start | Finish | Predecessors | Total slack | Free slack | Constraint | Resources | Work | Cost |
| --- | --- | --- | --- | --- | --- | --- | --- | --- | --- | --- | --- | --- | --- |
| 57 | 1.4.2 | **过程定义文档审核与指导（外部）** |  | 4.12d | 2021-05-15 | 2021-05-20 |  |  |  |  |  | 34h | 34 |
| 58 | 1.4.2.1 | CMMI-ML3级文档体系编制与评审指导(一) | manual | 2.12d | 2021-05-15 | 2021-05-16 | 36FS+2d |  |  | start no earlier than 2021-05-15 | 咨询师 | 17h | 17 |
| 59 | 1.4.2.2 | CMMI-ML3级文档体系编制与评审指导（二） | manual | 2.12d | 2021-05-17 | 2021-05-19 | 58 |  |  | start no earlier than 2021-05-17 | 咨询师 | 17h | 17 |
| 60 | 1.4.3 | **过程定义文档评审与审批（内部）** |  | 2d | 2021-05-20 | 2021-05-21 | 59FS+2d |  |  |  |  | 24h | 141 |
| 61 | 1.4.3.1 | 组织管理过程评审 |  | 0.5d | 2021-05-20 | 2021-05-20 |  | -14d | 0d | start no earlier than 2021-05-20 | EPG | 4h | 21 |
| 62 | 1.4.3.2 | 工程过程评审 |  | 0.5d | 2021-05-20 | 2021-05-20 | 61 | -14d | 0d | start no earlier than 2016-11-16 | EPG | 4h | 49 |
| 63 | 1.4.3.3 | 项目管理过程评审 |  | 0.5d | 2021-05-21 | 2021-05-21 | 62 | -14d | 0d | start no earlier than 2016-11-16 | 咨询师; EPG | 8h | 32 |
| 64 | 1.4.3.4 | 支持过程评审 |  | 0.5d | 2021-05-21 | 2021-05-21 | 63 | -14d | 0d | start no earlier than 2016-11-17 | 咨询师; EPG | 8h | 39 |
| 65 | 1.4.4 | 文档形成OSSPv1.0基线，过程定义结束 | milestone | 0d | 2021-05-21 | 2021-05-21 | 64 | -14d | 0d | start no earlier than 2016-11-17 | EPG |  |  |
| 66 | 1.5 | **过程试点与推广阶段** |  | 268.12d | 2021-05-22 | 2022-05-01 |  |  |  |  |  | 1648h | 5,854 |
| 67 | 1.5.1 | **OSSP文档培训** |  | 16.12d | 2021-05-22 | 2021-06-10 | 65FS+1d |  |  |  |  | 105h | 735 |
| 68 | 1.5.1.1 | 过程培训准备 |  | 6d | 2021-05-22 | 2021-05-27 | 65 | 0d |  | start no earlier than 2021-05-22 | EPG | 32h | 224 |
| 69 | 1.5.1.2 | 组织管理过程培训 |  | 3d | 2021-05-28 | 2021-06-01 | 68 | 0d |  | start no earlier than 2016-11-20 | EPG | 24h | 168 |
| 70 | 1.5.1.3 | 项目管理过程培训 |  | 3d | 2021-06-02 | 2021-06-04 | 69 | 0d |  | start no earlier than 2016-11-20 | EPG | 24h | 168 |
| 71 | 1.5.1.4 | 工程过程培训 | manual | 2.12d | 2021-06-05 | 2021-06-06 | 70 |  |  | start no earlier than 2021-06-05 | EPG | 17h | 119 |
| 72 | 1.5.1.5 | 支持过程培训 |  | 1d | 2021-06-07 | 2021-06-07 | 71 | -26d | 0d | start no earlier than 2016-11-23 | EPG | 8h | 56 |
| 73 | 1.5.1.6 | OSSP文档培训结束，发布OSSP |  | 1d | 2021-06-08 | 2021-06-08 | 72 | -26d | 0d | start no earlier than 2021-05-23 |  |  |  |
| 74 | 1.5.2 | **过程试点与推广** |  | 218.12d | 2021-06-09 | 2022-03-14 | 73 |  |  |  |  | 1343h | 3,719 |
| 75 | 1.5.2.1 | **试点项目实施** |  | 58.12d | 2021-06-09 | 2021-08-24 |  |  |  |  |  | 591h | 2,955 |
| 76 | 1.5.2.1.1 | 试点项目1 |  | 58d | 2021-06-09 | 2021-08-24 |  | 203d |  | start no earlier than 2021-06-09 | 相关项目组 | 124h | 620 |
| 77 | 1.5.2.1.2 | 试点项目2 |  | 65.88d | 2021-05-10 | 2021-08-01 |  | 159.12d |  | start no earlier than 2021-05-10 | 相关项目组 | 467h | 2,335 |
| 78 | 1.5.2.2 | **试点项目实施指导** |  | 160.12d | 2021-08-25 | 2022-03-14 |  |  |  |  |  | 752h | 764 |
| 79 | 1.5.2.2.1 | 试点项目实施指导（一） |  | 35d | 2021-08-25 | 2021-10-05 |  | 17d | 0d | start no earlier than 2021-08-25 | 咨询师 | 240h | 240 |
| 80 | 1.5.2.2.2 | 试点项目实施指导（二） |  | 34d | 2021-10-06 | 2021-11-16 | 79 | 17d | 16d | start no earlier than 2021-10-06 | 咨询师 | 176h | 180 |
| 81 | 1.5.2.2.3 | 试点项目实施指导（三） |  | 37d | 2021-12-09 | 2022-01-24 | 80 | 17d | 0d | finish no earlier than 2022-01-24 | 咨询师 | 168h | 172 |
| 82 | 1.5.2.2.4 | 试点项目实施指导（四） |  | 36d | 2022-01-25 | 2022-03-12 | 81 | 17d | 0d | finish no earlier than 2022-03-12 | 咨询师 | 160h | 160 |
| 83 | 1.5.2.2.5 | 试点阶段总结及体系优化指导 |  | 2d | 2022-03-13 | 2022-03-14 | 82 | 17d | 0d | start no earlier than 2022-03-13 | 咨询师 | 8h | 12 |
| 84 | 1.5.3 | 过程试点与推广结束 |  | 33d | 2022-03-15 | 2022-04-28 | 83 | 17d |  | finish no earlier than 2022-04-28 | EPG | 200h | 1,400 |

Notes:
- 67: 培训主管负责过程培训的计划与组织；包括：培训老师、受训人员的召集；培训地点的安排等相关事宜。
- 69: 培训老师提供相关内容： / 1、培训内容 / 2、培训时间 / 3、培训考核
- 70: 培训老师提供相关内容： / 1、培训内容 / 2、培训时间 / 3、培训考核
- 71: 培训老师提供相关内容： / 1、培训内容 / 2、培训时间 / 3、培训考核
- 72: 培训老师提供相关内容： / 1、培训内容 / 2、培训时间 / 3、培训考核

| ID | WBS | Task | Type | Duration | Start | Finish | Predecessors | Total slack | Free slack | Constraint | Resources | Work | Cost |
| --- | --- | --- | --- | --- | --- | --- | --- | --- | --- | --- | --- | --- | --- |
| 85 | 1.6 | **预评估阶段** |  | 4.12d | 2022-05-23 | 2022-05-27 | 84 | 0d |  |  | EPG; 咨询师 | 142.5h | 559.5 |
| 86 | 1.6.1 | 预评估准备 | manual | 1d | 2022-05-23 | 2022-05-23 |  |  |  | start no earlier than 2022-05-23 | 咨询师; EPG; ATMs [50%]; 软件测试组 [50%]; 相关项目组 [50%] | 26.5h | 95.5 |
| 87 | 1.6.2 | 现场预评估与报告 | manual | 3.12d | 2022-05-24 | 2022-05-27 | 86 |  |  | start no earlier than 2022-05-24 | 咨询师; EPG | 50h | 200 |
| 88 | 1.7 | **正式评估阶段** |  | 4.12d | 2022-07-22 | 2022-07-28 | 85 | -1d | 0d |  | EPG; ATMs; 主任评估师 | 163h | 425 |
| 89 | 1.7.1 | SCAMPI方法培训 |  | 1d | 2022-07-22 | 2022-07-22 |  | -1d | 0d | start no earlier than 2022-07-22 | 主任评估师 |  |  |
| 90 | 1.7.2 | Onsite 评估 | manual | 4.12d | 2022-07-22 | 2022-07-28 | 89 |  |  | start no earlier than 2022-07-22 | 主任评估师; ATMs | 65h | 97 |
