# 模板_项目WBS

Schedule from MS Project, 2007-04-10 to 2007-08-10, status date 2006-06-15.
南瑞继保

## Calendars

- 标准: Mon-Fri 08:00-12:00, 13:00-17:00; Sat-Sun off.
- 科创日历: Mon-Fri 08:00-12:00, 13:00-17:00; Sat-Sun off. Exceptions (off unless hours are given): 2007-04-01 to 2007-04-30 08:00-12:00, 13:30-17:30, 2007-05-01 to 2007-09-30 08:00-12:00, 14:00-18:00.

## Resources

| Resource | Group | Rate |
| --- | --- | --- |
| PM | 管理 | 1 |
| SM |  | 1 |
| QA | 质保 | 1 |
| CM | 配置 | 1 |
| 需求人员1 | 需求 | 1 |
| 设计人员1 | 设计 | 1 |
| 编码人员1 | 编码 | 1 |
| 测试人员1 | 测试 | 1 |
| 维护人员1 | 维护 | 1 |
| CCB |  | 1 |

## Schedule

| ID | WBS | Task | Type | Duration | Start | Finish | Predecessors | Baseline start | Baseline finish | Baseline duration | Total slack | Free slack | Constraint | Baseline cost | Text1 |
| --- | --- | --- | --- | --- | --- | --- | --- | --- | --- | --- | --- | --- | --- | --- | --- |
| 1 | 1 | **项目名称** |  | 88.17d? | 2007-04-10 08:00 | 2007-08-10 09:20 |  |  |  |  | 0d |  |  |  |  |
| 2 | 1.1 | **项目管理** |  | 88.17d? | 2007-04-10 08:00 | 2007-08-10 09:20 |  |  |  |  | 0d |  |  |  |  |
| 3 | 1.1.1 | **项目启动** |  | 0d? | 2007-04-10 08:00 | 2007-04-10 08:00 |  |  |  |  | 85.17d | 0d |  |  |  |
| 4 | 1.1.1.1 | 立项审批 | milestone | 0d? | 2007-04-10 08:00 | 2007-04-10 08:00 |  |  |  |  | 85.17d |  |  |  | 《项目开发立项书》 |
| 5 | 1.1.1.2 | 项目启动会议 | milestone | 0d? | 2007-04-10 08:00 | 2007-04-10 08:00 |  | 2006-06-14 08:00 | 2006-06-14 17:00 | 1d? | 85.17d |  |  | 8 | 《项目启动会议记录》 |
| 6 | 1.1.2 | **项目计划** |  | 3d? | 2007-04-10 08:00 | 2007-04-12 17:00 | 3 |  |  |  | 85.17d |  |  |  |  |
| 7 | 1.1.2.1 | **初步计划** |  | 3d? | 2007-04-10 08:00 | 2007-04-12 17:00 |  |  |  |  | 85.17d |  |  |  |  |
| 8 | 1.1.2.1.1 | 初步裁剪 |  | 1d? | 2007-04-10 08:00 | 2007-04-10 18:00 |  | 2006-06-14 08:00 | 2006-06-14 17:00 | 1d? | 87.17d |  | finish no earlier than 2007-04-10 18:00 |  | 《PDP说明》初稿 |
| 9 | 1.1.2.1.2 | 初步估算（规模和工作量） |  | 1d? | 2007-04-10 08:00 | 2007-04-10 17:00 |  |  |  |  | 87.17d |  |  |  | 项目估算初稿 |
| 10 | 1.1.2.1.3 | **制定项目初步计划及下属子计划** |  | 2d? | 2007-04-10 08:00 | 2007-04-11 17:00 |  | 2006-06-14 08:00 | 2006-06-14 17:00 | 1d? | 85.17d |  |  |  |  |
| 11 | 1.1.2.1.3.1 | 制定初步的《项目计划》 |  | 1d? | 2007-04-10 08:00 | 2007-04-10 17:00 |  |  |  |  | 86.17d | 1d |  |  | 《项目计划》初稿 |
| 12 | 1.1.2.1.3.2 | 制定初步的《质量保证计划》 |  | 1d? | 2007-04-10 08:00 | 2007-04-10 17:00 |  | 2006-06-14 08:00 | 2006-06-14 17:00 | 1d? | 85.17d | 0d |  |  | 《质量保证计划》初稿 |
| 13 | 1.1.2.1.3.3 | 制定初步的《配置管理计划》 |  | 1d? | 2007-04-11 08:00 | 2007-04-11 17:00 | 12 | 2006-06-14 08:00 | 2006-06-14 17:00 | 1d? | 85.17d | 0d |  |  | 《配置管理计划》初稿 |
| 14 | 1.1.2.1.3.4 | 制定初步的《项目进度表》 |  | 1d? | 2007-04-10 08:00 | 2007-04-10 17:00 |  |  |  |  | 87.17d |  |  |  | 《项目进度表》初稿 |
| 15 | 1.1.2.1.4 | 初步项目计划及下属子计划审批 |  | 1d? | 2007-04-12 08:00 | 2007-04-12 17:00 | 11, 12, 13 | 2006-06-14 08:00 | 2006-06-14 08:00 | 0d | 85.17d |  |  |  | 高级经理审批签字后的项目计划及下属子计划 |
| 16 | 1.1.2.2 | **详细计划** |  | 3d? | 2007-04-10 08:00 | 2007-04-12 17:00 |  | 2006-06-14 08:00 | 2006-06-14 17:00 | 1d? | 85.17d |  |  |  |  |
| 17 | 1.1.2.2.1 | 详细裁剪 |  | 1d? | 2007-04-10 08:00 | 2007-04-10 17:00 |  |  |  |  | 87.17d |  |  |  | 《PDP说明》终稿 |
| 18 | 1.1.2.2.2 | 详细估算（规模和工作量） |  | 1d? | 2007-04-10 08:00 | 2007-04-10 17:00 |  | 2006-06-14 08:00 | 2006-06-14 17:00 | 1d? | 87.17d |  |  |  | 《项目功能点复杂度估算》、《项目计划》中的“项目估算”内容、《项目估算表单(PERT)》 |
| 19 | 1.1.2.2.3 | **制定详细的《项目计划》及下属子计划** |  | 3d? | 2007-04-10 08:00 | 2007-04-12 17:00 |  | 2006-06-14 08:00 | 2006-06-14 17:00 | 1d? | 85.17d |  |  |  |  |
| 20 | 1.1.2.2.3.1 | 更新《项目计划》 |  | 1d? | 2007-04-10 08:00 | 2007-04-10 17:00 |  |  |  |  | 85.17d | 0d |  |  | 《项目计划》终稿 |
| 21 | 1.1.2.2.3.2 | 更新《配置管理计划》 |  | 1d? | 2007-04-11 08:00 | 2007-04-11 17:00 | 20 | 2006-06-14 08:00 | 2006-06-14 17:00 | 1d? | 85.17d | 0d | start no earlier than 2007-04-10 08:00 |  | 《配置管理计划》终稿 |
| 22 | 1.1.2.2.3.3 | 更新《质量保证计划》 |  | 1d? | 2007-04-12 08:00 | 2007-04-12 17:00 | 21 | 2006-06-14 08:00 | 2006-06-14 17:00 | 1d? | 85.17d |  | start no earlier than 2007-04-10 08:00 |  | 《QA计划》终稿 |
| 23 | 1.1.2.2.3.4 | 更新《项目进度表》 |  | 1d? | 2007-04-10 08:00 | 2007-04-10 17:00 |  | 2006-06-14 08:00 | 2006-06-14 17:00 | 1d? | 85.17d | 0d |  |  | 《项目进度表》终稿 |
| 24 | 1.1.2.2.4 | **《项目计划》及下属子计划评审(正式评审)** |  | 2d? | 2007-04-11 08:00 | 2007-04-12 17:00 |  |  |  |  | 85.17d |  |  |  |  |
| 25 | 1.1.2.2.4.1 | 准备评审 |  | 0.25d? | 2007-04-11 08:00 | 2007-04-11 10:00 | 23 | 2006-06-14 08:00 | 2006-06-14 17:00 | 1d? | 85.17d | 0d |  | 8 | 《项目计划评审准备表》 |
| 26 | 1.1.2.2.4.2 | 举行评审会议 |  | 0.25d? | 2007-04-11 10:00 | 2007-04-11 12:00 | 25 | 2006-06-14 08:00 | 2006-06-14 17:00 | 1d? | 85.17d | 0d |  | 8 | 《项目计划评审报告》《项目计划评审会议记录》 |

| ID | WBS | Task | Duration | Start | Finish | Predecessors | Baseline start | Baseline finish | Baseline duration | Total slack | Free slack | Constraint | Calendar | Text1 |
| --- | --- | --- | --- | --- | --- | --- | --- | --- | --- | --- | --- | --- | --- | --- |
| 27 | 1.1.2.2.4.3 | **修正、跟踪与审核** | 1.5d? | 2007-04-11 13:00 | 2007-04-12 17:00 |  | 2006-06-14 08:00 | 2006-06-14 17:00 | 1d? | 85.17d |  |  |  |  |
| 28 | 1.1.2.2.4.3.1 | 修正工作产品 | 0.5d? | 2007-04-11 13:00 | 2007-04-11 17:00 | 26 |  |  |  | 85.17d | 0d |  |  | 修正后的工作产品：《项目计划》及下属子计划 |
| 29 | 1.1.2.2.4.3.2 | 修改后的工作产品的确认 | 1d? | 2007-04-12 08:00 | 2007-04-12 17:00 | 28 |  |  |  | 85.17d |  |  |  | 《项目变更记录》 |
| 30 | 1.1.3 | **执行与控制** | 1d? | 2007-04-10 08:00 | 2007-04-10 17:00 |  |  |  |  | 87.17d |  |  |  |  |
| 31 | 1.1.3.1 | **项目周报（个人）** | 1d? | 2007-04-10 08:00 | 2007-04-10 17:00 |  |  |  |  | 87.17d |  |  |  | 《个人周报》、《项目周报》 |
| 32 | 1.1.3.1.1 | 项目周报1 | 1d? | 2007-04-10 08:00 | 2007-04-10 17:00 |  |  |  |  | 87.17d |  |  |  |  |
| 33 | 1.1.3.1.2 | 项目周报2 | 1d? | 2007-04-10 08:00 | 2007-04-10 17:00 |  |  |  |  | 87.17d |  |  |  |  |
| 34 | 1.1.3.1.3 | 项目周报3 | 1d? | 2007-04-10 08:00 | 2007-04-10 17:00 |  |  |  |  | 87.17d |  |  |  |  |
| 35 | 1.1.3.1.4 | 项目周报n | 1d? | 2007-04-10 08:00 | 2007-04-10 17:00 |  |  |  |  | 87.17d |  |  |  |  |
| 36 | 1.1.3.2 | **周例会** | 0.28d? | 2007-04-10 08:00 | 2007-04-10 10:14 |  |  |  |  | 121.76d |  |  | 科创日历 | 《项目周例会记录》 |
| 37 | 1.1.3.2.1 | 周例会 1 | 0.28d? | 2007-04-10 08:00 | 2007-04-10 10:14 |  |  |  |  | 121.89d |  | start no earlier than 2007-04-10 08:00 | 科创日历 |  |
| 38 | 1.1.3.2.2 | 周例会 2 | 0.28d? | 2007-04-10 08:00 | 2007-04-10 10:14 |  |  |  |  | 121.89d |  | start no earlier than 2007-04-10 08:00 | 科创日历 |  |
| 39 | 1.1.3.2.3 | 周例会 3 | 0.28d? | 2007-04-10 08:00 | 2007-04-10 10:14 |  |  |  |  | 121.89d |  | start no earlier than 2007-04-10 08:00 | 科创日历 |  |
| 40 | 1.1.3.2.4 | 周例会 n | 0.28d? | 2007-04-10 08:00 | 2007-04-10 10:14 |  |  |  |  | 87.89d |  | start no earlier than 2007-04-10 08:00 |  |  |
| 41 | 1.1.3.3 | **里程碑评审(正式评审)** | 0.75d? | 2007-04-10 08:00 | 2007-04-10 15:00 |  | 2006-06-14 08:00 | 2006-06-14 17:00 | 1d? | 87.42d |  |  |  |  |
| 42 | 1.1.3.3.1 | **需求开发里程碑评审** | 0.75d? | 2007-04-10 08:00 | 2007-04-10 15:00 |  |  |  |  | 87.42d |  |  |  |  |
| 43 | 1.1.3.3.1.1 | 评审准备 | 0.25d? | 2007-04-10 08:00 | 2007-04-10 10:00 |  | 2006-06-14 08:00 | 2006-06-14 17:00 | 1d? | 87.42d | 0d |  |  |  |
| 44 | 1.1.3.3.1.2 | 执行评审 | 0.25d? | 2007-04-10 10:00 | 2007-04-10 12:00 | 43 | 2006-06-14 08:00 | 2006-06-14 17:00 | 1d? | 87.42d | 0d |  |  |  |
| 45 | 1.1.3.3.1.3 | 后续工作 | 0.25d? | 2007-04-10 13:00 | 2007-04-10 15:00 | 44 | 2006-06-14 08:00 | 2006-06-14 17:00 | 1d? | 87.42d |  |  |  |  |
| 46 | 1.1.3.3.2 | **系统设计里程碑评审** | 0.75d? | 2007-04-10 08:00 | 2007-04-10 15:00 |  |  |  |  | 87.42d |  |  |  |  |
| 47 | 1.1.3.3.2.1 | 评审准备 | 0.25d? | 2007-04-10 08:00 | 2007-04-10 10:00 |  | 2006-06-14 08:00 | 2006-06-14 17:00 | 1d? | 87.42d | 0d |  |  |  |
| 48 | 1.1.3.3.2.2 | 执行评审 | 0.25d? | 2007-04-10 10:00 | 2007-04-10 12:00 | 47 | 2006-06-14 08:00 | 2006-06-14 17:00 | 1d? | 87.42d | 0d |  |  |  |
| 49 | 1.1.3.3.2.3 | 后续工作 | 0.25d? | 2007-04-10 13:00 | 2007-04-10 15:00 | 48 | 2006-06-14 08:00 | 2006-06-14 17:00 | 1d? | 87.42d |  |  |  |  |
| 50 | 1.1.3.3.3 | **编码实现里程碑评审** | 0.75d? | 2007-04-10 08:00 | 2007-04-10 15:00 |  |  |  |  | 87.42d |  |  |  |  |
| 51 | 1.1.3.3.3.1 | 评审准备 | 0.25d? | 2007-04-10 08:00 | 2007-04-10 10:00 |  | 2006-06-14 08:00 | 2006-06-14 17:00 | 1d? | 87.42d | 0d |  |  |  |
| 52 | 1.1.3.3.3.2 | 执行评审 | 0.25d? | 2007-04-10 10:00 | 2007-04-10 12:00 | 51 | 2006-06-14 08:00 | 2006-06-14 17:00 | 1d? | 87.42d | 0d |  |  |  |
| 53 | 1.1.3.3.3.3 | 后续工作 | 0.25d? | 2007-04-10 13:00 | 2007-04-10 15:00 | 52 | 2006-06-14 08:00 | 2006-06-14 17:00 | 1d? | 87.42d |  |  |  |  |

| ID | WBS | Task | Duration | Start | Finish | Predecessors | Baseline start | Baseline finish | Baseline duration | Total slack | Free slack | Constraint | Calendar | Text1 |
| --- | --- | --- | --- | --- | --- | --- | --- | --- | --- | --- | --- | --- | --- | --- |
| 54 | 1.1.3.3.4 | **产品集成里程碑评审** | 0.75d? | 2007-04-10 08:00 | 2007-04-10 15:00 |  |  |  |  | 87.42d |  |  |  |  |
| 55 | 1.1.3.3.4.1 | 评审准备 | 0.25d? | 2007-04-10 08:00 | 2007-04-10 10:00 |  | 2006-06-14 08:00 | 2006-06-14 17:00 | 1d? | 87.42d | 0d |  |  |  |
| 56 | 1.1.3.3.4.2 | 执行评审 | 0.25d? | 2007-04-10 10:00 | 2007-04-10 12:00 | 55 | 2006-06-14 08:00 | 2006-06-14 17:00 | 1d? | 87.42d | 0d |  |  |  |
| 57 | 1.1.3.3.4.3 | 后续工作 | 0.25d? | 2007-04-10 13:00 | 2007-04-10 15:00 | 56 | 2006-06-14 08:00 | 2006-06-14 17:00 | 1d? | 87.42d |  |  |  |  |
| 58 | 1.1.3.3.5 | **系统测试里程碑评审** | 0.75d? | 2007-04-10 08:00 | 2007-04-10 15:00 |  |  |  |  | 87.42d |  |  |  |  |
| 59 | 1.1.3.3.5.1 | 评审准备 | 0.25d? | 2007-04-10 08:00 | 2007-04-10 10:00 |  | 2006-06-14 08:00 | 2006-06-14 17:00 | 1d? | 87.42d | 0d |  |  |  |
| 60 | 1.1.3.3.5.2 | 执行评审 | 0.25d? | 2007-04-10 10:00 | 2007-04-10 12:00 | 59 | 2006-06-14 08:00 | 2006-06-14 17:00 | 1d? | 87.42d | 0d |  |  |  |
| 61 | 1.1.3.3.5.3 | 后续工作 | 0.25d? | 2007-04-10 13:00 | 2007-04-10 15:00 | 60 | 2006-06-14 08:00 | 2006-06-14 17:00 | 1d? | 87.42d |  |  |  |  |
| 62 | 1.1.3.3.6 | **产品交付里程碑评审** | 0.75d? | 2007-04-10 08:00 | 2007-04-10 15:00 |  |  |  |  | 87.42d |  |  |  |  |
| 63 | 1.1.3.3.6.1 | 评审准备 | 0.25d? | 2007-04-10 08:00 | 2007-04-10 10:00 |  | 2006-06-14 08:00 | 2006-06-14 17:00 | 1d? | 87.42d | 0d |  |  |  |
| 64 | 1.1.3.3.6.2 | 执行评审 | 0.25d? | 2007-04-10 10:00 | 2007-04-10 12:00 | 63 | 2006-06-14 08:00 | 2006-06-14 17:00 | 1d? | 87.42d | 0d |  |  |  |
| 65 | 1.1.3.3.6.3 | 后续工作 | 0.25d? | 2007-04-10 13:00 | 2007-04-10 15:00 | 64 | 2006-06-14 08:00 | 2006-06-14 17:00 | 1d? | 87.42d |  |  |  |  |
| 66 | 1.1.3.4 | **度量信息维护更新** | 0.28d? | 2007-04-10 08:00 | 2007-04-10 10:14 |  |  |  |  | 121.89d |  |  | 科创日历 | 《项目度量数据库》 |
| 67 | 1.1.3.4.1 | 《项目度量库》数据更新 1（需求开发阶段结束） | 0.28d? | 2007-04-10 08:00 | 2007-04-10 10:14 |  |  |  |  | 121.89d |  | start no earlier than 2007-04-10 08:00 | 科创日历 |  |
| 68 | 1.1.3.4.2 | 《项目度量库》数据更新 2（系统设计阶段结束） | 0.28d? | 2007-04-10 08:00 | 2007-04-10 10:14 |  |  |  |  | 121.89d |  | start no earlier than 2007-04-10 08:00 | 科创日历 |  |
| 69 | 1.1.3.4.3 | 《项目度量库》数据更新 3（编码实现阶段结束） | 0.28d? | 2007-04-10 08:00 | 2007-04-10 10:14 |  |  |  |  | 121.89d |  | start no earlier than 2007-04-10 08:00 | 科创日历 |  |
| 70 | 1.1.3.4.4 | 《项目度量库》数据更新 4（产品集成阶段结束） | 0.28d? | 2007-04-10 08:00 | 2007-04-10 10:14 |  |  |  |  | 121.89d |  | start no earlier than 2007-04-10 08:00 | 科创日历 |  |
| 71 | 1.1.3.4.5 | 《项目度量库》数据更新 5（系统测试阶段结束） | 0.28d? | 2007-04-10 08:00 | 2007-04-10 10:14 |  |  |  |  | 121.89d |  | start no earlier than 2007-04-10 08:00 | 科创日历 |  |
| 72 | 1.1.3.4.6 | 《项目度量库》数据更新 6（产品交付阶段结束） | 0.28d? | 2007-04-10 08:00 | 2007-04-10 10:14 |  |  |  |  | 121.89d |  | start no earlier than 2007-04-10 08:00 | 科创日历 |  |
| 73 | 1.1.3.5 | **风险识别与跟踪** | 1d? | 2007-04-10 08:00 | 2007-04-10 17:00 |  |  |  |  | 87.17d |  |  |  | 《风险管理计划及跟踪表》 |
| 74 | 1.1.3.5.1 | 风险识别与跟踪1（每周） | 1d? | 2007-04-10 08:00 | 2007-04-10 17:00 |  |  |  |  | 87.17d |  |  |  |  |
| 75 | 1.1.3.5.2 | 风险识别与跟踪2（每周） | 1d? | 2007-04-10 08:00 | 2007-04-10 17:00 |  |  |  |  | 87.17d |  |  |  |  |
| 76 | 1.1.3.5.3 | 风险识别与跟踪3（每周） | 1d? | 2007-04-10 08:00 | 2007-04-10 17:00 |  |  |  |  | 87.17d |  |  |  |  |
| 77 | 1.1.3.5.4 | 风险识别与跟踪n（每周） | 1d? | 2007-04-10 08:00 | 2007-04-10 17:00 |  |  |  |  | 87.17d |  |  |  |  |

| ID | WBS | Task | Duration | Start | Finish | Predecessors | Baseline start | Baseline finish | Baseline duration | Total slack | Free slack | Baseline cost | Text1 |
| --- | --- | --- | --- | --- | --- | --- | --- | --- | --- | --- | --- | --- | --- |
| 78 | 1.1.4 | **项目结项** | 7.17d? | 2007-08-01 08:00 | 2007-08-10 09:20 | 216 | 2006-06-14 08:00 | 2006-06-14 17:00 | 1d? | 0d |  |  |  |
| 79 | 1.1.4.1 | **结项准备** | 1.67d? | 2007-08-01 08:00 | 2007-08-02 14:20 |  |  |  |  | 0d |  |  |  |
| 80 | 1.1.4.1.1 | 撰写《结项报告》 | 1d? | 2007-08-01 08:00 | 2007-08-01 17:00 |  | 2006-06-14 08:00 | 2006-06-14 17:00 | 1d? | 0.67d |  |  | 《结项报告》 |
| 81 | 1.1.4.1.2 | 撰写《QA总结报告》 | 1d? | 2007-08-01 08:00 | 2007-08-01 17:00 |  | 2006-06-14 08:00 | 2006-06-14 17:00 | 1d? | 0.67d |  |  | 《QA总结报告》 |
| 82 | 1.1.4.1.3 | 协调、解决报告中的问题 | 1.67d? | 2007-08-01 08:00 | 2007-08-02 14:20 |  |  |  |  | 0d |  |  |  |
| 83 | 1.1.4.2 | 结项申请，高级经理阅读申请材料 | 1d? | 2007-08-02 14:20 | 2007-08-03 14:20 | 79 | 2006-06-14 08:00 | 2006-06-14 17:00 | 1d? | 0d |  |  |  |
| 84 | 1.1.4.3 | **度量分析** | 2d? | 2007-08-03 14:20 | 2007-08-07 14:20 | 83 |  |  |  | 0d |  |  |  |
| 85 | 1.1.4.3.1 | 项目结项阶段度量数据收集整理 | 1d? | 2007-08-03 14:20 | 2007-08-06 14:20 | 83 |  |  |  | 1d |  |  |  |
| 86 | 1.1.4.3.2 | 更新《项目度量数据库》 | 2d? | 2007-08-03 14:20 | 2007-08-07 14:20 | 83 |  |  |  | 0d |  |  | 《项目度量数据库》 |
| 87 | 1.1.4.4 | **召开结项评审会议(正式评审)** | 1d? | 2007-08-07 14:20 | 2007-08-08 14:20 | 84 | 2006-06-14 08:00 | 2006-06-14 17:00 | 1d? | 0d |  |  |  |
| 88 | 1.1.4.4.1 | 准备评审 | 0.5d? | 2007-08-07 14:20 | 2007-08-08 09:20 | 83 |  |  |  | 0d |  |  | 《项目结项评审准备表》 |
| 89 | 1.1.4.4.2 | 召开评审会议 | 0.5d? | 2007-08-08 09:20 | 2007-08-08 14:20 | 88 |  |  |  | 0d |  |  | 《项目结项评审报告》《会议记录》 |
| 90 | 1.1.4.4.3 | 总结经验教训 | 0.5d? | 2007-08-08 09:20 | 2007-08-08 14:20 | 88 |  |  |  | 0d |  |  | 《项目过程改进建议》 |
| 91 | 1.1.4.4.4 | 高级经理批准结项 | 0.5d? | 2007-08-07 14:20 | 2007-08-08 09:20 |  |  |  |  | 0.5d |  |  | 高级经理审批后的《结项报告》 |
| 92 | 1.1.4.5 | **项目资产纳入组织过程资产库** | 1.5d? | 2007-08-08 14:20 | 2007-08-10 09:20 | 87 | 2006-06-14 08:00 | 2006-06-14 17:00 | 1d? | 0d |  |  |  |
| 93 | 1.1.4.5.1 | 项目CM把项目资产移交组织CM,归档 | 1d? | 2007-08-08 14:20 | 2007-08-09 14:20 | 87 |  |  |  | 0d |  |  |  |
| 94 | 1.1.4.5.2 | EPG纳入组织资产库 | 0.5d? | 2007-08-09 14:20 | 2007-08-10 09:20 | 93 |  |  |  | 0d |  |  | 组织资产库 |
| 95 | 1.2 | **工程过程** | 81d? | 2007-04-10 08:00 | 2007-07-31 17:00 |  |  |  |  | 0d |  |  |  |
| 96 | 1.2.1 | **需求开发** | 8.75d? | 2007-04-10 08:00 | 2007-04-20 15:00 |  | 2006-06-14 08:00 | 2006-06-15 17:00 | 2d? | 79.42d |  | 65 |  |
| 97 | 1.2.1.1 | **用户需求获取** | 3d? | 2007-04-10 08:00 | 2007-04-12 17:00 |  | 2006-06-14 08:00 | 2006-06-14 17:00 | 1d? | 79.42d | 0d | 8 |  |
| 98 | 1.2.1.1.1 | 需求调查前准备 | 1d? | 2007-04-10 08:00 | 2007-04-10 17:00 |  |  |  |  | 79.42d | 0d |  | 《需求调研计划》 |
| 99 | 1.2.1.1.2 | 需求调研 | 1d? | 2007-04-11 08:00 | 2007-04-11 17:00 | 98 |  |  |  | 79.42d | 0d |  | 《用户需求调查单》 |
| 100 | 1.2.1.1.3 | 撰写《用户需求说明书》 | 1d? | 2007-04-12 08:00 | 2007-04-12 17:00 | 99 |  |  |  | 79.42d | 0d |  | 《用户需求说明书》 |
| 101 | 1.2.1.2 | **用户需求评审** | 1.25d | 2007-04-13 08:00 | 2007-04-16 10:00 | 100 | 2006-06-14 08:00 | 2006-06-14 17:00 | 1d? | 79.42d | 0d | 24 |  |
| 102 | 1.2.1.2.1 | 准备评审 | 0.25d | 2007-04-13 08:00 | 2007-04-13 10:00 | 97 | 2006-06-14 08:00 | 2006-06-14 17:00 | 1d? | 79.42d | 0d | 8 | 《用户需求说明书评审准备表》 |
| 103 | 1.2.1.2.2 | 举行评审会议 | 0.25d | 2007-04-13 10:00 | 2007-04-13 12:00 | 102 | 2006-06-14 08:00 | 2006-06-14 17:00 | 1d? | 79.42d | 0d | 8 | 《评审会议记录》 |

| ID | WBS | Task | Duration | Start | Finish | Predecessors | Baseline start | Baseline finish | Baseline duration | Total slack | Free slack | Baseline cost | Text1 |
| --- | --- | --- | --- | --- | --- | --- | --- | --- | --- | --- | --- | --- | --- |
| 104 | 1.2.1.2.3 | **修正、跟踪与审核** | 0.75d | 2007-04-13 13:00 | 2007-04-16 10:00 | 103 | 2006-06-14 08:00 | 2006-06-14 17:00 | 1d? | 79.42d |  |  |  |
| 105 | 1.2.1.2.3.1 | 修正工作产品 | 0.5d | 2007-04-13 13:00 | 2007-04-13 17:00 | 103 |  |  |  | 79.42d | 0d |  | 修正后的工作产品：《用户需求说明书》 |
| 106 | 1.2.1.2.3.2 | 修改后的工作产品的确认 | 0.25d | 2007-04-16 08:00 | 2007-04-16 10:00 | 105 |  |  |  | 79.42d |  |  | 《用户需求说明书评审报告》 |
| 107 | 1.2.1.3 | 新建《需求跟踪矩阵》 | 1d? | 2007-04-16 10:00 | 2007-04-17 10:00 | 101 |  |  |  | 59.25d | 0d |  | 《需求跟踪矩阵》 |
| 108 | 1.2.1.4 | **产品需求定义** | 1d? | 2007-04-17 10:00 | 2007-04-18 10:00 | 107 | 2006-06-14 08:00 | 2006-06-14 14:00 | 5h | 79.42d | 0d | 5 |  |
| 109 | 1.2.1.4.1 | 制作业务模型、数据字典（可选） | 1d? | 2007-04-17 10:00 | 2007-04-18 10:00 | 101 |  |  |  | 79.42d |  |  | 业务模型、数据字典 |
| 110 | 1.2.1.4.2 | 撰写《产品需求规格说明书》 | 1d? | 2007-04-17 10:00 | 2007-04-18 10:00 | 101 |  |  |  | 79.42d |  |  | 《产品需求规格说明书》 |
| 111 | 1.2.1.4.3 | 制作系统开发原型Demo | 1d? | 2007-04-17 10:00 | 2007-04-18 10:00 | 101 |  |  |  | 79.42d |  |  |  |
| 112 | 1.2.1.5 | **产品需求评审(正式评审)** | 1.5d? | 2007-04-18 10:00 | 2007-04-19 15:00 | 108 |  |  |  | 79.42d | 0d |  |  |
| 113 | 1.2.1.5.1 | 准备评审 | 0.25d? | 2007-04-18 10:00 | 2007-04-18 12:00 | 108 | 2006-06-14 08:00 | 2006-06-14 17:00 | 1d? | 79.42d | 0d | 8 | 《评审准备表》 |
| 114 | 1.2.1.5.2 | 举行评审会议 | 0.25d? | 2007-04-18 13:00 | 2007-04-18 15:00 | 113 | 2006-06-14 08:00 | 2006-06-14 17:00 | 1d? | 79.42d | 0d | 8 | 《评审会议记录》 |
| 115 | 1.2.1.5.3 | **修正、跟踪与审核** | 1d? | 2007-04-18 15:00 | 2007-04-19 15:00 | 114 | 2006-06-14 08:00 | 2006-06-14 17:00 | 1d? | 79.42d |  |  |  |
| 116 | 1.2.1.5.3.1 | 修正工作产品 | 1d? | 2007-04-18 15:00 | 2007-04-19 15:00 | 114 |  |  |  | 79.42d |  |  | 修正后的工作产品：《产品需求规格说明书》 |
| 117 | 1.2.1.5.3.2 | 修改后的工作产品的确认 | 1d? | 2007-04-18 15:00 | 2007-04-19 15:00 | 114 |  |  |  | 79.42d |  |  | 《产品需求规格说明书评审报告》 |
| 118 | 1.2.1.6 | 更新《需求跟踪矩阵》 | 1d? | 2007-04-19 15:00 | 2007-04-20 15:00 | 112 |  |  |  | 59.25d |  |  | 《需求跟踪矩阵》 |
| 119 | 1.2.2 | **系统设计** | 17.75d | 2007-04-10 08:00 | 2007-05-03 15:00 |  |  |  |  | 70.42d |  |  |  |
| 120 | 1.2.2.1 | 撰写《技术解决方案》 | 2d | 2007-04-10 08:00 | 2007-04-11 17:00 |  |  |  |  | 65d | 0d |  | 《技术解决方案》 |
| 121 | 1.2.2.2 | 对于多方案进行决策(可选) | 1d | 2007-04-12 08:00 | 2007-04-12 17:00 | 120 |  |  |  | 65d |  |  | 《决策分析评估准则》、《决策分析评估表》、《决策分析报告》 |
| 122 | 1.2.2.3 | **概要设计与数据库设计** | 4d | 2007-04-10 08:00 | 2007-04-13 17:00 |  | 2006-06-14 08:00 | 2006-06-14 17:00 | 1d? | 70.42d | 0d |  |  |
| 123 | 1.2.2.3.1 | 撰写概要设计文档与数据库设计文档 | 4d | 2007-04-10 08:00 | 2007-04-13 17:00 |  |  |  |  | 70.42d |  |  | 《概要设计说明书》、《数据库设计说明书》 |
| 124 | 1.2.2.4 | **概要设计数据库设计评审(正式评审)** | 1.25d | 2007-04-16 08:00 | 2007-04-17 10:00 |  | 2006-06-14 08:00 | 2006-06-14 17:00 | 1d? | 70.42d | 0d |  |  |
| 125 | 1.2.2.4.1 | 准备评审 | 0.25d | 2007-04-16 08:00 | 2007-04-16 10:00 | 122 | 2006-06-14 08:00 | 2006-06-14 17:00 | 1d? | 70.42d | 0d | 8 | 《评审准备表》 |
| 126 | 1.2.2.4.2 | 举行评审会议 | 0.25d | 2007-04-16 10:00 | 2007-04-16 12:00 | 125 | 2006-06-14 08:00 | 2006-06-14 17:00 | 1d? | 70.42d | 0d | 8 | 《设计评审会议记录》 |
| 127 | 1.2.2.4.3 | **修正、跟踪与审核** | 0.75d | 2007-04-16 13:00 | 2007-04-17 10:00 | 126 | 2006-06-14 08:00 | 2006-06-14 17:00 | 1d? | 70.42d |  |  |  |
| 128 | 1.2.2.4.3.1 | 修正工作产品 | 0.5d | 2007-04-16 13:00 | 2007-04-16 17:00 | 126 |  |  |  | 70.42d | 0d |  | 修正后的工作产品：《概要设计说明书》、《数据库设计说明书》 |
| 129 | 1.2.2.4.3.2 | 修改后的工作产品的确认 | 0.25d | 2007-04-17 08:00 | 2007-04-17 10:00 | 128 |  |  |  | 70.42d |  |  | 《设计说明书评审报告》 |

| ID | WBS | Task | Duration | Start | Finish | Predecessors | Baseline start | Baseline finish | Baseline duration | Total slack | Free slack | Baseline cost | Text1 |
| --- | --- | --- | --- | --- | --- | --- | --- | --- | --- | --- | --- | --- | --- |
| 130 | 1.2.2.5 | **详细设计** | 12.5d | 2007-04-17 10:00 | 2007-05-03 15:00 | 124 | 2006-06-14 08:00 | 2006-06-14 17:00 | 1d? | 70.42d |  |  | 《详细设计说明书》 |
| 131 | 1.2.2.5.1 | **XX子系统** | 7.5d | 2007-04-17 10:00 | 2007-04-26 15:00 | 124 |  |  |  | 70.42d | 0d |  |  |
| 132 | 1.2.2.5.1.1 | **XX模块设计** | 5d | 2007-04-17 10:00 | 2007-04-24 10:00 | 124 | 2006-06-14 08:00 | 2006-06-14 17:00 | 1d? | 70.42d |  |  |  |
| 133 | 1.2.2.5.1.1.1 | XX功能设计 | 2d | 2007-04-17 10:00 | 2007-04-19 10:00 | 124 | 2006-06-14 08:00 | 2006-06-14 17:00 | 1d? | 70.42d | 0d |  |  |
| 134 | 1.2.2.5.1.1.2 | XX功能设计 | 3d | 2007-04-19 10:00 | 2007-04-24 10:00 | 133 | 2006-06-14 08:00 | 2006-06-14 17:00 | 1d? | 70.42d | 0d |  |  |
| 135 | 1.2.2.5.1.2 | **XX模块设计** | 2.5d | 2007-04-24 10:00 | 2007-04-26 15:00 | 134 | 2006-06-14 08:00 | 2006-06-14 17:00 | 1d? | 70.42d |  |  |  |
| 136 | 1.2.2.5.1.2.1 | XX功能设计 | 1d | 2007-04-24 10:00 | 2007-04-25 10:00 | 134 | 2006-06-14 08:00 | 2006-06-14 17:00 | 1d? | 70.42d | 0d |  |  |
| 137 | 1.2.2.5.1.2.2 | XX功能设计 | 1.5d | 2007-04-25 10:00 | 2007-04-26 15:00 | 136 | 2006-06-14 08:00 | 2006-06-14 17:00 | 1d? | 70.42d |  |  |  |
| 138 | 1.2.2.5.2 | **XXX子系统** | 5d | 2007-04-26 15:00 | 2007-05-03 15:00 | 131 |  |  |  | 70.42d |  |  |  |
| 139 | 1.2.2.5.2.1 | **XX模块设计** | 3d | 2007-04-26 15:00 | 2007-05-01 15:00 | 131 | 2006-06-14 08:00 | 2006-06-14 17:00 | 1d? | 70.42d | 0d |  |  |
| 140 | 1.2.2.5.2.1.1 | XX功能设计 | 2d | 2007-04-26 15:00 | 2007-04-30 15:00 | 131 | 2006-06-14 08:00 | 2006-06-14 17:00 | 1d? | 70.42d | 0d |  |  |
| 141 | 1.2.2.5.2.1.2 | XX功能设计 | 1d | 2007-04-30 15:00 | 2007-05-01 15:00 | 140 | 2006-06-14 08:00 | 2006-06-14 17:00 | 1d? | 70.42d |  |  |  |
| 142 | 1.2.2.5.2.2 | **XX模块设计** | 2d | 2007-05-01 15:00 | 2007-05-03 15:00 | 139 | 2006-06-14 08:00 | 2006-06-14 17:00 | 1d? | 70.42d |  |  |  |
| 143 | 1.2.2.5.2.2.1 | XX功能设计 | 1.5d | 2007-05-01 15:00 | 2007-05-03 10:00 | 139 | 2006-06-14 08:00 | 2006-06-14 17:00 | 1d? | 70.42d | 0d |  |  |
| 144 | 1.2.2.5.2.2.2 | XX功能设计 | 0.5d | 2007-05-03 10:00 | 2007-05-03 15:00 | 143 | 2006-06-14 08:00 | 2006-06-14 17:00 | 1d? | 70.42d |  |  |  |
| 145 | 1.2.2.6 | **详细设计评审(正式评审)** | 1.5d | 2007-04-10 08:00 | 2007-04-11 12:00 |  | 2006-06-14 08:00 | 2006-06-14 17:00 | 1d? | 86.67d |  |  |  |
| 146 | 1.2.2.6.1 | 准备评审 | 0.5d | 2007-04-10 08:00 | 2007-04-10 12:00 |  | 2006-06-14 08:00 | 2006-06-14 17:00 | 1d? | 86.67d | 0d | 8 | 《评审准备表》 |
| 147 | 1.2.2.6.2 | 举行评审会议 | 0.25d | 2007-04-10 13:00 | 2007-04-10 15:00 | 146 | 2006-06-14 08:00 | 2006-06-14 17:00 | 1d? | 86.67d | 0d | 8 | 《会议记录》 |
| 148 | 1.2.2.6.3 | **修正、跟踪与审核** | 0.75d | 2007-04-10 15:00 | 2007-04-11 12:00 | 147 | 2006-06-14 08:00 | 2006-06-14 17:00 | 1d? | 86.67d |  |  |  |
| 149 | 1.2.2.6.3.1 | 修正工作产品 | 0.5d | 2007-04-10 15:00 | 2007-04-11 10:00 | 147 |  |  |  | 86.67d | 0d |  | 修正后的工作产品：《详细设计说明书》 |
| 150 | 1.2.2.6.3.2 | 修改后的工作产品的确认 | 0.25d | 2007-04-11 10:00 | 2007-04-11 12:00 | 149 |  |  |  | 86.67d |  |  | 《详细设计评审报告》 |
| 151 | 1.2.3 | **编码实现(单元测试)** | 65d | 2007-04-10 08:00 | 2007-07-09 17:00 |  | 2006-06-14 08:00 | 2006-06-14 17:00 | 1d? | 0d |  |  |  |
| 152 | 1.2.3.1 | 制定编码与单元测试计划 | 1d | 2007-04-10 08:00 | 2007-04-10 17:00 |  |  |  |  | 40.83d | 0d |  | 《编码与单元测试计划》 |
| 153 | 1.2.3.2 | 构建数据库 | 1d | 2007-04-11 08:00 | 2007-04-11 17:00 | 152 |  |  |  | 42.83d |  |  | 产品数据库 |

| ID | WBS | Task | Duration | Start | Finish | Predecessors | Baseline start | Baseline finish | Baseline duration | Total slack | Free slack | Text1 |
| --- | --- | --- | --- | --- | --- | --- | --- | --- | --- | --- | --- | --- |
| 154 | 1.2.3.3 | **编码实现模块功能** | 3d | 2007-04-11 08:00 | 2007-04-13 17:00 | 152 |  |  |  | 61d |  | 程序源代码 |
| 155 | 1.2.3.3.1 | **XX子系统** | 3d | 2007-04-11 08:00 | 2007-04-13 17:00 |  |  |  |  | 61d |  |  |
| 156 | 1.2.3.3.1.1 | **XX模块** | 3d | 2007-04-11 08:00 | 2007-04-13 17:00 |  | 2006-06-14 08:00 | 2006-06-14 17:00 | 1d? | 61d |  |  |
| 157 | 1.2.3.3.1.1.1 | XX功能 | 2d | 2007-04-11 08:00 | 2007-04-12 17:00 |  | 2006-06-14 08:00 | 2006-06-14 17:00 | 1d? | 62d |  |  |
| 158 | 1.2.3.3.1.1.2 | XX功能 | 3d | 2007-04-11 08:00 | 2007-04-13 17:00 |  | 2006-06-14 08:00 | 2006-06-14 17:00 | 1d? | 61d |  |  |
| 159 | 1.2.3.3.1.2 | **XX模块** | 1.5d | 2007-04-11 08:00 | 2007-04-12 12:00 |  | 2006-06-14 08:00 | 2006-06-14 17:00 | 1d? | 62.5d |  |  |
| 160 | 1.2.3.3.1.2.1 | XX功能 | 1d | 2007-04-11 08:00 | 2007-04-11 17:00 |  | 2006-06-14 08:00 | 2006-06-14 17:00 | 1d? | 63d |  |  |
| 161 | 1.2.3.3.1.2.2 | XX功能 | 1.5d | 2007-04-11 08:00 | 2007-04-12 12:00 |  | 2006-06-14 08:00 | 2006-06-14 17:00 | 1d? | 62.5d |  |  |
| 162 | 1.2.3.3.2 | **XXX子系统** | 2d | 2007-04-11 08:00 | 2007-04-12 17:00 |  |  |  |  | 62d |  |  |
| 163 | 1.2.3.3.2.1 | **XX模块** | 2d | 2007-04-11 08:00 | 2007-04-12 17:00 |  | 2006-06-14 08:00 | 2006-06-14 17:00 | 1d? | 62d |  |  |
| 164 | 1.2.3.3.2.1.1 | XX功能 | 2d | 2007-04-11 08:00 | 2007-04-12 17:00 |  | 2006-06-14 08:00 | 2006-06-14 17:00 | 1d? | 62d |  |  |
| 165 | 1.2.3.3.2.1.2 | XX功能 | 1d | 2007-04-11 08:00 | 2007-04-11 17:00 |  | 2006-06-14 08:00 | 2006-06-14 17:00 | 1d? | 63d |  |  |
| 166 | 1.2.3.3.2.2 | **XX模块** | 1.5d | 2007-04-11 08:00 | 2007-04-12 12:00 |  | 2006-06-14 08:00 | 2006-06-14 17:00 | 1d? | 62.5d |  |  |
| 167 | 1.2.3.3.2.2.1 | XX功能 | 1.5d | 2007-04-11 08:00 | 2007-04-12 12:00 |  | 2006-06-14 08:00 | 2006-06-14 17:00 | 1d? | 62.5d |  |  |
| 168 | 1.2.3.3.2.2.2 | XX功能 | 0.5d | 2007-04-11 08:00 | 2007-04-11 12:00 |  | 2006-06-14 08:00 | 2006-06-14 17:00 | 1d? | 63.5d |  |  |
| 169 | 1.2.3.4 | **代码走查** | 3d | 2007-04-10 08:00 | 2007-04-12 17:00 |  |  |  |  | 62d | 0d | bug记录 |
| 170 | 1.2.3.4.1 | **XX子系统** | 3d | 2007-04-10 08:00 | 2007-04-12 17:00 |  |  |  |  | 62d |  |  |
| 171 | 1.2.3.4.1.1 | **XX模块** | 3d | 2007-04-10 08:00 | 2007-04-12 17:00 |  | 2006-06-14 08:00 | 2006-06-14 17:00 | 1d? | 62d |  |  |
| 172 | 1.2.3.4.1.1.1 | XX功能 | 2d | 2007-04-10 08:00 | 2007-04-11 17:00 |  | 2006-06-14 08:00 | 2006-06-14 17:00 | 1d? | 63d |  |  |
| 173 | 1.2.3.4.1.1.2 | XX功能 | 3d | 2007-04-10 08:00 | 2007-04-12 17:00 |  | 2006-06-14 08:00 | 2006-06-14 17:00 | 1d? | 62d |  |  |
| 174 | 1.2.3.4.1.2 | **XX模块** | 1.5d | 2007-04-10 08:00 | 2007-04-11 12:00 |  | 2006-06-14 08:00 | 2006-06-14 17:00 | 1d? | 63.5d |  |  |
| 175 | 1.2.3.4.1.2.1 | XX功能 | 1d | 2007-04-10 08:00 | 2007-04-10 17:00 |  | 2006-06-14 08:00 | 2006-06-14 17:00 | 1d? | 64d |  |  |
| 176 | 1.2.3.4.1.2.2 | XX功能 | 1.5d | 2007-04-10 08:00 | 2007-04-11 12:00 |  | 2006-06-14 08:00 | 2006-06-14 17:00 | 1d? | 63.5d |  |  |
| 177 | 1.2.3.4.2 | **XXX子系统** | 2d | 2007-04-10 08:00 | 2007-04-11 17:00 |  |  |  |  | 63d |  |  |
| 178 | 1.2.3.4.2.1 | **XX模块** | 2d | 2007-04-10 08:00 | 2007-04-11 17:00 |  | 2006-06-14 08:00 | 2006-06-14 17:00 | 1d? | 63d |  |  |
| 179 | 1.2.3.4.2.1.1 | XX功能 | 2d | 2007-04-10 08:00 | 2007-04-11 17:00 |  | 2006-06-14 08:00 | 2006-06-14 17:00 | 1d? | 63d |  |  |
| 180 | 1.2.3.4.2.1.2 | XX功能 | 1d | 2007-04-10 08:00 | 2007-04-10 17:00 |  | 2006-06-14 08:00 | 2006-06-14 17:00 | 1d? | 64d |  |  |

| ID | WBS | Task | Duration | Start | Finish | Predecessors | Baseline start | Baseline finish | Baseline duration | Total slack | Free slack | Baseline cost | Text1 |
| --- | --- | --- | --- | --- | --- | --- | --- | --- | --- | --- | --- | --- | --- |
| 181 | 1.2.3.4.2.2 | **XX模块** | 1.5d | 2007-04-10 08:00 | 2007-04-11 12:00 |  | 2006-06-14 08:00 | 2006-06-14 17:00 | 1d? | 63.5d |  |  |  |
| 182 | 1.2.3.4.2.2.1 | XX功能 | 1.5d | 2007-04-10 08:00 | 2007-04-11 12:00 |  | 2006-06-14 08:00 | 2006-06-14 17:00 | 1d? | 63.5d |  |  |  |
| 183 | 1.2.3.4.2.2.2 | XX功能 | 0.5d | 2007-04-10 08:00 | 2007-04-10 12:00 |  | 2006-06-14 08:00 | 2006-06-14 17:00 | 1d? | 64.5d |  |  |  |
| 184 | 1.2.3.5 | **编写支持文档** | 62d | 2007-04-10 08:00 | 2007-07-04 17:00 |  |  |  |  | 0d |  |  |  |
| 185 | 1.2.3.5.1 | 编写《用户操作手册》 | 62d | 2007-04-10 08:00 | 2007-07-04 17:00 |  |  |  |  | 0d |  |  | 《用户手册》 |
| 186 | 1.2.3.6 | 评审支持文档(正式或非正式评审) | 3d | 2007-07-05 08:00 | 2007-07-09 17:00 | 185 |  |  |  | 0d |  |  | 评审报告、会议记录等 |
| 187 | 1.2.4 | **产品集成** | 5.75d? | 2007-04-13 08:00 | 2007-04-20 15:00 | 169 |  |  |  | 79.42d |  |  |  |
| 188 | 1.2.4.1 | 制定《产品集成计划》 | 1d? | 2007-04-13 08:00 | 2007-04-13 17:00 |  |  |  |  | 84.17d |  |  |  |
| 189 | 1.2.4.2 | 制定《集成测试计划》 | 1d? | 2007-04-13 08:00 | 2007-04-13 17:00 | 152SS |  |  |  | 83.17d | 0d |  | 《集成测试计划》 |
| 190 | 1.2.4.3 | 评审《产品集成计划》、《集成测试计划》 | 1d? | 2007-04-16 08:00 | 2007-04-16 17:00 | 189 |  |  |  | 83.17d |  |  | 评审报告、会议记录等 |
| 191 | 1.2.4.4 | 集成产品组件 | 1d? | 2007-04-13 08:00 | 2007-04-13 17:00 |  |  |  |  | 84.17d |  |  |  |
| 192 | 1.2.4.5 | 编写《集成测试用例》 | 2d | 2007-04-13 08:00 | 2007-04-16 17:00 |  |  |  |  | 82.42d | 0d |  | 《集成测试用例》 |
| 193 | 1.2.4.6 | 评审《集成测试用例》(非正式评审) | 0.75d | 2007-04-17 08:00 | 2007-04-17 15:00 | 192 |  |  |  | 82.42d |  |  | 评审报告、会议记录等 |
| 194 | 1.2.4.7 | **执行集成测试用例** | 5.75d | 2007-04-13 08:00 | 2007-04-20 15:00 |  |  |  |  | 79.42d |  |  |  |
| 195 | 1.2.4.7.1 | 记录并跟踪BUG | 2d | 2007-04-13 08:00 | 2007-04-16 17:00 |  |  |  |  | 83.17d |  |  | 《BUG记录单》 |
| 196 | 1.2.4.7.2 | 修正BUG | 2d | 2007-04-13 08:00 | 2007-04-16 17:00 |  |  |  |  | 79.42d | 0d |  |  |
| 197 | 1.2.4.7.3 | 编写并提交《集成测试报告》 | 3d | 2007-04-17 08:00 | 2007-04-19 17:00 | 196 |  |  |  | 79.42d | 0d |  | 《集成测试报告》 |
| 198 | 1.2.4.7.4 | 评审《集成测试报告》(非正式评审) | 0.75d | 2007-04-20 08:00 | 2007-04-20 15:00 | 197 |  |  |  | 79.42d |  |  | 评审报告、会议记录等 |
| 199 | 1.2.5 | **系统测试** | 79d? | 2007-04-10 08:00 | 2007-07-27 17:00 |  | 2006-06-14 08:00 | 2006-06-14 17:00 | 1d? | 0d |  |  |  |
| 200 | 1.2.5.1 | 制定《系统测试计划》 | 2d | 2007-04-10 08:00 | 2007-04-11 17:00 |  |  |  |  | 61.5d | 0d |  | 《系统测试计划》 |
| 201 | 1.2.5.2 | 评审《系统测试计划》 | 1d? | 2007-04-12 08:00 | 2007-04-12 17:00 | 200 |  |  |  | 61.5d | 0d |  | 评审报告、会议记录等 |
| 202 | 1.2.5.3 | 编写《系统测试用例》 | 10d | 2007-04-13 08:00 | 2007-04-26 17:00 | 201 |  |  |  | 61.5d | 0d |  | 《系统测试用例》 |
| 203 | 1.2.5.4 | **评审《系统测试用例》** | 4.5d? | 2007-04-27 08:00 | 2007-05-03 12:00 | 202 |  |  |  | 61.5d |  |  |  |
| 204 | 1.2.5.4.1 | 评审准备 | 2d | 2007-04-27 08:00 | 2007-04-30 17:00 |  | 2006-06-14 08:00 | 2006-06-14 17:00 | 1d? | 61.5d | 0d | 8 | 《评审准备表》 |
| 205 | 1.2.5.4.2 | 举行评审会议 | 1d? | 2007-05-01 08:00 | 2007-05-01 17:00 | 204 |  |  |  | 61.5d | 0d |  | 《会议记录》 |

| ID | WBS | Task | Duration | Start | Finish | Predecessors | Baseline start | Baseline finish | Baseline duration | Total slack | Free slack | Text1 |
| --- | --- | --- | --- | --- | --- | --- | --- | --- | --- | --- | --- | --- |
| 206 | 1.2.5.4.3 | **修正、跟踪与审核** | 1.5d? | 2007-05-02 08:00 | 2007-05-03 12:00 | 205 | 2006-06-14 08:00 | 2006-06-14 17:00 | 1d? | 61.5d |  |  |
| 207 | 1.2.5.4.3.1 | 修正工作产品 | 1d? | 2007-05-02 08:00 | 2007-05-02 17:00 | 204 |  |  |  | 61.5d | 0d | 修正后的工作产品：《系统测试用例》 |
| 208 | 1.2.5.4.3.2 | 修改后的工作产品的确认 | 0.5d? | 2007-05-03 08:00 | 2007-05-03 12:00 | 207 |  |  |  | 61.5d |  | 《系统测试用例评审报告》 |
| 209 | 1.2.5.5 | **执行系统测试** | 14d? | 2007-07-10 08:00 | 2007-07-27 17:00 | 151 |  |  |  | 0d |  |  |
| 210 | 1.2.5.5.1 | 搭建系统测试环境 | 2d? | 2007-07-10 08:00 | 2007-07-11 17:00 | 151 |  |  |  | 0d |  |  |
| 211 | 1.2.5.5.2 | 执行系统测试用例 | 10d? | 2007-07-12 08:00 | 2007-07-25 17:00 | 210 |  |  |  | 0d |  |  |
| 212 | 1.2.5.5.3 | 记录并跟踪缺陷 | 12d? | 2007-07-12 08:00 | 2007-07-27 17:00 | 211SS |  |  |  | 0d |  | 《系统测试用例》、《缺陷管理单》 |
| 213 | 1.2.5.5.4 | 修改缺陷 | 12d? | 2007-07-12 08:00 | 2007-07-27 17:00 | 211SS |  |  |  | 0d |  | 代码 |
| 214 | 1.2.5.5.5 | 撰写《系统测试报告》 | 3d? | 2007-07-10 08:00 | 2007-07-12 17:00 |  |  |  |  | 10.5d | 0d | 《系统测试报告》 |
| 215 | 1.2.5.6 | 评审《系统测试报告》（正式或非正式评审） | 0.5d? | 2007-07-13 08:00 | 2007-07-13 12:00 | 214 |  |  |  | 10.5d |  | 评审报告、会议记录等 |
| 216 | 1.2.6 | **产品交付** | 2d? | 2007-07-30 08:00 | 2007-07-31 17:00 | 199 | 2006-06-14 08:00 | 2006-06-14 17:00 | 1d? | 0d |  |  |
| 217 | 1.2.6.1 | 产品打包交付 | 2d? | 2007-07-30 08:00 | 2007-07-31 17:00 |  |  |  |  | 0d |  | 光盘、纸制交付件、《产品打包清单》 |
| 218 | 1.2.6.2 | 用户使用培训 | 1d? | 2007-07-30 08:00 | 2007-07-30 17:00 |  |  |  |  | 1d |  | 培训相关文档 |
| 219 | 1.2.6.3 | 用户确认测试 | 1d? | 2007-07-30 08:00 | 2007-07-30 17:00 |  |  |  |  | 1d |  |  |
| 220 | 1.2.6.4 | 编写《客户验收报告》,双方签字确认 | 1d? | 2007-07-30 08:00 | 2007-07-30 17:00 |  |  |  |  | 1d |  | 《产品交接验收单》、《客户验收报告》 |
| 221 | 1.3 | **支持过程** | 1d? | 2007-04-10 08:00 | 2007-04-10 17:00 |  |  |  |  | 87.17d |  |  |
| 222 | 1.3.1 | **质量保证** | 1d? | 2007-04-10 08:00 | 2007-04-10 17:00 |  |  |  |  | 87.17d |  |  |
| 223 | 1.3.1.1 | 参与评审 | 1d? | 2007-04-10 08:00 | 2007-04-10 17:00 |  |  |  |  | 87.17d |  |  |
| 224 | 1.3.1.2 | 参与测试 | 1d? | 2007-04-10 08:00 | 2007-04-10 17:00 |  |  |  |  | 87.17d |  |  |
| 225 | 1.3.1.3 | 过程检查 | 1d? | 2007-04-10 08:00 | 2007-04-10 17:00 |  |  |  |  | 87.17d |  |  |
| 226 | 1.3.1.4 | 过程辅导培训 | 1d? | 2007-04-10 08:00 | 2007-04-10 17:00 |  |  |  |  | 87.17d |  |  |
| 227 | 1.3.1.5 | 不符合项目报告编制 | 1d? | 2007-04-10 08:00 | 2007-04-10 17:00 |  |  |  |  | 87.17d |  |  |
| 228 | 1.3.2 | **配置管理** | 1d? | 2007-04-10 08:00 | 2007-04-10 17:00 |  |  |  |  | 87.17d |  |  |
| 229 | 1.3.2.1 | 创建基线 | 1d? | 2007-04-10 08:00 | 2007-04-10 17:00 |  |  |  |  | 87.17d |  |  |
| 230 | 1.3.2.2 | 配置项审计 | 1d? | 2007-04-10 08:00 | 2007-04-10 17:00 |  |  |  |  | 87.17d |  |  |
| 231 | 1.3.2.3 | 基线审计 | 1d? | 2007-04-10 08:00 | 2007-04-10 17:00 |  |  |  |  | 87.17d |  |  |
