# TRANSFAR-PIPLAN.Draft

Schedule from MS Project, 2013-05-10 to 2015-03-31, status date 2013-08-08, A marks actual dates.

## Calendars

- 项目日历: Mon-Fri 08:00-12:00, 13:00-17:00; Sat-Sun off.

## Resources

| Resource | Rate |
| --- | --- |
| 咨询师 | 1 |
| 主任评估师 | 1 |
| EPG | 7 |
| 相关项目组 | 5 |
| 软件测试组 | 2 |
| ATMs | 2 |

## Schedule

| ID | WBS | Task | Type | Duration | Start | Finish | Predecessors | Complete | Remaining | Actual start | Actual finish | Constraint | Resources | Work | Actual work | Cost | Actual cost |
| --- | --- | --- | --- | --- | --- | --- | --- | --- | --- | --- | --- | --- | --- | --- | --- | --- | --- |
| 1 | 1 | **CMMI3过程改进项目** |  | 429.12d? | 2013-08-08 | 2015-03-31 |  | 99% | 0d? | 2013-05-10 |  |  |  | 10967h | 10964h | 69,205 | 69,195 |
| 2 | 1.1 | 咨询公司选型阶段 |  | 35d | 2013-08-08 A | 2013-09-25 A |  | 100% |  |  |  | start no earlier than 2013-05-08 | EPG | 280h | 280h | 1,960 | 1,960 |
| 3 | 1.1 | **项目启动阶段** |  | 79.5d | 2013-09-26 | 2014-01-15 |  | 100% |  | 2013-06-26 | 2013-10-16 |  |  | 92h | 92h | 228.6 | 228.6 |
| 4 | 1.1.11 | 项目启动会议 |  | 0.5d | 2013-09-26 A | 2013-09-26 A | 2 | 100% |  |  |  | start no earlier than 2012-04-02 | EPG; 咨询师 | 8h | 8h | 37.6 | 37.6 |
| 5 | 1.1.22 | **过程访谈** |  | 4d | 2013-09-26 | 2013-10-01 |  | 100% |  | 2013-06-26 | 2013-07-02 |  |  | 28h | 28h | 31 | 31 |
| 6 | 1.2.2.1 | 高层经理访谈 |  | 0.5d | 2013-06-26 A | 2013-06-26 A | 4 | 100% |  |  |  | start no earlier than 2012-04-03 |  |  |  |  |  |
| 7 | 1.2.2.2 | CMMI项目负责人、研发负责人访谈 |  | 0.5d | 2013-06-27 A | 2013-06-27 A | 6 | 100% |  |  |  |  | 咨询师 | 4h | 4h | 6 | 6 |
| 8 | 1.2.2.3 | 研发人员访谈 |  | 1d | 2013-06-27 A | 2013-06-28 A | 7 | 100% |  |  |  |  | 咨询师 | 8h | 8h | 10 | 10 |
| 9 | 1.2.2.4 | 测试人员访谈 |  | 1d | 2013-06-28 A | 2013-07-01 A | 8 | 100% |  |  |  |  | 咨询师 | 8h | 8h | 4 | 4 |
| 10 | 1.2.2.5 | 人力资源部门访谈 |  | 0.5d | 2013-07-01 A | 2013-07-01 A | 9 | 100% |  |  |  |  | 咨询师 | 4h | 4h | 6 | 6 |
| 11 | 1.2.2.6 | 其他相关部门访谈 |  | 0.5d | 2013-07-02 A | 2013-07-02 A | 10 | 100% |  |  |  |  | 咨询师 | 4h | 4h | 5 | 5 |
| 12 | 1.1.33 | **过程改进计划制定** |  | 10d | 2013-10-02 | 2013-10-15 | 4 | 100% |  | 2013-07-02 | 2013-07-16 |  |  | 56h | 56h | 160 | 160 |
| 13 | 1.1.33.2 | 项目差距分析 |  | 2d | 2013-07-02 A | 2013-07-04 A | 11 | 100% |  |  |  |  | 咨询师 | 16h | 16h | 20 | 20 |
| 14 | 1.1.33.9 | EPG组建及制定EPG章程 |  | 3d | 2013-07-04 A | 2013-07-09 A | 13 | 100% |  |  |  |  | 咨询师 | 24h | 24h | 24 | 24 |
| 15 | 1.1.33.3 | 过程改进计划制定 |  | 5d | 2013-07-09 A | 2013-07-16 A | 14 | 100% |  |  |  |  | EPG [40%] | 16h | 16h | 116 | 116 |
| 16 | 1.1.3 | 项目启动结束 | milestone | 0d | 2013-10-16 A | 2013-10-16 A | 15 | 100% |  |  |  |  |  |  |  |  |  |
| 17 | 1.2 | **过程域培训阶段** |  | 9.12d | 2013-10-16 A | 2013-10-26 A | 2 | 100% |  |  |  |  |  | 96h | 96h | 386.4 | 386.4 |
| 18 | 1.2.9 | **CMMI3过程域知识培训** |  | 8d | 2013-10-16 A | 2013-10-25 A | 16 | 100% |  |  |  |  |  | 96h | 96h | 386.4 | 386.4 |
| 19 | 1.2.9.1 | CMMI Overview Training |  | 1d | 2013-10-16 A | 2013-10-16 A | 2 | 100% |  |  |  | start no earlier than 2012-02-01 | EPG; 咨询师 | 16h | 16h | 66.4 | 66.4 |
| 20 | 1.2.9.2 | 组织过程域培训[OPD&OPF&OT] |  | 1d | 2013-10-17 A | 2013-10-17 A | 19 | 100% |  |  |  |  | EPG; 咨询师 | 16h | 16h | 64 | 64 |
| 21 | 1.2.9.3 | 工程过程域培训(RD&RM&TS&PI&VER&VAL) |  | 2d | 2013-10-18 A | 2013-10-21 A | 20 | 100% |  |  |  |  | EPG; 咨询师 | 32h | 32h | 128 | 128 |
| 22 | 1.2.9.4 | 项目管理域培训[PP&PMC&RSKM&IPM] |  | 2d | 2013-10-22 A | 2013-10-23 A | 21 | 100% |  |  |  |  | EPG; 咨询师 | 32h | 32h | 128 | 128 |
| 23 | 1.2.9.5 | 支持过程域培训[MA&PPQA&CM&DAR] |  | 2d | 2013-10-24 A | 2013-10-25 A | 22 | 100% |  |  |  |  |  |  |  |  |  |
| 24 | 1.2.10 | 过程培训结束 | milestone | 0d | 2013-10-26 A | 2013-10-26 A | 23 | 100% |  |  |  |  |  |  |  |  |  |

Notes:
- 4: 参加人员及会议情况参见会议记录。

| ID | WBS | Task | Duration | Start | Finish | Predecessors | Complete | Resources | Work | Actual work | Cost | Actual cost |
| --- | --- | --- | --- | --- | --- | --- | --- | --- | --- | --- | --- | --- |
| 25 | 1.3 | **过程定义阶段** | 64d | 2013-11-02 A | 2014-01-29 A | 24FS+2d | 100% |  | 1064h | 1064h | 7,269 | 7,269 |
| 26 | 1.4.1 | **过程定义** | 56.12d | 2013-11-02 A | 2014-01-17 A |  | 100% |  | 1008h | 1008h | 7,096 | 7,096 |
| 27 | 1.4.1.1 | **组织管理过程定义** | 6.12d | 2013-11-02 A | 2013-11-08 A |  | 100% |  | 80h | 80h | 560 | 560 |
| 28 | 1.4.1.1.1 | 组织过程管理 [OPD&OPF] | 5d | 2013-11-02 A | 2013-11-08 A | 24FS+5d | 100% | EPG | 40h | 40h | 280 | 280 |
| 29 | 1.4.1.1.2 | 组织培训 [OT] | 5d | 2013-11-02 A | 2013-11-08 A | 24FS+5d | 100% | EPG | 40h | 40h | 280 | 280 |
| 30 | 1.4.1.2 | **工程过程定义** | 5d | 2013-11-14 A | 2013-11-20 A | 27FS+3d | 100% |  | 240h | 240h | 1,674 | 1,674 |
| 31 | 1.4.1.2.1 | 需求开发与管理[RD&RM] | 5d | 2013-11-14 A | 2013-11-20 A |  | 100% | EPG | 40h | 40h | 288 | 288 |
| 32 | 1.4.1.2.2 | 技术解决方案[TS] | 5d | 2013-11-14 A | 2013-11-20 A |  | 100% | EPG | 40h | 40h | 280 | 280 |
| 33 | 1.4.1.2.3 | 产品集成[PI] | 5d | 2013-11-14 A | 2013-11-20 A |  | 100% | EPG | 40h | 40h | 282 | 282 |
| 34 | 1.4.1.2.4 | 确认[VAL] | 5d | 2013-11-14 A | 2013-11-20 A |  | 100% | EPG | 40h | 40h | 264 | 264 |
| 35 | 1.4.1.2.5 | 客户验收[CA] | 5d | 2013-11-14 A | 2013-11-20 A |  | 100% | EPG | 40h | 40h | 276 | 276 |
| 36 | 1.4.1.2.6 | 验证[VER] | 5d | 2013-11-14 A | 2013-11-20 A |  | 100% | EPG | 40h | 40h | 284 | 284 |
| 37 | 1.4.1.3 | **项目管理过程定义** | 5d | 2013-11-28 A | 2013-12-04 A | 36FS+5d | 100% |  | 160h | 160h | 1,142 | 1,142 |
| 38 | 1.4.1.3.1 | 项目规划[PP] | 5d | 2013-11-28 A | 2013-12-04 A | 30FS+2d | 100% | EPG | 40h | 40h | 296 | 296 |
| 39 | 1.4.1.3.2 | 项目监控[PMC] | 5d | 2013-11-28 A | 2013-12-04 A | 30FS+2d | 100% | EPG | 40h | 40h | 288 | 288 |
| 40 | 1.4.1.3.3 | 风险管理[RSKM] | 5d | 2013-11-28 A | 2013-12-04 A | 30FS+2d | 100% | EPG | 40h | 40h | 280 | 280 |
| 41 | 1.4.1.3.4 | 结项管理[PCM] | 5d | 2013-11-28 A | 2013-12-04 A | 30FS+2d | 100% | EPG | 40h | 40h | 278 | 278 |
| 42 | 1.4.1.4 | **支持过程定义** | 5d | 2013-12-11 A | 2013-12-17 A | 37FS+5d | 100% |  | 128h | 128h | 896 | 896 |
| 43 | 1.4.1.4.1 | 质量保证 [QA] | 5d | 2013-12-11 A | 2013-12-17 A | 37FS+5d | 100% | EPG | 40h | 40h | 272 | 272 |
| 44 | 1.4.1.4.2 | 配置管理 [CM] | 5d | 2013-12-11 A | 2013-12-17 A | 37FS+5d | 100% | EPG | 40h | 40h | 288 | 288 |
| 45 | 1.4.1.4.3 | 度量分析 [MA] | 3d | 2013-12-11 A | 2013-12-13 A | 37FS+5d | 100% | EPG | 24h | 24h | 184 | 184 |
| 46 | 1.4.1.4.4 | 决策分析与解决方案 [DAR] | 3d | 2013-12-11 A | 2013-12-13 A | 37FS+5d | 100% | EPG | 24h | 24h | 152 | 152 |
| 47 | 1.4.1.5 | **过程资产** | 20.12d | 2013-12-23 A | 2014-01-17 A | 42FS+3d | 100% |  | 400h | 400h | 2,824 | 2,824 |
| 48 | 1.4.1.5.1 | 组织方针政策 | 5d | 2013-12-23 A | 2013-12-27 A | 42 | 100% | EPG | 40h | 40h | 280 | 280 |
| 49 | 1.4.1.5.2 | 软件生命周期说明 | 5d | 2013-12-23 A | 2013-12-27 A | 42 | 100% | EPG | 40h | 40h | 280 | 280 |
| 50 | 1.4.1.5.3 | 裁剪指南 | 5d | 2013-12-23 A | 2013-12-27 A | 42 | 100% | EPG | 40h | 40h | 288 | 288 |
| 51 | 1.4.1.5.4 | 工作环境指南 | 5d | 2013-12-30 A | 2014-01-03 A | 48 | 100% | EPG | 40h | 40h | 272 | 272 |
| 52 | 1.4.1.5.5 | 团队建立指南 | 5d | 2014-01-06 A | 2014-01-10 A | 51 | 100% | EPG | 40h | 40h | 280 | 280 |
| 53 | 1.4.1.5.6 | 组织度量库 | 5d | 2013-12-30 A | 2014-01-03 A | 49 | 100% | EPG | 40h | 40h | 280 | 280 |
| 54 | 1.4.1.5.7 | 风险列表库 | 5d | 2014-01-06 A | 2014-01-10 A | 53 | 100% | EPG | 40h | 40h | 280 | 280 |
| 55 | 1.4.1.5.8 | 经验教训库 | 5d | 2013-12-30 A | 2014-01-03 A | 50 | 100% | EPG | 40h | 40h | 280 | 280 |
| 56 | 1.4.1.5.9 | 培训数据库 | 5d | 2014-01-06 A | 2014-01-10 A | 55 | 100% | EPG | 40h | 40h | 280 | 280 |
| 57 | 1.4.1.5.10 | 其它 | 5d | 2014-01-13 A | 2014-01-17 A | 56 | 100% | EPG | 40h | 40h | 304 | 304 |

| ID | WBS | Task | Type | Duration | Start | Finish | Predecessors | Complete | Actual start | Actual finish | Constraint | Resources | Work | Actual work | Cost | Actual cost |
| --- | --- | --- | --- | --- | --- | --- | --- | --- | --- | --- | --- | --- | --- | --- | --- | --- |
| 58 | 1.4.2 | **过程定义文档审核与指导（外部）** |  | 45d | 2013-11-22 A | 2014-01-23 |  | 100% |  | 2013-12-24 |  |  | 32h | 32h | 32 | 32 |
| 59 | 1.4.2.1 | CMMI-ML3级文档体系编制与评审指导(一) |  | 2d | 2013-11-22 A | 2013-11-25 A | 36FS+2d | 100% |  |  |  | 咨询师 | 16h | 16h | 16 | 16 |
| 60 | 1.4.2.2 | CMMI-ML3级文档体系编制与评审指导（二） |  | 2d | 2013-12-23 A | 2013-12-24 A | 57FS+2d | 100% |  |  |  | 咨询师 | 16h | 16h | 16 | 16 |
| 61 | 1.4.3 | **过程定义文档评审与审批（内部）** |  | 2d | 2014-01-28 A | 2014-01-29 A | 60FS+2d | 100% |  |  |  |  | 24h | 24h | 141 | 141 |
| 62 | 1.4.3.1 | 组织管理过程评审 |  | 0.5d | 2014-01-28 A | 2014-01-28 A |  | 100% |  |  |  | EPG | 4h | 4h | 21 | 21 |
| 63 | 1.4.3.2 | 工程过程评审 |  | 0.5d | 2014-01-28 A | 2014-01-28 A | 62 | 100% |  |  |  | EPG | 4h | 4h | 49 | 49 |
| 64 | 1.4.3.3 | 项目管理过程评审 |  | 0.5d | 2014-01-29 A | 2014-01-29 A | 63 | 100% |  |  |  | 咨询师; EPG | 8h | 8h | 32 | 32 |
| 65 | 1.4.3.4 | 支持过程评审 |  | 0.5d | 2014-01-29 A | 2014-01-29 A | 64 | 100% |  |  |  | 咨询师; EPG | 8h | 8h | 39 | 39 |
| 66 | 1.4.4 | 文档形成OSSPv1.0基线，过程定义结束 | milestone | 0d | 2014-01-29 A | 2014-01-29 A | 65 | 100% |  |  |  | EPG |  |  |  |  |
| 67 | 1.5 | **过程试点与推广阶段** |  | 254.12d | 2014-01-30 | 2015-01-20 A |  | 100% | 2013-12-30 |  |  |  | 2561h | 2561h | 12,377 | 12,377 |
| 68 | 1.5.1 | **OSSP文档培训** |  | 3.5d | 2014-01-30 | 2014-02-04 | 66FS+1d | 100% | 2013-12-30 | 2014-02-03 |  |  | 28h | 28h | 196 | 196 |
| 69 | 1.5.1.1 | 过程培训准备 |  | 1.5d | 2013-12-30 A | 2013-12-31 A | 66 | 100% |  |  | start no earlier than 2012-04-16 | EPG | 12h | 12h | 84 | 84 |
| 70 | 1.5.1.2 | 组织管理过程培训 |  | 0.5d | 2014-01-31 A | 2014-01-31 A | 69 | 100% |  |  |  | EPG | 4h | 4h | 28 | 28 |
| 71 | 1.5.1.3 | 项目管理过程培训 |  | 0.5d | 2014-01-31 A | 2014-01-31 A | 70 | 100% |  |  |  | EPG | 4h | 4h | 28 | 28 |
| 72 | 1.5.1.4 | 工程过程培训 |  | 0.5d | 2014-02-03 A | 2014-02-03 A | 71 | 100% |  |  |  | EPG | 4h | 4h | 28 | 28 |
| 73 | 1.5.1.5 | 支持过程培训 |  | 0.5d | 2014-02-03 A | 2014-02-03 A | 72 | 100% |  |  |  | EPG | 4h | 4h | 28 | 28 |
| 74 | 1.5.1.6 | OSSP文档培训结束，发布OSSP | milestone | 0d | 2014-02-03 A | 2014-02-03 A | 73 | 100% |  |  |  |  |  |  |  |  |
| 75 | 1.5.2 | **过程试点与推广** |  | 134.12d | 2014-03-19 A | 2014-09-22 A | 74FS+30d | 100% |  |  |  |  | 2533h | 2533h | 12,181 | 12,181 |
| 76 | 1.5.2.1 | **试点项目实施** |  | 130d | 2014-03-19 A | 2014-09-16 A |  | 100% |  |  |  |  | 2409h | 2409h | 12,045 | 12,045 |
| 77 | 1.5.2.1.1 | 试点项目1 |  | 130d | 2014-03-19 A | 2014-09-16 A | 74 | 100% |  |  | finish no earlier than 2013-05-31 | 相关项目组 | 1006h | 1006h | 5,030 | 5,030 |
| 78 | 1.5.2.1.2 | 试点项目2 |  | 100d | 2014-03-19 A | 2014-08-05 A | 74 | 100% |  |  | start no earlier than 2013-03-11 | 相关项目组 | 780h | 780h | 3,900 | 3,900 |
| 79 | 1.5.2.1.3 | 试点项目3 |  | 80d | 2014-03-19 A | 2014-07-08 A |  | 100% |  |  | start no earlier than 2013-04-12 | 相关项目组 | 623h | 623h | 3,115 | 3,115 |
| 80 | 1.5.2.2 | **试点项目实施指导** |  | 114.12d | 2014-04-16 A | 2014-09-22 A |  | 100% |  |  |  |  | 124h | 124h | 136 | 136 |
| 81 | 1.5.2.2.1 | 试点项目实施指导（一） |  | 3.5d | 2014-04-16 A | 2014-04-21 A | 77SS+20d | 100% |  |  |  | 咨询师 | 28h | 28h | 28 | 28 |
| 82 | 1.5.2.2.2 | 试点项目实施指导（二） |  | 2d | 2014-05-13 A | 2014-05-14 A | 81SS+20d | 100% |  |  |  | 咨询师 | 16h | 16h | 20 | 20 |
| 83 | 1.5.2.2.3 | 试点项目实施指导（三） |  | 2d | 2014-06-13 A | 2014-06-16 A | 82SS+20d | 100% |  |  |  | 咨询师 | 16h | 16h | 20 | 20 |
| 84 | 1.5.2.2.4 | 试点项目实施指导（四） |  | 6d | 2014-07-10 A | 2014-07-17 A | 83SS+20d | 100% |  |  |  | 咨询师 | 48h | 48h | 48 | 48 |
| 85 | 1.5.2.2.5 | 试点阶段总结及体系优化指导 |  | 2d | 2014-09-19 A | 2014-09-22 A | 76 | 100% |  |  |  | 咨询师 | 16h | 16h | 20 | 20 |
| 86 | 1.5.3 | 过程试点与推广结束 | milestone | 0d | 2015-01-20 A | 2015-01-20 A |  | 100% |  |  | start no earlier than 2014-10-20 | EPG |  |  |  |  |

Notes:
- 68: 培训主管负责过程培训的计划与组织；包括：培训老师、受训人员的召集；培训地点的安排等相关事宜。
- 70: 培训老师提供相关内容： / 1、培训内容 / 2、培训时间 / 3、培训考核
- 71: 培训老师提供相关内容： / 1、培训内容 / 2、培训时间 / 3、培训考核
- 72: 培训老师提供相关内容： / 1、培训内容 / 2、培训时间 / 3、培训考核
- 73: 培训老师提供相关内容： / 1、培训内容 / 2、培训时间 / 3、培训考核

| ID | WBS | Task | Duration | Start | Finish | Predecessors | Complete | Remaining | Constraint | Resources | Work | Actual work | Cost | Actual cost |
| --- | --- | --- | --- | --- | --- | --- | --- | --- | --- | --- | --- | --- | --- | --- |
| 87 | 1.6 | **预评估阶段** | 3d | 2015-03-10 A | 2015-03-12 A | 86FS+2d | 100% |  |  | EPG; 咨询师 | 72h | 72h | 216 | 216 |
| 88 | 1.6.1 | 预评估准备 | 2d | 2015-03-10 A | 2015-03-11 A |  | 100% |  | start no earlier than 2014-10-25 | 咨询师 | 16h | 16h | 16 | 16 |
| 89 | 1.6.2 | 现场预评估与报告 | 1d | 2015-03-12 A | 2015-03-12 A | 88 | 100% |  | start no earlier than 2013-08-26 | 咨询师 | 8h | 8h | 8 | 8 |
| 90 | 1.7 | **正式评估阶段** | 5.12d | 2015-03-23 A | 2015-03-30 | 87FS+5d | 99% | 0d |  | EPG; ATMs; 主任评估师 | 194h | 191h | 512 | 502 |
| 91 | 1.7.1 | SCAMPI方法培训 | 1d | 2015-03-23 A | 2015-03-23 A |  | 100% |  | start no earlier than 2014-12-20 | 主任评估师 | 8h | 8h | 8 | 8 |
| 92 | 1.7.2 | Onsite 评估 | 4d | 2015-03-23 A | 2015-03-26 A | 91 | 100% |  | finish no earlier than 2014-12-26 | 主任评估师; ATMs | 64h | 64h | 96 | 96 |
| 93 | 1.8 | **过程改进建议搜集，试点项目指导，修订OSSP** | 412d? | 2013-08-08 A | 2015-03-06 A |  | 100% |  |  | EPG | 3296h | 3296h | 23,072 | 23,072 |
| 94 | 1.8.1 | 过程改进建议搜集，试点项目指导，修订OSSP 1 | 1d | 2013-08-08 A | 2013-08-08 A |  | 100% |  | start no earlier than 2013-05-08 |  |  |  |  |  |
| 95 | 1.8.2 | 过程改进建议搜集，试点项目指导，修订OSSP 2 | 1d | 2013-09-10 A | 2013-09-10 A |  | 100% |  | start no earlier than 2013-06-08 |  |  |  |  |  |
| 96 | 1.8.3 | 过程改进建议搜集，试点项目指导，修订OSSP 3 | 1d | 2013-10-08 A | 2013-10-08 A |  | 100% |  | start no earlier than 2013-07-08 |  |  |  |  |  |
| 97 | 1.8.4 | 过程改进建议搜集，试点项目指导，修订OSSP 4 | 1d | 2013-11-12 A | 2013-11-12 A |  | 100% |  | start no earlier than 2013-08-10 |  |  |  |  |  |
| 98 | 1.8.5 | 过程改进建议搜集，试点项目指导，修订OSSP 5 | 1d | 2013-12-09 A | 2013-12-09 A |  | 100% |  | start no earlier than 2013-09-08 |  |  |  |  |  |
| 99 | 1.8.6 | 过程改进建议搜集，试点项目指导，修订OSSP 6 | 1d | 2014-01-10 A | 2014-01-10 A |  | 100% |  | start no earlier than 2013-10-10 |  |  |  |  |  |
| 100 | 1.8.7 | 过程改进建议搜集，试点项目指导，修订OSSP 7 | 1d | 2014-02-08 A | 2014-02-10 A |  | 100% |  | start no earlier than 2013-11-08 |  |  |  |  |  |
| 101 | 1.8.8 | 过程改进建议搜集，试点项目指导，修订OSSP 8 | 1d | 2014-03-09 A | 2014-03-10 A |  | 100% |  | start no earlier than 2013-12-08 |  |  |  |  |  |
| 102 | 1.8.9 | 过程改进建议搜集，试点项目指导，修订OSSP 9 | 1d | 2014-04-08 A | 2014-04-08 A |  | 100% |  | start no earlier than 2014-01-08 |  |  |  |  |  |
| 103 | 1.8.10 | 过程改进建议搜集，试点项目指导，修订OSSP 10 | 1d | 2014-05-10 A | 2014-05-12 A |  | 100% |  | start no earlier than 2014-02-08 |  |  |  |  |  |
| 104 | 1.8.11 | 过程改进建议搜集，试点项目指导，修订OSSP 11 | 1d | 2014-06-10 A | 2014-06-10 A |  | 100% |  | start no earlier than 2014-03-08 |  |  |  |  |  |
| 105 | 1.8.12 | 过程改进建议搜集，试点项目指导，修订OSSP 12 | 1d | 2014-07-08 A | 2014-07-08 A |  | 100% |  | start no earlier than 2014-04-08 |  |  |  |  |  |
| 106 | 1.8.13 | 过程改进建议搜集，试点项目指导，修订OSSP 13 | 1d | 2014-08-08 A | 2014-08-08 A |  | 100% |  | start no earlier than 2014-05-08 |  |  |  |  |  |
| 107 | 1.8.14 | 过程改进建议搜集，试点项目指导，修订OSSP 14 | 1d | 2014-09-09 A | 2014-09-09 A |  | 100% |  | start no earlier than 2014-06-08 |  |  |  |  |  |
| 108 | 1.8.15 | 过程改进建议搜集，试点项目指导，修订OSSP 15 | 1d | 2014-10-08 A | 2014-10-08 A |  | 100% |  | start no earlier than 2014-07-08 |  |  |  |  |  |
| 109 | 1.8.16 | 过程改进建议搜集，试点项目指导，修订OSSP 16 | 1d? | 2014-11-04 A | 2014-11-04 A |  | 100% |  | start no earlier than 2014-08-02 |  |  |  |  |  |
| 110 | 1.8.17 | 过程改进建议搜集，试点项目指导，修订OSSP 17 | 1d? | 2014-12-04 A | 2014-12-04 A |  | 100% |  | start no earlier than 2014-09-04 |  |  |  |  |  |
| 111 | 1.8.18 | 过程改进建议搜集，试点项目指导，修订OSSP 18 | 1d? | 2015-01-06 A | 2015-01-06 A |  | 100% |  | start no earlier than 2014-10-04 |  |  |  |  |  |
| 112 | 1.8.19 | 过程改进建议搜集，试点项目指导，修订OSSP 19 | 1d? | 2015-02-04 A | 2015-02-04 A |  | 100% |  | start no earlier than 2014-11-04 |  |  |  |  |  |
| 113 | 1.8.20 | 过程改进建议搜集，试点项目指导，修订OSSP 20 | 1d? | 2015-03-04 A | 2015-03-04 A |  | 100% |  | start no earlier than 2014-12-04 |  |  |  |  |  |

| ID | WBS | Task | Duration | Start | Finish | Complete | Actual start | Constraint | Resources | Work | Actual work | Cost | Actual cost |
| --- | --- | --- | --- | --- | --- | --- | --- | --- | --- | --- | --- | --- | --- |
| 114 | 1.9 | **EPG每月例会** | 414d | 2013-08-10 | 2015-03-11 A | 100% | 2013-05-10 |  | EPG | 3312h | 3312h | 23,184 | 23,184 |
| 115 | 1.9.1 | EPG每月例会 1 | 1d | 2013-05-10 A | 2013-05-10 A | 100% |  | start no earlier than 2013-05-10 |  |  |  |  |  |
| 116 | 1.9.2 | EPG每月例会 2 | 1d | 2013-06-10 A | 2013-06-10 A | 100% |  | start no earlier than 2013-06-10 |  |  |  |  |  |
| 117 | 1.9.3 | EPG每月例会 3 | 1d | 2013-07-10 A | 2013-07-10 A | 100% |  | start no earlier than 2013-07-10 |  |  |  |  |  |
| 118 | 1.9.4 | EPG每月例会 4 | 1d | 2013-08-12 A | 2013-08-12 A | 100% |  | start no earlier than 2013-08-10 |  |  |  |  |  |
| 119 | 1.9.5 | EPG每月例会 5 | 1d | 2013-09-10 A | 2013-09-10 A | 100% |  | start no earlier than 2013-09-10 |  |  |  |  |  |
| 120 | 1.9.6 | EPG每月例会 6 | 1d | 2013-10-10 A | 2013-10-10 A | 100% |  | start no earlier than 2013-10-10 |  |  |  |  |  |
| 121 | 1.9.7 | EPG每月例会 7 | 1d | 2013-11-11 A | 2013-11-11 A | 100% |  | start no earlier than 2013-11-10 |  |  |  |  |  |
| 122 | 1.9.8 | EPG每月例会 8 | 1d | 2013-12-10 A | 2013-12-10 A | 100% |  | start no earlier than 2013-12-10 |  |  |  |  |  |
| 123 | 1.9.9 | EPG每月例会 9 | 1d | 2014-01-13 A | 2014-01-13 A | 100% |  | start no earlier than 2014-01-11 |  |  |  |  |  |
| 124 | 1.9.10 | EPG每月例会 10 | 1d | 2014-02-13 A | 2014-02-13 A | 100% |  | start no earlier than 2014-02-13 |  |  |  |  |  |
| 125 | 1.9.11 | EPG每月例会 11 | 1d | 2014-03-13 A | 2014-03-13 A | 100% |  | start no earlier than 2014-03-13 |  |  |  |  |  |
| 126 | 1.9.12 | EPG每月例会 12 | 1d | 2014-04-10 A | 2014-04-10 A | 100% |  | start no earlier than 2014-04-10 |  |  |  |  |  |
| 127 | 1.9.13 | EPG每月例会 13 | 1d | 2014-05-13 A | 2014-05-13 A | 100% |  | start no earlier than 2014-05-13 |  |  |  |  |  |
| 128 | 1.9.14 | EPG每月例会 14 | 1d | 2014-06-10 A | 2014-06-10 A | 100% |  | start no earlier than 2014-06-10 |  |  |  |  |  |
| 129 | 1.9.15 | EPG每月例会 15 | 1d | 2014-07-14 A | 2014-07-14 A | 100% |  | start no earlier than 2014-07-13 |  |  |  |  |  |
| 130 | 1.9.16 | EPG每月例会 16 | 1d | 2014-08-13 A | 2014-08-13 A | 100% |  | start no earlier than 2014-08-13 |  |  |  |  |  |
| 131 | 1.9.17 | EPG每月例会 17 | 1d | 2014-09-15 A | 2014-09-15 A | 100% |  | start no earlier than 2014-09-13 |  |  |  |  |  |
| 132 | 1.9.18 | EPG每月例会 18 | 1d | 2014-10-10 A | 2014-10-10 A | 100% |  | start no earlier than 2014-10-10 |  |  |  |  |  |
| 133 | 1.9.19 | EPG每月例会 19 | 1d | 2014-11-13 A | 2014-11-13 A | 100% |  | start no earlier than 2014-11-13 |  |  |  |  |  |
| 134 | 1.9.20 | EPG每月例会 20 | 1d | 2014-12-10 A | 2014-12-10 A | 100% |  | start no earlier than 2014-12-10 |  |  |  |  |  |
